# MPP_BR.A.16.POI.039.00 - PROJETO FRAUDE OI

Schedule from MS Project, 2017-09-18 to 2019-02-28, A marks actual dates.
SSI

## Calendars

- Standard: Mon-Fri 08:00-12:00, 13:00-17:00; Sat-Sun off. Exceptions (off unless hours are given): 2017-09-07 to 2020-09-07 (Feriado Sete Setembro, recurring), 2017-10-12 to 2020-10-12 (Nsa Aparecida, recurring), 2017-10-16 to 2019-10-16 (Dia do Informática, recurring), 2017-11-02 to 2020-11-02 (Finados, recurring), 2017-11-15 to 2020-11-15 (Republica, recurring), 2017-12-25 to 2020-12-25 (Natal, recurring), 2017-12-31 to 2019-12-31 (Vespera Ano Novo, recurring), 2018-01-01 to 2021-01-01 (Ano Novo, recurring), 2018-02-12 to 2018-02-13 (Carnaval 2018), 2018-03-30 (Semana Santa), 2018-04-21 to 2019-04-21 (Tiradentes, recurring), 2018-05-01 to 2020-05-01 (Dia do Trabalho, recurring), 2018-05-31 (Corpus Christi 2018), 2018-12-24 to 2020-12-24 (Vespera Natal, recurring).

## Resources

| Resource |
| --- |
| Andre Jacomino |
| Nuno Pestana |
| WeDo |
| Oi |
| Kleyton |
| DIEO |
| Operações |
| WeDo PT |
| TI |
| Leandro |

## Schedule

| ID | WBS | Task | Type | Duration | Start | Finish | Predecessors | Complete | Remaining | Baseline start | Baseline finish | Baseline duration | Total slack | Free slack | Constraint | Resources | Work | Actual work |
| --- | --- | --- | --- | --- | --- | --- | --- | --- | --- | --- | --- | --- | --- | --- | --- | --- | --- | --- |
| 1 | 1 | **Projeto RAID FMS OI - Programa 1** |  | 359d | 2017-09-18 A | 2019-02-28 |  | 3% | 346.68d | 2017-09-18 | 2019-02-28 | 359d |  |  |  |  | 5632h | 257.2h |
| 2 | 1.1 | **PRJ00024387 - Marcos de Aquisição de Infra-estrutura** |  | 77d | 2017-09-18 A | 2018-01-10 |  | 30% | 53.9d | 2017-09-18 | 2017-12-07 | 55d | 282d |  |  |  | 80h | 24h |
| 3 | 1.1.1 | **Acessos Lógicos** |  | 10d | 2017-09-18 A | 2017-09-29 |  | 30% | 7d | 2017-09-18 | 2017-09-29 | 10d | 349d |  |  |  | 80h | 24h |
| 4 | 1.1.1.1 | Enviar dados de acesso e contas de serviço |  | 3d | 2017-09-18 A | 2017-09-20 A |  | 100% |  | 2017-09-18 | 2017-09-20 | 3d |  |  |  | WeDo | 24h | 24h |
| 5 | 1.1.1.2 | Liberar acessos |  | 7d | 2017-09-21 | 2017-09-29 | 4 |  |  | 2017-09-21 | 2017-09-29 | 7d | 349d | 0d |  | Oi | 56h |  |
| 6 | 1.1.1.3 | Acessos Lógicos Liberados | milestone | 0d | 2017-09-29 | 2017-09-29 | 5 |  |  | 2017-09-29 | 2017-09-29 | 0d | 349d |  |  |  |  |  |
| 7 | 1.1.2 | PRJ00024506 - Ambiente de DEV disponível | milestone | 0d | 2017-11-21 A | 2017-11-21 |  | 50% | 0d | 2017-09-29 | 2017-09-29 | 0d | 37d | 0d | start no earlier than 2017-11-21 | Oi |  |  |
| 8 | 1.1.3 | PRJ00024506 - Ambiente de HML disponível | milestone | 0d | 2018-01-10 A | 2018-01-10 | 7FF+30d | 10% | 0d | 2017-11-16 | 2017-11-16 | 0d | 33d | 0d | start no earlier than 2018-01-10 | Oi |  |  |
| 9 | 1.1.4 | PRJ00024931 - Ambiente de PRD disponível | milestone | 0d | 2018-01-10 | 2018-01-10 | 7FF+35d |  |  | 2017-11-23 | 2017-11-23 | 0d | 282d |  |  | Oi |  |  |
| 10 | 1.2 | **PRJ000xxxxx - ONDA 1: Planejamento e Setup** |  | 20d | 2017-09-18 A | 2017-10-17 |  | 59% | 8.17d | 2017-09-18 | 2017-10-05 | 14d | 339d |  |  |  | 344h | 233.2h |
| 11 | 1.2.1 | Acessos Físicos Liberados | milestone | 0d | 2017-09-18 A | 2017-09-18 A |  | 100% |  | 2017-09-18 | 2017-09-18 | 0d |  |  |  | Oi; WeDo |  |  |
| 12 | 1.2.2 | Levantamento e elaboração Blueprint |  | 12d | 2017-09-18 A | 2017-10-03 A |  | 100% |  | 2017-09-18 | 2017-10-03 | 12d |  |  |  | WeDo; Oi | 192h | 192h |
| 13 | 1.2.3 | Validação do blueprint | manual | 3d | 2017-10-04 A | 2017-10-06 | 12 | 5% | 2.85d |  |  |  |  |  |  | Leandro | 24h | 1.2h |
| 14 | 1.2.4 | Elaborar Plano de Desenvolvimento do Projeto (PDP) |  | 6d | 2017-09-26 A | 2017-10-03 | 12SS+6d | 75% | 1.5d | 2017-09-26 | 2017-10-03 | 6d | 346.5d | 0d |  | WeDo | 48h | 36h |
| 15 | 1.2.5 | Elaborar Material kick-off | manual | 1d | 2017-10-04 A | 2017-10-04 | 14 | 50% | 0.5d | 2017-10-04 | 2017-10-04 | 1d |  |  |  | Oi | 8h | 4h |
| 16 | 1.2.6 | Reunião de Kick-off |  | 1d | 2017-10-05 | 2017-10-05 | 12 |  |  | 2017-10-05 | 2017-10-05 | 1d | 339d | 0d | start no earlier than 2017-10-05 | WeDo; Oi | 16h |  |
| 17 | 1.2.7 | Onda 1 - Planejamento e Setup - Finalizada | milestone | 0d | 2017-10-05 | 2017-10-05 | 16 |  |  | 2017-10-05 | 2017-10-05 | 0d | 339d | 0d |  |  |  |  |
| 18 | 1.2.8 | **Treinamento - Conceitos Básicos - Teoria (FMS-01)** |  | 6d | 2017-10-06 | 2017-10-17 |  |  |  | 2017-10-06 | 2017-10-17 | 6d | 339d |  |  |  | 56h |  |
| 19 | 1.2.8.1 | Elaborar material |  | 5d | 2017-10-06 | 2017-10-13 | 17 |  |  | 2017-10-06 | 2017-10-13 | 5d | 339d | 0d |  | WeDo | 40h |  |
| 20 | 1.2.8.2 | Ambiente disponibilizado | milestone | 0d | 2017-10-13 | 2017-10-13 | 19 |  |  | 2017-10-13 | 2017-10-13 | 0d | 339d | 0d |  | Oi |  |  |
| 21 | 1.2.8.3 | Realizar Treinamento |  | 1d | 2017-10-17 | 2017-10-17 | 20 |  |  | 2017-10-17 | 2017-10-17 | 1d | 339d | 0d |  | Oi; WeDo | 16h |  |
| 22 | 1.2.8.4 | Treinamento Finalizado | milestone | 0d | 2017-10-17 | 2017-10-17 | 21 |  |  | 2017-10-17 | 2017-10-17 | 0d | 339d |  |  |  |  |  |
| 23 | 1.3 | **PRJ00025351 - ONDA 2: TV off line (Quick Wins - Motor de Fraude)** |  | 87d | 2017-10-02 | 2018-02-07 |  |  |  | 2017-10-23 | 2018-01-16 | 58d | 0d |  |  |  | 1800h |  |
| 24 | 1.3.1 | Detalhamento de regras de negócio e critérios de aceitação | manual | 10d | 2017-10-02 | 2017-10-17 |  |  |  |  |  |  |  |  |  | Kleyton | 80h |  |
| 25 | 1.3.2 | Validação do detalhamento de regras e criterios de aceitação | manual | 3d | 2017-10-18 | 2017-10-20 | 24 |  |  |  |  |  |  |  |  | WeDo; TI | 48h |  |

Notes:
- 7: Contingencia será ambiente RAID UC (aguardando chegada do serv. novo)

| ID | WBS | Task | Type | Duration | Start | Finish | Predecessors | Baseline start | Baseline finish | Baseline duration | Total slack | Free slack | Resources | Work |
| --- | --- | --- | --- | --- | --- | --- | --- | --- | --- | --- | --- | --- | --- | --- |
| 26 | 1.3.3 | **Análise (Desenho de Solução, Especificação Técnica, Cenários de Teste e Critérios de Aceitação)** |  | 12d | 2017-10-23 | 2017-11-08 |  | 2017-10-23 | 2017-11-08 | 12d | 0d |  | WeDo; Oi | 592h |
| 27 | 1.3.3.1 | Elaboração de DSOL | manual | 12d | 2017-10-23 | 2017-11-08 | 25 |  |  |  |  |  | WeDo; Oi | 192h |
| 28 | 1.3.3.2 | Aprovação de DSOL | manual | 1d | 2017-11-08 | 2017-11-08 | 27FF |  |  |  |  |  | Kleyton | 8h |
| 29 | 1.3.3.3 | Elaboração de plano de testes | manual | 12d | 2017-10-23 | 2017-11-08 | 25, 27SS |  |  |  |  |  | WeDo; Oi | 192h |
| 30 | 1.3.3.4 | aprovação de plano de testes | manual | 1d | 2017-11-08 | 2017-11-08 | 27FF |  |  |  |  |  | Kleyton | 8h |
| 31 | 1.3.4 | Construção e Testes Unitários |  | 30d | 2017-11-21 | 2018-01-03 | 26, 7 | 2017-11-09 | 2017-12-21 | 30d | 37d | 0d | WeDo | 240h |
| 32 | 1.3.5 | Elaborar Runbook |  | 3d | 2018-01-04 | 2018-01-08 | 31 | 2017-12-22 | 2017-12-27 | 3d | 268d | 0d | WeDo | 24h |
| 33 | 1.3.6 | Validação de runbook | manual | 5d | 2018-01-09 | 2018-01-15 | 32 |  |  |  |  |  |  |  |
| 34 | 1.3.7 | Testes de Sistema |  | 4d | 2018-01-04 | 2018-01-09 | 31 | 2017-12-22 | 2017-12-28 | 4d | 37d | 4d | WeDo | 32h |
| 35 | 1.3.8 | UAT |  | 4d | 2018-01-10 | 2018-01-15 | 8 | 2018-01-02 | 2018-01-05 | 4d | 33d | 0d | WeDo; Oi | 64h |
| 36 | 1.3.9 | Construção de scripts de monitoração | manual | 10d | 2018-01-16 | 2018-01-29 | 32, 33 |  |  |  |  |  | Operações | 80h |
| 37 | 1.3.10 | Construção de scripts de transmissão | manual | 10d | 2018-01-16 | 2018-01-29 | 32, 33 |  |  |  |  |  | Operações | 80h |
| 38 | 1.3.11 | Testes de Conectividade e Transmissão | manual | 1d | 2018-01-30 | 2018-01-30 | 36, 37 |  |  |  |  |  |  |  |
| 39 | 1.3.12 | Elaborar PLIM |  | 2d | 2018-01-16 | 2018-01-17 | 34, 35 | 2018-01-02 | 2018-01-03 | 2d | 33d | 0d | WeDo | 16h |
| 40 | 1.3.13 | Abertura de CRQ | manual | 1d | 2018-01-15 | 2018-01-15 | 39 |  |  |  |  |  | Oi | 8h |
| 41 | 1.3.14 | Aprovação de CRQ | manual | 5d | 2018-01-16 | 2018-01-22 | 39, 40 |  |  |  |  |  | DIEO | 40h |
| 42 | 1.3.15 | Planejamento e aprovação de GMUD | manual | 5d | 2018-01-23 | 2018-01-29 | 41 |  |  |  |  |  | DIEO | 40h |
| 43 | 1.3.16 | Implantação |  | 2d | 2018-01-30 | 2018-01-31 | 35, 42 | 2018-01-08 | 2018-01-09 | 2d | 36d | 0d | WeDo | 16h |
| 44 | 1.3.17 | Operação Assistida |  | 5d | 2018-02-01 | 2018-02-07 | 43 | 2018-01-10 | 2018-01-16 | 5d | 262d | 0d | WeDo; Oi | 80h |
| 45 | 1.3.18 | Entrega da especificação técnica | manual | 5d | 2018-02-01 | 2018-02-07 | 43, 44SS |  |  |  |  |  |  |  |
| 46 | 1.3.19 | Onda 2 - TV off line - Finalizada | milestone | 0d | 2018-02-07 | 2018-02-07 | 44, 45 | 2018-01-16 | 2018-01-16 | 0d | 262d |  |  |  |
| 47 | 1.3.20 | WAC - Analytics (calibragem das regras) | manual | 45d | 2017-12-04 | 2018-02-06 |  | 2017-12-04 | 2018-02-06 | 45d |  |  | WeDo PT | 360h |
| 48 | 1.4 | **PRJ000XXXXX - ONDA 3: Oi Total 2P + Fixa R1 2P** |  | 69d | 2017-12-05 | 2018-03-15 |  | 2017-11-24 | 2018-02-21 | 60d | 76d |  |  | 384h |
| 49 | 1.4.1 | Análise (Desenho de Solução, Especificação Técnica, Cenários de Teste e Critérios de Aceitação) |  | 4d | 2018-02-01 | 2018-02-06 | 43 | 2018-01-10 | 2018-01-15 | 4d | 36d | 0d | WeDo; Oi | 64h |
| 50 | 1.4.2 | Análise Transact |  | 3d | 2017-12-05 | 2017-12-07 | 31SS+10d | 2017-11-24 | 2017-11-28 | 3d | 297d | 0d | WeDo | 24h |
| 51 | 1.4.3 | Construção e Testes Unitários |  | 8d | 2018-02-07 | 2018-02-20 | 49 | 2018-01-16 | 2018-01-25 | 8d | 36d | 0d | WeDo | 64h |
| 52 | 1.4.4 | Construção e Testes Unitários - Transact |  | 7d | 2017-12-08 | 2017-12-18 | 50 | 2017-11-29 | 2017-12-07 | 7d | 297d |  | WeDo | 56h |
| 53 | 1.4.5 | Elaborar Runbook |  | 2d | 2018-02-21 | 2018-02-22 | 51 | 2018-01-26 | 2018-01-29 | 2d | 253d |  | WeDo | 16h |
| 54 | 1.4.6 | Testes de Sistema |  | 4d | 2018-02-21 | 2018-02-26 | 51 | 2018-01-26 | 2018-01-31 | 4d | 36d | 0d | WeDo | 32h |
| 55 | 1.4.7 | Testes Integrados |  | 3d | 2018-02-27 | 2018-03-01 | 54 | 2018-02-01 | 2018-02-05 | 3d | 36d | 0d | WeDo; Oi | 48h |
| 56 | 1.4.8 | UAT |  | 3d | 2018-03-02 | 2018-03-06 | 55 | 2018-02-06 | 2018-02-08 | 3d | 36d | 0d | WeDo; Oi | 48h |
| 57 | 1.4.9 | Elaborar PLIM |  | 2d | 2018-03-02 | 2018-03-05 | 55 | 2018-02-06 | 2018-02-07 | 2d | 246d |  | WeDo | 16h |
| 58 | 1.4.10 | Implantação |  | 2d | 2018-03-07 | 2018-03-08 | 56 | 2018-02-09 | 2018-02-14 | 2d | 36d | 0d | WeDo | 16h |
| 59 | 1.4.11 | Operação Assistida |  | 5d | 2018-03-09 | 2018-03-15 | 58 | 2018-02-15 | 2018-02-21 | 5d | 238d | 0d |  |  |
| 60 | 1.4.12 | Onda 3 - Oi Total 2P + Fixa R1 1P - Finalizada | milestone | 0d | 2018-03-15 | 2018-03-15 | 59 | 2018-02-21 | 2018-02-21 | 0d | 238d |  |  |  |
| 61 | 1.5 | WAC - Analytics (construção dos modelos) | manual | 35d | 2018-02-07 | 2018-03-29 |  | 2018-02-07 | 2018-03-29 | 35d |  |  | WeDo | 280h |

Notes:
- 31: Avaliar a possibilidade de quebrar entregas (quais)
- 48: Modelos estatísticos devem devem estar prontos para entrada do online (risco alto)

| ID | WBS | Task | Type | Duration | Start | Finish | Predecessors | Baseline start | Baseline finish | Baseline duration | Total slack | Free slack | Resources | Work |
| --- | --- | --- | --- | --- | --- | --- | --- | --- | --- | --- | --- | --- | --- | --- |
| 62 | 1.6 | **PRJ000XXXXX - ONDAS 4, 5 e 6: Oi Total 3P + Móvel Puro Online + Oi Total Online** |  | 34d | 2018-03-09 | 2018-04-26 |  | 2018-02-15 | 2018-04-04 | 34d | 36d |  |  | 408h |
| 63 | 1.6.1 | Análise (Desenho de Solução, Especificação Técnica, Cenários de Teste e Critérios de Aceitação) |  | 7d | 2018-03-09 | 2018-03-19 | 58 | 2018-02-15 | 2018-02-23 | 7d | 36d | 0d | WeDo; Oi | 112h |
| 64 | 1.6.2 | Construção e Testes Unitários |  | 15d | 2018-03-20 | 2018-04-10 | 63 | 2018-02-26 | 2018-03-16 | 15d | 36d | 0d | WeDo | 120h |
| 65 | 1.6.3 | Elaborar Runbook |  | 2d | 2018-04-11 | 2018-04-12 | 64 | 2018-03-19 | 2018-03-20 | 2d | 219d |  | WeDo | 16h |
| 66 | 1.6.4 | Testes de Sistema |  | 4d | 2018-04-11 | 2018-04-16 | 64 | 2018-03-19 | 2018-03-22 | 4d | 36d | 0d | WeDo | 32h |
| 67 | 1.6.5 | Testes Integrados |  | 2d | 2018-04-17 | 2018-04-18 | 66 | 2018-03-23 | 2018-03-26 | 2d | 36d | 0d | WeDo; Oi | 32h |
| 68 | 1.6.6 | UAT |  | 4d | 2018-04-19 | 2018-04-24 | 67 | 2018-03-27 | 2018-04-02 | 4d | 36d | 0d | WeDo; Oi | 64h |
| 69 | 1.6.7 | Elaborar PLIM |  | 2d | 2018-04-19 | 2018-04-20 | 67 | 2018-03-27 | 2018-03-28 | 2d | 213d |  | WeDo | 16h |
| 70 | 1.6.8 | Implantação |  | 2d | 2018-04-25 | 2018-04-26 | 68 | 2018-04-03 | 2018-04-04 | 2d | 36d | 0d | WeDo | 16h |
| 71 | 1.6.9 | Ondas 4, 5 e 6 - Oi Total 3P + Móvel Puro Online + Oi Total Online - Finalizada | milestone | 0d | 2018-04-26 | 2018-04-26 | 70 | 2018-04-04 | 2018-04-04 | 0d | 36d | 0d |  |  |
| 72 | 1.7 | **PRJ000XXXXX - ONDA 7.1: Integração Bases de Dados (CRM)** |  | 57d | 2018-04-27 | 2018-07-18 |  | 2018-04-05 | 2018-06-26 | 57d | 36d |  |  | 688h |
| 73 | 1.7.1 | Análise (Desenho de Solução, Especificação Técnica, Cenários de Teste e Critérios de Aceitação) |  | 10d | 2018-04-27 | 2018-05-11 | 71 | 2018-04-05 | 2018-04-18 | 10d | 36d | 0d | WeDo; Oi | 160h |
| 74 | 1.7.2 | Construção e Testes Unitários |  | 25d | 2018-05-14 | 2018-06-18 | 73 | 2018-04-19 | 2018-05-24 | 25d | 36d | 0d | WeDo | 200h |
| 75 | 1.7.3 | Elaborar Runbook |  | 2d | 2018-06-19 | 2018-06-20 | 74 | 2018-05-25 | 2018-05-28 | 2d | 172d |  | WeDo | 16h |
| 76 | 1.7.4 | Testes de Sistema |  | 5d | 2018-06-19 | 2018-06-25 | 74 | 2018-05-25 | 2018-06-01 | 5d | 36d | 0d | WeDo | 40h |
| 77 | 1.7.5 | Testes Integrados - Plano e Execução |  | 10d | 2018-06-26 | 2018-07-09 | 76 | 2018-06-04 | 2018-06-15 | 10d | 36d | 0d | WeDo; Oi | 160h |
| 78 | 1.7.6 | UAT |  | 5d | 2018-07-10 | 2018-07-16 | 77 | 2018-06-18 | 2018-06-22 | 5d | 36d | 0d | WeDo; Oi | 80h |
| 79 | 1.7.7 | Elaborar PLIM |  | 2d | 2018-07-10 | 2018-07-11 | 77 | 2018-06-18 | 2018-06-19 | 2d | 157d |  | WeDo | 16h |
| 80 | 1.7.8 | Implantação |  | 2d | 2018-07-17 | 2018-07-18 | 78 | 2018-06-25 | 2018-06-26 | 2d | 36d | 0d | WeDo | 16h |
| 81 | 1.7.9 | Onda 7.1 - Integração Bases de Dados - Finalizada | milestone | 0d | 2018-07-18 | 2018-07-18 | 80 | 2018-06-26 | 2018-06-26 | 0d | 36d | 0d |  |  |
| 82 | 1.8 | **PRJ000XXXXX - ONDA 7.2: Integração Bases de Dados (Inadimplência e Recargas)** |  | 31d | 2018-07-19 | 2018-08-30 |  | 2018-06-27 | 2018-08-08 | 31d | 36d |  |  | 368h |
| 83 | 1.8.1 | Análise (Desenho de Solução, Especificação Técnica, Cenários de Teste e Critérios de Aceitação) |  | 5d | 2018-07-19 | 2018-07-25 | 81 | 2018-06-27 | 2018-07-03 | 5d | 36d | 0d | WeDo; Oi | 80h |
| 84 | 1.8.2 | Construção e Testes Unitários |  | 15d | 2018-07-26 | 2018-08-15 | 83 | 2018-07-04 | 2018-07-24 | 15d | 36d | 0d | WeDo | 120h |
| 85 | 1.8.3 | Elaborar Runbook |  | 2d | 2018-08-16 | 2018-08-17 | 84 | 2018-07-25 | 2018-07-26 | 2d | 130d |  | WeDo | 16h |
| 86 | 1.8.4 | Testes de Sistema |  | 3d | 2018-08-16 | 2018-08-20 | 84 | 2018-07-25 | 2018-07-27 | 3d | 36d | 0d | WeDo | 24h |
| 87 | 1.8.5 | Testes Integrados - Plano e Execução |  | 3d | 2018-08-21 | 2018-08-23 | 86 | 2018-07-30 | 2018-08-01 | 3d | 36d | 0d | WeDo; Oi | 48h |
| 88 | 1.8.6 | UAT |  | 3d | 2018-08-24 | 2018-08-28 | 87 | 2018-08-02 | 2018-08-06 | 3d | 36d | 0d | WeDo; Oi | 48h |
| 89 | 1.8.7 | Elaborar PLIM |  | 2d | 2018-08-24 | 2018-08-27 | 87 | 2018-08-02 | 2018-08-03 | 2d | 124d |  | WeDo | 16h |
| 90 | 1.8.8 | Implantação |  | 2d | 2018-08-29 | 2018-08-30 | 88 | 2018-08-07 | 2018-08-08 | 2d | 36d | 0d | WeDo | 16h |
| 91 | 1.8.9 | Onda 7.2 - Integração Bases de Dados - Finalizada | milestone | 0d | 2018-08-30 | 2018-08-30 | 90 | 2018-08-08 | 2018-08-08 | 0d | 121d |  |  |  |

| ID | WBS | Task | Type | Duration | Start | Finish | Predecessors | Baseline start | Baseline finish | Baseline duration | Total slack | Free slack | Resources | Work |
| --- | --- | --- | --- | --- | --- | --- | --- | --- | --- | --- | --- | --- | --- | --- |
| 92 | 1.9 | **PRJ000XXXXX - ONDA 9: Telas para Operação de Crédito** |  | 38d | 2018-08-31 | 2018-10-26 |  | 2018-08-09 | 2018-10-02 | 38d | 83d |  |  |  |
| 93 | 1.9.1 | Análise (Desenho de Solução, Especificação Técnica, Cenários de Teste e Critérios de Aceitação) |  | 5d | 2018-08-31 | 2018-09-06 | 90 | 2018-08-09 | 2018-08-15 | 5d | 83d | 0d |  |  |
| 94 | 1.9.2 | Construção e Testes Unitários |  | 15d | 2018-09-10 | 2018-09-28 | 93 | 2018-08-16 | 2018-09-05 | 15d | 83d | 0d |  |  |
| 95 | 1.9.3 | Elaborar Runbook |  | 2d | 2018-10-01 | 2018-10-02 | 94 | 2018-09-06 | 2018-09-10 | 2d | 99d |  |  |  |
| 96 | 1.9.4 | Testes de Sistema |  | 5d | 2018-10-01 | 2018-10-05 | 94 | 2018-09-06 | 2018-09-13 | 5d | 83d | 0d |  |  |
| 97 | 1.9.5 | Testes Integrados |  | 1d | 2018-10-08 | 2018-10-08 | 96 | 2018-09-14 | 2018-09-14 | 1d | 83d | 0d |  |  |
| 98 | 1.9.6 | UAT |  | 5d | 2018-10-09 | 2018-10-17 | 97 | 2018-09-17 | 2018-09-21 | 5d | 83d | 0d |  |  |
| 99 | 1.9.7 | Elaborar PLIM |  | 2d | 2018-10-09 | 2018-10-10 | 97 | 2018-09-17 | 2018-09-18 | 2d | 93d |  |  |  |
| 100 | 1.9.8 | Implantação |  | 2d | 2018-10-18 | 2018-10-19 | 98 | 2018-09-24 | 2018-09-25 | 2d | 83d | 0d |  |  |
| 101 | 1.9.9 | Operação Assistida |  | 5d | 2018-10-22 | 2018-10-26 | 100 | 2018-09-26 | 2018-10-02 | 5d | 83d | 0d |  |  |
| 102 | 1.9.10 | Onda 9 - Telas para Operação de Crédito - Finalizada | milestone | 0d | 2018-10-26 | 2018-10-26 | 101 | 2018-10-02 | 2018-10-02 | 0d | 83d |  |  |  |
| 103 | 1.10 | **PRJ000XXXXX - ONDA 10: Oi Controle Sem Fatura Online** |  | 45d | 2018-08-31 | 2018-11-07 |  | 2018-08-09 | 2018-10-11 | 45d | 36d |  |  | 584h |
| 104 | 1.10.1 | Análise (Desenho de Solução, Especificação Técnica, Cenários de Teste e Critérios de Aceitação) |  | 10d | 2018-08-31 | 2018-09-14 | 90 | 2018-08-09 | 2018-08-22 | 10d | 36d | 0d | WeDo; Oi | 160h |
| 105 | 1.10.2 | Construção e Testes Unitários |  | 18d | 2018-09-17 | 2018-10-10 | 104 | 2018-08-23 | 2018-09-18 | 18d | 36d | 0d | WeDo | 144h |
| 106 | 1.10.3 | Elaborar Runbook |  | 2d | 2018-10-11 | 2018-10-15 | 105 | 2018-09-19 | 2018-09-20 | 2d | 91d |  | WeDo | 16h |
| 107 | 1.10.4 | Testes de Sistema |  | 4d | 2018-10-11 | 2018-10-18 | 105 | 2018-09-19 | 2018-09-24 | 4d | 36d | 0d | WeDo | 32h |
| 108 | 1.10.5 | Testes Integrados |  | 3d | 2018-10-19 | 2018-10-23 | 107 | 2018-09-25 | 2018-09-27 | 3d | 36d | 0d | WeDo; Oi | 48h |
| 109 | 1.10.6 | UAT |  | 4d | 2018-10-24 | 2018-10-29 | 108 | 2018-09-28 | 2018-10-03 | 4d | 82d |  | WeDo; Oi | 64h |
| 110 | 1.10.7 | Elaborar PLIM |  | 2d | 2018-10-24 | 2018-10-25 | 108 | 2018-09-28 | 2018-10-01 | 2d | 36d | 0d | WeDo | 16h |
| 111 | 1.10.8 | Implantação |  | 3d | 2018-10-26 | 2018-10-30 | 110 | 2018-10-02 | 2018-10-04 | 3d | 36d | 0d | WeDo | 24h |
| 112 | 1.10.9 | Operação Assistida |  | 5d | 2018-10-31 | 2018-11-07 | 111 | 2018-10-05 | 2018-10-11 | 5d | 76d | 0d | WeDo; Oi | 80h |
| 113 | 1.10.10 | Onda 10 - Oi Controle Sem Fatura Online - Finalizada | milestone | 0d | 2018-11-07 | 2018-11-07 | 112 | 2018-10-11 | 2018-10-11 | 0d | 76d |  |  |  |
| 114 | 1.11 | **PRJ000XXXXX - ONDA 8: Oi Fibra Online** |  | 10d | 2018-10-31 | 2018-11-14 |  | 2018-10-05 | 2018-10-22 | 10d | 71d |  |  | 104h |
| 115 | 1.11.1 | Análise (Desenho de Solução, Especificação Técnica, Cenários de Teste e Critérios de Aceitação) |  | 3d | 2018-10-31 | 2018-11-05 | 111 | 2018-10-05 | 2018-10-09 | 3d | 71d | 0d | WeDo | 24h |
| 116 | 1.11.2 | Construção e Testes Unitários |  | 3d | 2018-11-06 | 2018-11-08 | 115 | 2018-10-10 | 2018-10-15 | 3d | 71d | 0d | WeDo | 24h |
| 117 | 1.11.3 | Elaborar Runbook |  | 1d | 2018-11-06 | 2018-11-06 | 115 | 2018-10-10 | 2018-10-10 | 1d | 77d |  | WeDo | 8h |
| 118 | 1.11.4 | Testes de Sistema |  | 1d | 2018-11-09 | 2018-11-09 | 116 | 2018-10-17 | 2018-10-17 | 1d | 71d | 0d | WeDo; Oi | 16h |
| 119 | 1.11.5 | Testes Integrados |  | 1d | 2018-11-12 | 2018-11-12 | 118 | 2018-10-18 | 2018-10-18 | 1d | 71d | 0d | WeDo; Oi | 16h |
| 120 | 1.11.6 | UAT |  | 1d | 2018-11-13 | 2018-11-13 | 119 | 2018-10-19 | 2018-10-19 | 1d | 72d |  | WeDo | 8h |
| 121 | 1.11.7 | Elaborar PLIM |  | 1d | 2018-11-13 | 2018-11-13 | 119 | 2018-10-19 | 2018-10-19 | 1d | 71d | 0d | WeDo | 8h |
| 122 | 1.11.8 | Implantação |  | 1d | 2018-11-14 | 2018-11-14 | 121 | 2018-10-22 | 2018-10-22 | 1d | 71d | 0d |  |  |
| 123 | 1.11.9 | Onda 8 - Oi Fibra Online - Finalizada | milestone | 0d | 2018-11-14 | 2018-11-14 | 122 | 2018-10-22 | 2018-10-22 | 0d | 71d |  |  |  |

| ID | WBS | Task | Type | Duration | Start | Finish | Predecessors | Baseline start | Baseline finish | Baseline duration | Total slack | Free slack | Resources | Work |
| --- | --- | --- | --- | --- | --- | --- | --- | --- | --- | --- | --- | --- | --- | --- |
| 124 | 1.12 | **PRJ000XXXXX - ONDA 11: Fixa R2 Offline** |  | 25d | 2018-10-31 | 2018-12-06 |  | 2018-10-05 | 2018-11-13 | 25d | 36d |  |  | 320h |
| 125 | 1.12.1 | Análise (Desenho de Solução, Especificação Técnica, Cenários de Teste e Critérios de Aceitação) |  | 5d | 2018-10-31 | 2018-11-07 | 111 | 2018-10-05 | 2018-10-11 | 5d | 36d | 0d | WeDo; Oi | 80h |
| 126 | 1.12.2 | Construção e Testes Unitários |  | 10d | 2018-11-08 | 2018-11-22 | 125 | 2018-10-15 | 2018-10-29 | 10d | 36d | 0d | WeDo | 80h |
| 127 | 1.12.3 | Elaborar Runbook |  | 2d | 2018-11-23 | 2018-11-26 | 126 | 2018-10-30 | 2018-10-31 | 2d | 64d |  | WeDo | 16h |
| 128 | 1.12.4 | Testes de Sistema |  | 4d | 2018-11-23 | 2018-11-28 | 126 | 2018-10-30 | 2018-11-05 | 4d | 36d | 0d | WeDo | 32h |
| 129 | 1.12.5 | Testes Integrados |  | 2d | 2018-11-29 | 2018-11-30 | 128 | 2018-11-06 | 2018-11-07 | 2d | 36d | 0d | WeDo; Oi | 32h |
| 130 | 1.12.6 | UAT |  | 3d | 2018-12-03 | 2018-12-05 | 129 | 2018-11-08 | 2018-11-12 | 3d | 57d |  | WeDo; Oi | 48h |
| 131 | 1.12.7 | Elaborar PLIM |  | 2d | 2018-12-03 | 2018-12-04 | 129 | 2018-11-08 | 2018-11-09 | 2d | 36d | 0d | WeDo | 16h |
| 132 | 1.12.8 | Implantação |  | 2d | 2018-12-05 | 2018-12-06 | 131 | 2018-11-12 | 2018-11-13 | 2d | 36d | 0d | WeDo | 16h |
| 133 | 1.12.9 | Onda 11 - Fixa R2 Offline - Finalizada | milestone | 0d | 2018-12-06 | 2018-12-06 | 132 | 2018-11-13 | 2018-11-13 | 0d | 36d | 0d |  |  |
| 134 | 1.13 | **PRJ000XXXXX - ONDA 12: Fixa R2 Online** |  | 20d | 2018-12-07 | 2019-01-09 |  | 2018-11-14 | 2018-12-12 | 20d | 36d |  |  | 272h |
| 135 | 1.13.1 | Análise (Desenho de Solução, Especificação Técnica, Cenários de Teste e Critérios de Aceitação) |  | 5d | 2018-12-07 | 2018-12-13 | 133 | 2018-11-14 | 2018-11-21 | 5d | 36d | 0d | WeDo; Oi | 80h |
| 136 | 1.13.2 | Construção e Testes Unitários |  | 7d | 2018-12-14 | 2018-12-26 | 135 | 2018-11-22 | 2018-11-30 | 7d | 36d | 0d | WeDo | 56h |
| 137 | 1.13.3 | Elaborar Runbook |  | 2d | 2018-12-27 | 2018-12-28 | 136 | 2018-12-03 | 2018-12-04 | 2d | 42d |  | WeDo | 16h |
| 138 | 1.13.4 | Testes de Sistema |  | 3d | 2018-12-27 | 2019-01-02 | 136 | 2018-12-03 | 2018-12-05 | 3d | 36d | 0d | WeDo | 24h |
| 139 | 1.13.5 | Testes Integrados |  | 1d | 2019-01-03 | 2019-01-03 | 138 | 2018-12-06 | 2018-12-06 | 1d | 36d | 0d | WeDo; Oi | 16h |
| 140 | 1.13.6 | UAT |  | 3d | 2019-01-04 | 2019-01-08 | 139 | 2018-12-07 | 2018-12-11 | 3d | 37d |  | WeDo; Oi | 48h |
| 141 | 1.13.7 | Elaborar PLIM |  | 2d | 2019-01-04 | 2019-01-07 | 139 | 2018-12-07 | 2018-12-10 | 2d | 36d | 0d | WeDo | 16h |
| 142 | 1.13.8 | Implantação |  | 2d | 2019-01-08 | 2019-01-09 | 141 | 2018-12-11 | 2018-12-12 | 2d | 36d | 0d | WeDo | 16h |
| 143 | 1.13.9 | Operação Assistida | milestone | 0d | 2019-01-09 | 2019-01-09 | 142 | 2018-12-12 | 2018-12-12 | 0d | 36d | 0d | WeDo; Oi |  |
| 144 | 1.13.10 | Onda 12 - Fixa R2 Online - Finalizada | milestone | 0d | 2019-01-09 | 2019-01-09 | 143 | 2018-12-12 | 2018-12-12 | 0d | 36d |  |  |  |

Notes:
- 124: Depende UNIFICA ou CRM Unico - ver Cezar
- 134: Depende UNIFICA - ver Cezar
