# MPP_BR.A.16.POI.039.00 - PROJETO FRAUDE OI

Schedule from MS Project, 2017-09-18 to 2019-02-28, A marks actual dates.
SSI

## Calendars

- Standard: Mon-Fri 08:00-12:00, 13:00-17:00; Sat-Sun off. Exceptions (off unless hours are given): 2017-09-07 to 2020-09-07 (Feriado Sete Setembro, recurring), 2017-10-12 to 2020-10-12 (Nsa Aparecida, recurring), 2017-10-16 to 2019-10-16 (Dia do Informática, recurring), 2017-11-02 to 2020-11-02 (Finados, recurring), 2017-11-15 to 2020-11-15 (Republica, recurring), 2017-12-25 to 2020-12-25 (Natal, recurring), 2017-12-31 to 2019-12-31 (Vespera Ano Novo, recurring), 2018-01-01 to 2021-01-01 (Ano Novo, recurring), 2018-02-12 to 2018-02-13 (Carnaval 2018), 2018-03-30 (Semana Santa), 2018-04-21 to 2019-04-21 (Tiradentes, recurring), 2018-05-01 to 2020-05-01 (Dia do Trabalho, recurring), 2018-05-31 (Corpus Christi 2018), 2018-12-24 to 2020-12-24 (Vespera Natal, recurring).

## Resources

| Resource |
| --- |
| Andre Jacomino |
| Nuno Pestana |
| WeDo |
| Oi |
| Kleyton |
| DIEO |
| Operações |
| WeDo PT |
| TI |
| Leandro |
| Cezar |
| Oi/DIEO/WEDO |
| WeDO/Operações |
| MArcellus |

## Schedule

| ID | WBS | Task | Type | Duration | Start | Finish | Predecessors | Complete | Remaining | Actual start | Baseline start | Baseline finish | Baseline duration | Total slack | Free slack | Constraint | Resources | Work | Actual work |
| --- | --- | --- | --- | --- | --- | --- | --- | --- | --- | --- | --- | --- | --- | --- | --- | --- | --- | --- | --- |
| 1 | 1 | **Projeto RAID FMS OI - Programa 1 ==== PG60 ====** |  | 359d | 2017-09-18 A | 2019-02-28 |  | 9% | 327.91d |  | 2017-09-18 | 2019-02-28 | 359d |  |  |  |  | 2888h | 269.2h |
| 2 | 1.1 | **PRJ00024387 - Marcos de Aquisição de Infra-estrutura** |  | 224d | 2017-09-18 A | 2018-08-13 |  | 30% | 156.8d |  | 2017-09-18 | 2017-12-07 | 55d | 135d |  |  |  | 80h | 24h |
| 3 | 1.1.1 | **Acessos Lógicos** |  | 10d | 2017-09-18 A | 2017-09-29 |  | 30% | 7d |  | 2017-09-18 | 2017-09-29 | 10d | 349d |  |  |  | 80h | 24h |
| 4 | 1.1.1.1 | Enviar dados de acesso e contas de serviço |  | 3d | 2017-09-18 A | 2017-09-20 A |  | 100% |  |  | 2017-09-18 | 2017-09-20 | 3d |  |  |  | WeDo | 24h | 24h |
| 5 | 1.1.1.2 | Liberar acessos |  | 7d | 2017-09-21 | 2017-09-29 | 4 |  |  |  | 2017-09-21 | 2017-09-29 | 7d | 349d | 0d |  | Oi | 56h |  |
| 6 | 1.1.1.3 | Acessos Lógicos Liberados | milestone | 0d | 2017-09-29 | 2017-09-29 | 5 |  |  |  | 2017-09-29 | 2017-09-29 | 0d | 349d |  |  |  |  |  |
| 7 | 1.1.2 | PRJ00024506 - Ambiente de DEV disponível | milestone | 0d | 2017-11-21 A | 2017-11-21 |  | 50% | 0d |  | 2017-09-29 | 2017-09-29 | 0d | 263d | 0d | start no earlier than 2017-11-21 | Oi |  |  |
| 8 | 1.1.3 | PRJ00024506 - Ambiente de HML disponível | milestone | 0d | 2018-07-09 A | 2018-07-09 | 7FF+30d | 25% | 0d |  | 2017-11-16 | 2017-11-16 | 0d | 160d |  | start no earlier than 2018-01-10 | Oi |  |  |
| 9 | 1.1.4 | PRJ00024931 - Ambiente de PRD disponível | milestone | 0d | 2018-08-13 A | 2018-08-13 | 7FF+35d | 10% | 0d |  | 2017-11-23 | 2017-11-23 | 0d | 133d | 0d | start no earlier than 2018-07-09 | Oi |  |  |
| 10 | 1.2 | **PRJ000xxxxx - ONDA 1: Planejamento e Setup** |  | 20d | 2017-09-18 A | 2017-10-17 |  | 59% | 8.17d |  | 2017-09-18 | 2017-10-05 | 14d | 339d |  |  |  | 344h | 233.2h |
| 11 | 1.2.1 | Acessos Físicos Liberados | milestone | 0d | 2017-09-18 A | 2017-09-18 A |  | 100% |  |  | 2017-09-18 | 2017-09-18 | 0d |  |  |  | Oi; WeDo |  |  |
| 12 | 1.2.2 | Levantamento e elaboração Blueprint |  | 12d | 2017-09-18 A | 2017-10-03 A |  | 100% |  |  | 2017-09-18 | 2017-10-03 | 12d |  |  |  | WeDo; Oi | 192h | 192h |
| 13 | 1.2.3 | Validação do blueprint | manual | 3d | 2017-10-04 A | 2017-10-06 | 12 | 5% | 2.85d |  |  |  |  |  |  |  | Leandro | 24h | 1.2h |
| 14 | 1.2.4 | Elaborar Plano de Desenvolvimento do Projeto (PDP) |  | 6d | 2017-09-26 A | 2017-10-03 | 12SS+6d | 75% | 1.5d |  | 2017-09-26 | 2017-10-03 | 6d | 346.5d | 0d |  | WeDo | 48h | 36h |
| 15 | 1.2.5 | Elaborar Material kick-off | manual | 1d | 2017-10-04 A | 2017-10-04 | 14 | 50% | 0.5d |  | 2017-10-04 | 2017-10-04 | 1d |  |  |  | Oi | 8h | 4h |
| 16 | 1.2.6 | Reunião de Kick-off |  | 1d | 2017-10-05 | 2017-10-05 | 12 |  |  |  | 2017-10-05 | 2017-10-05 | 1d | 339d | 0d | start no earlier than 2017-10-05 | WeDo; Oi | 16h |  |
| 17 | 1.2.7 | Onda 1 - Planejamento e Setup - Finalizada | milestone | 0d | 2017-10-05 | 2017-10-05 | 16 |  |  |  | 2017-10-05 | 2017-10-05 | 0d | 339d | 0d |  |  |  |  |
| 18 | 1.2.8 | **Treinamento - Conceitos Básicos - Teoria (FMS-01)** |  | 6d | 2017-10-06 | 2017-10-17 |  |  |  |  | 2017-10-06 | 2017-10-17 | 6d | 339d |  |  |  | 56h |  |
| 19 | 1.2.8.1 | Elaborar material |  | 5d | 2017-10-06 | 2017-10-13 | 17 |  |  |  | 2017-10-06 | 2017-10-13 | 5d | 339d | 0d |  | WeDo | 40h |  |
| 20 | 1.2.8.2 | Ambiente disponibilizado | milestone | 0d | 2017-10-13 | 2017-10-13 | 19 |  |  |  | 2017-10-13 | 2017-10-13 | 0d | 339d | 0d |  | Oi |  |  |
| 21 | 1.2.8.3 | Realizar Treinamento |  | 1d | 2017-10-17 | 2017-10-17 | 20 |  |  |  | 2017-10-17 | 2017-10-17 | 1d | 339d | 0d |  | Oi; WeDo | 16h |  |
| 22 | 1.2.8.4 | Treinamento Finalizado | milestone | 0d | 2017-10-17 | 2017-10-17 | 21 |  |  |  | 2017-10-17 | 2017-10-17 | 0d | 339d |  |  |  |  |  |
| 23 | 1.3 | **PRJ00025351/SUBXXXXX - ONDA 2: TV off line (Quick Wins - Motor de Fraude)** |  | 221d | 2017-10-02 A | 2018-08-21 |  | 1% | 219.43d |  | 2017-10-23 | 2018-01-16 | 58d | 128d |  |  |  | 2464h | 12h |
| 24 | 1.3.1 | **Detalhamento de regras de negócio e critérios de aceitação** |  | 10d | 2017-10-02 | 2017-10-17 |  | 13% | 8.75d | 2017-10-04 |  |  |  |  |  |  | Kleyton | 176h | 12h |
| 25 | 1.3.1.1 | 1o lote de regras para validação TI/WEDO (fontes de dados ainda indefinidas) | manual | 3d | 2017-10-04 A | 2017-10-06 |  | 50% | 1.5d |  |  |  |  |  |  |  | Kleyton | 24h | 12h |
| 26 | 1.3.1.2 | 2o lote de regras para validação TI/WEDO | manual | 8d | 2017-10-04 | 2017-10-17 |  |  |  |  |  |  |  |  |  |  | Kleyton | 64h |  |
| 27 | 1.3.1.3 | Entrega versão final da documentação de regras | manual | 1d | 2017-10-23 | 2017-10-23 |  |  |  |  |  |  |  |  |  |  | Cezar | 8h |  |
| 28 | 1.3.2 | Validação do detalhamento de regras e criterios de aceitação | manual | 3d | 2017-10-18 | 2017-10-20 | 24 |  |  |  |  |  |  |  |  |  | WeDo; TI | 48h |  |
| 29 | 1.3.3 | Elaboração DAS de Arquitetura | manual | 5d | 2017-10-13 | 2017-10-20 | 28FF |  |  |  |  |  |  |  |  |  | MArcellus | 40h |  |

Notes:
- 7: Contingencia será ambiente RAID UC (aguardando chegada do serv. novo)

| ID | WBS | Task | Type | Duration | Start | Finish | Predecessors | Baseline start | Baseline finish | Baseline duration | Total slack | Free slack | Resources | Work |
| --- | --- | --- | --- | --- | --- | --- | --- | --- | --- | --- | --- | --- | --- | --- |
| 30 | 1.3.4 | **Análise (Desenho de Solução, Especificação Técnica, Cenários de Teste e Critérios de Aceitação)** |  | 16d | 2017-10-23 | 2017-11-14 |  | 2017-10-23 | 2017-11-08 | 12d | 0d |  | WeDo; Oi | 512h |
| 31 | 1.3.4.1 | Elaboração de DSOL RAID-FMS | manual | 12d | 2017-10-23 | 2017-11-08 | 28 |  |  |  |  |  | WeDo; Oi | 192h |
| 32 | 1.3.4.2 | Aprovação de DSOL RAID-FMS | manual | 1d | 2017-11-08 | 2017-11-08 | 31FF |  |  |  |  |  | Kleyton | 8h |
| 33 | 1.3.4.3 | Elaboração de plano de testes Consolidado | manual | 3d | 2017-11-09 | 2017-11-13 | 28, 31 |  |  |  |  |  | WeDo; Oi | 48h |
| 34 | 1.3.4.4 | aprovação de plano de testes Consolidado | manual | 1d | 2017-11-14 | 2017-11-14 | 33 |  |  |  |  |  | Kleyton | 8h |
| 35 | 1.3.5 | Construção e Testes Unitários |  | 30d | 2017-11-21 | 2018-01-03 | 30, 7 | 2017-11-09 | 2017-12-21 | 30d | 263d | 0d | WeDo | 240h |
| 36 | 1.3.6 | Atualização de Servidores DEV no CMDB [agente DISCOVER] | manual | 5d | 2017-11-21 | 2017-11-27 | 30, 7 |  |  |  |  |  | Oi | 40h |
| 37 | 1.3.7 | Elaborar Runbook |  | 3d | 2018-01-04 | 2018-01-08 | 35 | 2017-12-22 | 2017-12-27 | 3d | 264d | 0d | WeDo | 24h |
| 38 | 1.3.8 | Validação de runbook | manual | 5d | 2018-01-09 | 2018-01-15 | 37 |  |  |  |  |  |  |  |
| 39 | 1.3.9 | Testes de Sistema |  | 4d | 2018-01-04 | 2018-01-09 | 35 | 2017-12-22 | 2017-12-28 | 4d | 263d | 0d | WeDo | 32h |
| 40 | 1.3.10 | UAT em ambiente DEV |  | 4d | 2017-11-21 | 2017-11-24 | 7 | 2018-01-02 | 2018-01-05 | 4d | 293d | 30d | WeDo; Oi | 64h |
| 41 | 1.3.11 | **Definição responsabilidades N1/N2 [WEDO/Operações]** |  | 30d | 2017-10-09 | 2017-11-23 |  |  |  |  |  |  | Oi/DIEO/WEDO | 456h |
| 42 | 1.3.11.1 | Definição de arvore de atendimento remedy [CCO/N1/N2/N3] | manual | 5d | 2018-01-04 | 2018-01-10 | 35 |  |  |  |  |  | WeDo; Oi; Operações | 120h |
| 43 | 1.3.11.2 | Elaboração de matrix RACI [responsáveis x atividades] | manual | 5d | 2018-01-04 | 2018-01-10 | 35 |  |  |  |  |  | WeDO/Operações | 40h |
| 44 | 1.3.11.3 | Elaboração de MOP | manual | 5d | 2018-01-04 | 2018-01-10 | 35 |  |  |  |  |  | WeDo | 40h |
| 45 | 1.3.11.4 | Workshop com Operações | manual | 1d | 2018-01-11 | 2018-01-11 | 44 |  |  |  |  |  | WeDo; Operações | 16h |
| 46 | 1.3.12 | Construção de scripts de monitoração | manual | 15d | 2018-01-16 | 2018-02-05 | 37, 38 |  |  |  |  |  | Operações | 120h |
| 47 | 1.3.13 | Construção de scripts de transmissão | manual | 15d | 2018-01-16 | 2018-02-05 | 37, 38 |  |  |  |  |  | Operações | 120h |
| 48 | 1.3.14 | Testes de Conectividade e Transmissão [liberação portas de firewall e gestão de acesso] | manual | 5d | 2017-11-21 | 2017-11-27 | 30, 7 |  |  |  |  |  |  |  |
| 49 | 1.3.15 | Elaborar PLIM |  | 2d | 2018-01-10 | 2018-01-11 | 39, 40 | 2018-01-02 | 2018-01-03 | 2d | 263d | 1d | WeDo | 16h |
| 50 | 1.3.16 | Abertura de CRQ | manual | 1d | 2018-01-15 | 2018-01-15 | 49 |  |  |  |  |  | Oi | 8h |
| 51 | 1.3.17 | Aprovação de CRQ | manual | 5d | 2018-01-16 | 2018-01-22 | 49, 50 |  |  |  |  |  | DIEO | 40h |
| 52 | 1.3.18 | Planejamento e aprovação de GMUD | manual | 5d | 2018-01-23 | 2018-01-29 | 51 |  |  |  |  |  | DIEO | 40h |
| 53 | 1.3.19 | Pacote RAID-FMS pronto para Implantação |  | 2d | 2018-01-30 | 2018-01-31 | 40, 52 | 2018-01-08 | 2018-01-09 | 2d | 262d | 0d | WeDo | 16h |
| 54 | 1.3.20 | Implantação [considerando SLA de entrega do HW pelo time de INFRA] | manual | 2d | 2018-08-13 | 2018-08-14 | 9 |  |  |  |  |  | WeDo; Oi | 32h |
| 55 | 1.3.21 | Operação Assistida |  | 5d | 2018-08-15 | 2018-08-21 | 54 | 2018-01-10 | 2018-01-16 | 5d | 128d | 0d | WeDo; Oi | 80h |
| 56 | 1.3.22 | Entrega da especificação técnica | manual | 5d | 2018-02-01 | 2018-02-07 | 53, 55SS |  |  |  |  |  |  |  |
| 57 | 1.3.23 | WAC - Analytics (calibragem das regras) ::: "Confirmar faseamento com WEDO" 1a etapa antes da entrada em produção, 2a etapa pós produção. | manual | 45d | 2017-12-04 | 2018-02-06 |  | 2017-12-04 | 2018-02-06 | 45d |  |  | WeDo PT | 360h |
| 58 | 1.3.24 | Onda 2 - TV off line - Finalizada | milestone | 0d | 2018-08-21 | 2018-08-21 | 55, 56 | 2018-01-16 | 2018-01-16 | 0d | 128d |  |  |  |

Notes:
- 35: Avaliar a possibilidade de quebrar entregas (quais)
