# RAID - Cronograma consolidado_LMF_20140620

Schedule from MS Project, 2014-05-19 to 2016-03-25, status date 2014-11-28, A marks actual dates.
Microsoft

## Calendars

- Padrão: Mon-Fri 09:00-12:00, 13:00-18:00; Sat-Sun off.

## Resources

| Resource |
| --- |
| Wedo |
| oi |
| weod |
| Csol |
| Usuário |
| 35 |

## Schedule

| ID | WBS | Task | Duration | Start | Finish | Predecessors | Complete | Remaining | Actual finish | Baseline start | Baseline finish | Baseline duration | Total slack | Constraint | Work |
| --- | --- | --- | --- | --- | --- | --- | --- | --- | --- | --- | --- | --- | --- | --- | --- |
| 1 | 1 | **84710 - Controles de Integridade Grupos 1 e 2** | 485d | 2014-05-19 A | 2016-03-25 |  | 32% | 328.5d |  | 2014-05-19 | 2014-09-25 | 94d | 0d |  | 152h |
| 2 | 1.1 | **Visão e DSOL** | 90d | 2014-05-19 A | 2014-09-19 A |  | 100% |  |  |  |  |  |  |  |  |
| 3 | 1.1.1 | Ajustar STI | 6d | 2014-05-19 A | 2014-05-26 A |  | 100% |  |  | 2014-05-19 | 2014-05-26 | 6d |  |  |  |
| 4 | 1.1.2 | **Primeira plenária** | 4d | 2014-05-26 A | 2014-05-29 A |  | 100% |  |  | 2014-05-26 | 2014-05-29 | 4d |  |  |  |
| 5 | 1.1.2.1 | 1ª Plenária - CRM x HLR - Tráfego - STI 84710 | 1d | 2014-05-26 A | 2014-05-26 A |  | 100% |  |  | 2014-05-26 | 2014-05-26 | 1d |  | start no earlier than 2014-05-26 |  |
| 6 | 1.1.2.2 | 1ª Plenária - CRM x Faturamento Móvel - STI 84710 | 1d | 2014-05-27 A | 2014-05-27 A | 5 | 100% |  |  | 2014-05-27 | 2014-05-27 | 1d |  |  |  |
| 7 | 1.1.2.3 | 1ª Plenária - CRM x Faturamento Fixa R2 - STI 84710 | 1d | 2014-05-28 A | 2014-05-28 A | 6 | 100% |  |  | 2014-05-28 | 2014-05-28 | 1d |  |  |  |
| 8 | 1.1.2.4 | 1ª Plenária - CRM x Rede Fixa R1 - STI 84710 | 1d | 2014-05-29 A | 2014-05-29 A | 7 | 100% |  |  | 2014-05-29 | 2014-05-29 | 1d |  |  |  |
| 9 | 1.1.2.5 | 1ª Plenária - STC x SISRAF - STI 84710 | 1d | 2014-05-29 A | 2014-05-29 A | 8FF | 100% |  |  | 2014-05-29 | 2014-05-29 | 1d |  |  |  |
| 10 | 1.1.3 | **Segunda plenária** | 1d | 2014-06-05 A | 2014-06-05 A |  | 100% |  |  | 2014-06-05 | 2014-06-05 | 1d |  |  |  |
| 11 | 1.1.3.1 | 2ª Plenária - Revisão do documento STI 84710 | 1d | 2014-06-05 A | 2014-06-05 A |  | 100% |  |  | 2014-06-05 | 2014-06-05 | 1d |  | start no earlier than 2014-06-05 |  |
| 12 | 1.1.4 | **Terceira plenária** | 1d | 2014-06-05 A | 2014-06-05 A |  | 100% |  |  | 2014-06-05 | 2014-06-05 | 1d |  |  |  |
| 13 | 1.1.4.1 | 3ª Plenária - Revisão do documento STI 84710 | 1d | 2014-06-05 A | 2014-06-05 A |  | 100% |  |  | 2014-06-05 | 2014-06-05 | 1d |  | start no earlier than 2014-06-05 |  |
| 14 | 1.1.5 | **Quarta plenária** | 2.5d | 2014-07-23 A | 2014-07-25 A |  | 100% |  |  | 2014-07-23 | 2014-07-25 | 2.5d |  |  |  |
| 15 | 1.1.5.1 | STI 84710 - DSOL - SAC x SFA - 4ª Plenária | 1d | 2014-07-23 A | 2014-07-23 A |  | 100% |  |  | 2014-07-23 | 2014-07-23 | 1d |  | start no earlier than 2014-07-23 |  |
| 16 | 1.1.5.2 | STI 84710 - DSOL - STC e SISRAF - 4ª Plenária | 0.5d | 2014-07-25 A | 2014-07-25 A |  | 100% |  |  | 2014-07-25 | 2014-07-25 | 0.5d |  | start no earlier than 2014-07-25 |  |
| 17 | 1.1.5.3 | STI 84710 - DSOL - SIEBEL, INFORMÁTICA - 4ª Plenária | 0.5d | 2014-07-25 A | 2014-07-25 A |  | 100% |  |  | 2014-07-25 | 2014-07-25 | 0.5d |  | start no earlier than 2014-07-25 |  |
| 18 | 1.1.6 | **Quinta plenária** | 3d | 2014-07-29 A | 2014-07-31 A |  | 100% |  |  | 2014-07-29 | 2014-07-31 | 3d |  |  |  |
| 19 | 1.1.6.1 | STI 84710 - DSOL - 5ª Plenária | 3d | 2014-07-29 A | 2014-07-31 A |  | 100% |  |  | 2014-07-30 | 2014-07-30 | 1d |  | start no earlier than 2014-07-29 |  |
| 20 | 1.1.7 | **Sexta Plenária** | 1d | 2014-08-06 A | 2014-08-06 A |  | 100% |  |  | 2014-08-06 | 2014-08-06 | 1d |  |  |  |
| 21 | 1.1.7.1 | Reunião - 6a. Plenaria | 1d | 2014-08-06 A | 2014-08-06 A |  | 100% |  |  | 2014-08-06 | 2014-08-06 | 1d |  | start no earlier than 2014-08-06 |  |
| 22 | 1.1.8 | **1a Revisão de escopo - acerto de interfaces** | 3d | 2014-06-13 A | 2014-06-17 |  | 100% |  | 2014-06-19 | 2014-06-13 | 2014-06-17 | 3d |  |  |  |
| 23 | 1.1.8.1 | Documento atualizado no STI | 1d? | 2014-06-13 A | 2014-06-13 A |  | 100% |  |  | 2014-06-13 | 2014-06-13 | 1d? |  |  |  |
| 24 | 1.1.8.2 | Aprovação Gerente imediato | 1d? | 2014-06-13 A | 2014-06-13 A |  | 100% |  |  | 2014-06-13 | 2014-06-13 | 1d? |  |  |  |

| ID | WBS | Task | Type | Duration | Start | Finish | Predecessors | Complete | Baseline start | Baseline finish | Baseline duration | Text1 |
| --- | --- | --- | --- | --- | --- | --- | --- | --- | --- | --- | --- | --- |
| 25 | 1.1.8.3 | **Aprovaçao de áreas impactadas** |  | 5d | 2014-06-13 A | 2014-06-19 A |  | 100% | 2014-06-13 | 2014-06-19 | 5d |  |
| 26 | 1.1.8.3.1 | Controladoria |  | 3d | 2014-06-13 A | 2014-06-17 A |  | 100% | 2014-06-13 | 2014-06-17 | 3d |  |
| 27 | 1.1.8.3.2 | projetos de faturamento |  | 3d | 2014-06-13 A | 2014-06-17 A |  | 100% | 2014-06-13 | 2014-06-17 | 3d |  |
| 28 | 1.1.8.3.3 | planejamento core rede movel |  | 5d | 2014-06-13 A | 2014-06-19 A |  | 100% | 2014-06-13 | 2014-06-19 | 5d |  |
| 29 | 1.1.8.3.4 | RA e prevenção a fraudes |  | 3d | 2014-06-13 A | 2014-06-17 A |  | 100% | 2014-06-13 | 2014-06-17 | 3d |  |
| 30 | 1.1.8.3.5 | segurança da informação |  | 3d | 2014-06-13 A | 2014-06-17 A |  | 100% | 2014-06-13 | 2014-06-17 | 3d |  |
| 31 | 1.1.8.3.6 | Tributos diretos |  | 3d | 2014-06-13 A | 2014-06-17 A |  | 100% | 2014-06-13 | 2014-06-17 | 3d |  |
| 32 | 1.1.9 | **2a Revisão de escopo - retirada PTS** |  | 5d | 2014-06-18 A | 2014-06-24 A |  | 100% | 2014-06-18 | 2014-06-24 | 5d |  |
| 33 | 1.1.9.1 | Aprovação Gerente imediato |  | 1d | 2014-06-18 A | 2014-06-18 A |  | 100% | 2014-06-18 | 2014-06-18 | 1d |  |
| 34 | 1.1.9.2 | Documento atualizado no STI |  | 2d | 2014-06-19 A | 2014-06-20 A | 33 | 100% | 2014-06-19 | 2014-06-20 | 2d |  |
| 35 | 1.1.9.3 | **Aprovação de áreas impactadas** |  | 2d | 2014-06-23 A | 2014-06-24 A |  | 100% | 2014-06-23 | 2014-06-24 | 2d |  |
| 36 | 1.1.9.3.1 | controladoria |  | 2d | 2014-06-23 A | 2014-06-24 A | 34 | 100% | 2014-06-23 | 2014-06-24 | 2d |  |
| 37 | 1.1.9.3.2 | projetos de faturamento | milestone | 0d | 2014-06-23 A | 2014-06-23 A | 34 | 100% | 2014-06-23 | 2014-06-23 | 0d |  |
| 38 | 1.1.9.3.3 | planejamento core rede movel |  | 2d | 2014-06-23 A | 2014-06-24 A | 34 | 100% | 2014-06-23 | 2014-06-24 | 2d |  |
| 39 | 1.1.9.3.4 | RA e prevenção a fraudes |  | 2d | 2014-06-23 A | 2014-06-24 A | 34 | 100% | 2014-06-23 | 2014-06-24 | 2d |  |
| 40 | 1.1.9.3.5 | Segurança da informação | milestone | 0d | 2014-06-23 A | 2014-06-23 A | 34 | 100% | 2014-06-23 | 2014-06-23 | 0d |  |
| 41 | 1.1.9.3.6 | Tributos diretos | milestone | 0d | 2014-06-23 A | 2014-06-23 A | 34 | 100% | 2014-06-23 | 2014-06-23 | 0d |  |
| 42 | 1.1.10 | STI enviado para o CSOL | milestone | 0d | 2014-06-24 A | 2014-06-24 A | 35 | 100% | 2014-06-24 | 2014-06-24 | 0d |  |
| 43 | 1.1.11 | Atualização de Visão Gráfica |  | 2d | 2014-06-25 A | 2014-06-26 A | 42 | 100% | 2014-06-25 | 2014-06-26 | 2d |  |
| 44 | 1.1.12 | Atualização de ME Consolidada STI |  | 1d | 2014-06-26 A | 2014-06-26 A | 43 | 100% | 2014-06-26 | 2014-06-26 | 1d |  |
| 45 | 1.1.13 | **Revalidação de GO para as fábricas** |  | 0d | 2014-06-27 A | 2014-06-27 A | 43 | 100% | 2014-06-27 | 2014-06-27 | 0d | Alinhado com Betim que não era necessário |
| 46 | 1.1.13.1 | Confirmação de Custo/Prazo ACC SBL | milestone | 0d | 2014-06-27 A | 2014-06-27 A | 43 | 100% | 2014-06-27 | 2014-06-27 | 0d |  |
| 47 | 1.1.13.2 | Confirmação de Custo/Prazo ACC ARBOR | milestone | 0d | 2014-06-27 A | 2014-06-27 A | 43 | 100% | 2014-06-27 | 2014-06-27 | 0d |  |
| 48 | 1.1.13.3 | Confirmação de Custo/Prazo ACC STC | milestone | 0d | 2014-06-27 A | 2014-06-27 A | 43 | 100% | 2014-06-27 | 2014-06-27 | 0d |  |
| 49 | 1.1.13.4 | Confirmação de Custo/Prazo ACC SAC | milestone | 0d | 2014-06-27 A | 2014-06-27 A | 43 | 100% | 2014-06-27 | 2014-06-27 | 0d |  |
| 50 | 1.1.13.5 | Confirmação de Custo/Prazo ACC INF | milestone | 0d | 2014-06-27 A | 2014-06-27 A | 43 | 100% | 2014-06-27 | 2014-06-27 | 0d |  |
| 51 | 1.1.13.6 | Confirmação de Custo/Prazo IBM SISRAF | milestone | 0d | 2014-06-27 A | 2014-06-27 A | 43 | 100% | 2014-06-27 | 2014-06-27 | 0d |  |
| 52 | 1.1.13.7 | Confirmação de Custo/Prazo IBM SFA | milestone | 0d | 2014-06-27 A | 2014-06-27 A | 43 | 100% | 2014-06-27 | 2014-06-27 | 0d |  |
| 53 | 1.1.13.8 | Confirmação de Custo/Prazo IBM GENEVA | milestone | 0d | 2014-06-27 A | 2014-06-27 A | 43 | 100% | 2014-06-27 | 2014-06-27 | 0d |  |
| 54 | 1.1.13.9 | Confirmação de Custo/Prazo WEDO RAID PI | milestone | 0d | 2014-06-27 A | 2014-06-27 A | 43 | 100% | 2014-06-27 | 2014-06-27 | 0d |  |
| 55 | 1.1.14 | Revisão de plano do DSOL |  | 1d | 2014-06-27 A | 2014-06-27 A | 45 | 100% | 2014-06-27 | 2014-06-27 | 1d |  |

| ID | WBS | Task | Type | Duration | Start | Finish | Predecessors | Complete | Baseline start | Baseline finish | Baseline duration | Constraint | Text1 |
| --- | --- | --- | --- | --- | --- | --- | --- | --- | --- | --- | --- | --- | --- |
| 56 | 1.1.15 | **Elaboração Visão de Solução Final SISTEMAS IMPACTADOS** |  | 16d | 2014-06-27 A | 2014-07-18 A |  | 100% | 2014-06-27 | 2014-07-18 | 16d |  |  |
| 57 | 1.1.15.1 | DS - Elaborar Visão da solução Final Siebel 6.3 |  | 10d | 2014-07-01 A | 2014-07-14 A | 46 | 100% | 2014-07-01 | 2014-07-14 | 10d | start no earlier than 2014-07-01 |  |
| 58 | 1.1.15.2 | DS - Elaborar Visão da solução Final ARBOR |  | 10d | 2014-07-01 A | 2014-07-14 A | 47 | 100% | 2014-07-01 | 2014-07-14 | 10d | start no earlier than 2014-07-01 |  |
| 59 | 1.1.15.3 | DS - Elaborar Visão da solução Final STC/SISRAF |  | 10d | 2014-07-01 A | 2014-07-14 A | 48 | 100% | 2014-07-01 | 2014-07-14 | 10d | start no earlier than 2014-07-01 |  |
| 60 | 1.1.15.4 | DS - Elaborar Visão da solução Final SAC |  | 10d | 2014-07-01 A | 2014-07-14 A | 49 | 100% | 2014-07-01 | 2014-07-14 | 10d | start no earlier than 2014-07-01 |  |
| 61 | 1.1.15.5 | DS - Elaborar Visão da solução Final INF |  | 16d | 2014-06-27 A | 2014-07-18 A | 50 | 100% | 2014-06-27 | 2014-07-18 | 16d | start no earlier than 2014-06-27 |  |
| 62 | 1.1.15.6 | DS - Elaborar Visão da solução Fina SFA |  | 10d | 2014-07-01 A | 2014-07-14 A | 51 | 100% | 2014-07-01 | 2014-07-14 | 10d | start no earlier than 2014-07-01 |  |
| 63 | 1.1.15.7 | DS - Elaborar Visão da solução Final GENEVA |  | 10d | 2014-07-01 A | 2014-07-14 A | 52 | 100% | 2014-07-01 | 2014-07-14 | 10d | start no earlier than 2014-07-01 |  |
| 64 | 1.1.15.8 | DS - Elaborar Visão da solução Final HLR |  | 10d | 2014-07-01 A | 2014-07-14 A | 53 | 100% | 2014-07-01 | 2014-07-14 | 10d | start no earlier than 2014-07-01 | VERIFICAR |
| 65 | 1.1.15.9 | DS - Elaborar Visão da solução Final RAID IP |  | 10d | 2014-06-30 A | 2014-07-11 A | 54 | 100% | 2014-06-30 | 2014-07-11 | 10d | start no earlier than 2014-06-23 |  |
| 66 | 1.1.16 | **Aprovação Visão da Solução Final** |  | 10d | 2014-07-14 A | 2014-07-25 A |  | 100% | 2014-07-14 | 2014-07-25 | 10d |  |  |
| 67 | 1.1.16.1 | DS – Aprovar Visão da Solução Final – Siebel 6.3 |  | 9d | 2014-07-15 A | 2014-07-25 A | 57 | 100% | 2014-07-15 | 2014-07-25 | 9d |  |  |
| 68 | 1.1.16.2 | DS – Aprovar Visão da Solução Final – Arbor |  | 9d | 2014-07-15 A | 2014-07-25 A | 58 | 100% | 2014-07-15 | 2014-07-25 | 9d |  |  |
| 69 | 1.1.16.3 | DS – Aprovar Visão da Solução Final – STC |  | 5d | 2014-07-15 A | 2014-07-21 A | 59 | 100% | 2014-07-15 | 2014-07-21 | 5d |  |  |
| 70 | 1.1.16.4 | DS – Aprovar Visão da Solução Final – SAC |  | 5d | 2014-07-15 A | 2014-07-21 A | 60 | 100% | 2014-07-15 | 2014-07-21 | 5d |  |  |
| 71 | 1.1.16.5 | DS – Aprovar Visão da Solução Final – Informatica |  | 3d | 2014-07-21 A | 2014-07-23 A | 61 | 100% | 2014-07-21 | 2014-07-23 | 3d |  |  |
| 72 | 1.1.16.6 | DS – Aprovar Visão da Solução Final – SFA |  | 5d | 2014-07-15 A | 2014-07-21 A | 62 | 100% | 2014-07-15 | 2014-07-21 | 5d |  |  |
| 73 | 1.1.16.7 | DS – Aprovar Visão da Solução Final – GENEVA |  | 5d | 2014-07-15 A | 2014-07-21 A | 63 | 100% | 2014-07-15 | 2014-07-21 | 5d |  |  |
| 74 | 1.1.16.8 | DS – Aprovar Visão da Solução Final – HLR |  | 5d | 2014-07-15 A | 2014-07-21 A | 64 | 100% | 2014-07-15 | 2014-07-21 | 5d |  |  |
| 75 | 1.1.16.9 | DS – Aprovar Visão da Solução Final – RAID IP |  | 5d | 2014-07-14 A | 2014-07-18 A | 65 | 100% | 2014-07-14 | 2014-07-18 | 5d |  |  |
| 76 | 1.1.17 | DS – Consolidar Visão da Solução Final – Todos os sistemas |  | 2d | 2014-07-28 A | 2014-07-29 A | 66 | 100% | 2014-07-28 | 2014-07-29 | 2d |  |  |
| 77 | 1.1.18 | DS – Aprovar Visão da Solução Final Consolidada | milestone | 0d | 2014-07-29 A | 2014-07-29 A | 76 | 100% | 2014-07-29 | 2014-07-29 | 0d |  |  |
| 78 | 1.1.19 | **Elaboração Artefatos do Desenho de Solução SISTEMAS IMPACTADOS** |  | 26d | 2014-07-22 A | 2014-08-26 A |  | 100% | 2014-07-22 | 2014-08-18 | 20d |  |  |
| 79 | 1.1.19.1 | DS – Elabora artefatos do Desenho da Solução – Siebel 6.3 |  | 18d | 2014-07-24 A | 2014-08-18 A | 67FS-2d | 100% | 2014-07-24 | 2014-08-06 | 10d |  |  |
| 80 | 1.1.19.2 | DS – Elabora artefatos do Desenho da Solução – Arbor |  | 24d | 2014-07-24 A | 2014-08-26 A | 68FS-2d | 100% | 2014-07-24 | 2014-08-06 | 10d |  |  |
| 81 | 1.1.19.3 | DS – Elabora artefatos do Desenho da Solução – STC |  | 10d | 2014-07-22 A | 2014-08-04 A | 69 | 100% | 2014-07-22 | 2014-08-04 | 10d |  |  |
| 82 | 1.1.19.4 | DS – Elabora artefatos do Desenho da Solução – SAC |  | 17d | 2014-07-24 A | 2014-08-15 A | 70FS+2d | 100% | 2014-07-24 | 2014-08-06 | 10d |  |  |
| 83 | 1.1.19.5 | DS – Elabora artefatos do Desenho da Solução – Informatica |  | 19d | 2014-07-28 A | 2014-08-21 A | 71FS+2d | 100% | 2014-07-28 | 2014-08-08 | 10d |  |  |
| 84 | 1.1.19.6 | DS – Elabora artefatos do Desenho da Solução – SFA |  | 10d | 2014-07-22 A | 2014-08-04 A | 72 | 100% | 2014-07-22 | 2014-08-04 | 10d |  |  |
| 85 | 1.1.19.7 | DS – Elabora artefatos do Desenho da Solução – GENEVA |  | 10d | 2014-07-22 A | 2014-08-04 A | 73 | 100% | 2014-07-22 | 2014-08-04 | 10d | finish no earlier than 2014-07-25 |  |
| 86 | 1.1.19.8 | DS – Elabora artefatos do Desenho da Solução – HLR |  | 15d | 2014-07-22 A | 2014-08-11 A | 74 | 100% | 2014-07-22 | 2014-08-04 | 10d |  |  |
| 87 | 1.1.19.9 | DS – Elabora artefatos do Desenho da Solução – RAID IP |  | 24d | 2014-07-22 A | 2014-08-22 A | 75FS+1d | 100% | 2014-07-22 | 2014-08-04 | 10d |  |  |
| 88 | 1.1.19.10 | DS - Elaborar artefatos do Desenho da solução - SIS Móvel |  | 8d | 2014-08-12 A | 2014-08-21 A | 86 | 100% | 2014-08-12 | 2014-08-18 | 5d |  |  |

Notes:
- 59: assumida a visão macro do CSOL. OK da fábrica
- 60: assumida a visão macro do CSOL. OK da fábrica

| ID | WBS | Task | Type | Duration | Start | Finish | Predecessors | Complete | Baseline start | Baseline finish | Baseline duration |
| --- | --- | --- | --- | --- | --- | --- | --- | --- | --- | --- | --- |
| 89 | 1.1.20 | **Aprovação de Artefatos de Desenho de Solução** |  | 31d | 2014-08-05 A | 2014-09-16 A |  | 100% | 2014-08-05 | 2014-08-15 | 9d |
| 90 | 1.1.20.1 | DS – Aprovar artefatos do Desenho da Solução – Siebel 6.3 |  | 11d | 2014-08-07 A | 2014-08-21 A | 79FS-2d | 100% | 2014-08-07 | 2014-08-13 | 5d |
| 91 | 1.1.20.2 | DS – Aprovar artefatos do Desenho da Solução – Arbor |  | 12d | 2014-08-13 A | 2014-08-28 A | 80FS-10d | 100% | 2014-08-07 | 2014-08-13 | 5d |
| 92 | 1.1.20.3 | DS – Aprovar artefatos do Desenho da Solução – STC |  | 5d | 2014-08-05 A | 2014-08-11 A | 81 | 100% | 2014-08-05 | 2014-08-11 | 5d |
| 93 | 1.1.20.4 | DS – Aprovar artefatos do Desenho da Solução – SAC |  | 5d | 2014-08-18 A | 2014-08-22 A | 82 | 100% | 2014-08-07 | 2014-08-13 | 5d |
| 94 | 1.1.20.5 | DS – Aprovar artefatos do Desenho da Solução – Informatica |  | 2d | 2014-08-22 A | 2014-08-25 A | 83 | 100% | 2014-08-11 | 2014-08-15 | 5d |
| 95 | 1.1.20.6 | DS – Aprovar artefatos do Desenho da Solução – SFA |  | 5d | 2014-08-05 A | 2014-08-11 A | 84 | 100% | 2014-08-05 | 2014-08-11 | 5d |
| 96 | 1.1.20.7 | DS – Aprovar artefatos do Desenho da Solução – GENEVA |  | 19d | 2014-08-13 A | 2014-09-08 A | 85FS+6d | 100% | 2014-08-05 | 2014-08-11 | 5d |
| 97 | 1.1.20.8 | DS – Aprovar artefatos do Desenho da Solução – HLR |  | 5d | 2014-08-12 A | 2014-08-18 A | 86 | 100% | 2014-08-05 | 2014-08-11 | 5d |
| 98 | 1.1.20.9 | DS – Aprovar artefatos do Desenho da Solução – RAID IP | manual | 17d | 2014-08-25 A | 2014-09-16 A | 87 | 100% | 2014-08-05 | 2014-08-11 | 5d |
| 99 | 1.1.20.10 | DS - Aprovar artefatos do Desneho da Solução - SIS Móvel |  | 1d | 2014-08-22 A | 2014-08-22 A | 88 | 100% |  |  |  |
| 100 | 1.1.21 | DS – Consolidar Desenho da Solução Final – Todos os sistemas + HLR |  | 2d | 2014-09-17 A | 2014-09-18 A | 89 | 100% | 2014-08-18 | 2014-08-20 | 3d |
| 101 | 1.1.22 | DS – Aprovar Desenho da Solução Final Consolidada |  | 1d | 2014-09-19 A | 2014-09-19 A | 100 | 100% | 2014-08-21 | 2014-08-27 | 5d |
| 102 | 1.2 | **Fechar Custo** |  | 34d | 2014-09-12 A | 2014-10-29 A | 101 | 100% | 2014-09-12 | 2014-10-08 | 19d |
| 103 | 1.2.1 | Receber proposta Desenvolvimento | manual | 4d | 2014-09-12 A | 2014-09-25 A |  | 100% | 2014-09-05 | 2014-09-11 | 5d |
| 104 | 1.2.2 | Validar propostas Desenvolvimento |  | 11d | 2014-09-26 A | 2014-10-10 A | 103 | 100% | 2014-09-12 | 2014-09-18 | 5d |
| 105 | 1.2.3 | **RAID** |  | 4d | 2014-09-29 A | 2014-10-02 A |  | 100% | 2014-09-29 | 2014-10-08 | 8d |
| 106 | 1.2.3.1 | Validação Métricas |  | 1d | 2014-09-29 A | 2014-09-29 A | 103FS+1d | 100% | 2014-09-29 | 2014-09-29 | 1d |
| 107 | 1.2.3.2 | Validação Métricas e WEDO |  | 1d | 2014-10-01 A | 2014-10-01 A | 106FS+1d | 100% | 2014-10-01 | 2014-10-01 | 1d |
| 108 | 1.2.3.3 | Receber proposta RAID ajustada | milestone | 0d | 2014-10-02 A | 2014-10-02 A | 107FS+2d | 100% | 2014-10-06 | 2014-10-08 | 3d |
| 109 | 1.2.3.4 | Validar proposta RAId ajustada | milestone | 0d | 2014-10-02 A | 2014-10-02 A | 108 | 100% | 2014-10-09 | 2014-10-10 | 2d |
| 110 | 1.2.4 | **Testes** |  | 28d | 2014-09-22 A | 2014-10-29 A |  | 100% | 2014-09-22 | 2014-10-07 | 12d |
| 111 | 1.2.4.1 | Elaborar estratégia de testes |  | 7d | 2014-09-22 A | 2014-09-30 A | 101 | 100% | 2014-09-22 | 2014-09-24 | 3d |
| 112 | 1.2.4.2 | Validar estratégia de testes |  | 2d | 2014-10-01 A | 2014-10-02 A | 111 | 100% | 2014-09-25 | 2014-09-30 | 4d |
| 113 | 1.2.4.3 | Receber/validar propostas de testes |  | 19d | 2014-10-03 A | 2014-10-29 A | 112 | 100% | 2014-10-01 | 2014-10-07 | 5d |
| 114 | 1.2.5 | Custo desenvolvimento fechado | milestone | 0d | 2014-10-29 A | 2014-10-29 A |  | 100% | 2014-10-10 | 2014-10-10 | 0d |

| ID | WBS | Task | Type | Duration | Start | Finish | Predecessors | Complete | Remaining | Baseline start | Baseline finish | Baseline duration | Baseline 1 start | Baseline 1 finish | Total slack | Free slack | Constraint | Work |
| --- | --- | --- | --- | --- | --- | --- | --- | --- | --- | --- | --- | --- | --- | --- | --- | --- | --- | --- |
| 115 | 1.3 | **Aprovação Financeira** |  | 5d | 2014-10-23 A | 2014-10-29 A |  | 100% |  |  |  |  |  |  |  |  |  |  |
| 116 | 1.3.1 | Aprovação Custo final |  | 5d | 2014-10-23 A | 2014-10-29 A | 114FS-5d | 100% |  | 2014-09-19 | 2014-09-25 | 5d |  |  |  |  |  |  |
| 117 | 1.3.2 | Go para fornecedores | milestone | 0d | 2014-10-29 A | 2014-10-29 A | 116 | 100% |  |  |  |  |  |  |  |  |  |  |
| 118 | 1.4 | **Planejar desenvolvimento** |  | 27d | 2014-10-30 A | 2014-12-05 |  | 44% | 15d |  |  |  |  |  | 340d |  |  |  |
| 119 | 1.4.1 | Receber cronogramas Desenvolvimento |  | 12d | 2014-10-30 A | 2014-11-14 A | 117 | 100% |  |  |  |  |  |  |  |  |  |  |
| 120 | 1.4.2 | Validar e Consolidar Cronogramas |  | 15d | 2014-11-17 | 2014-12-05 | 119 |  |  |  |  |  |  |  | 340d |  |  |  |
| 121 | 1.5 | **DESENVOLVIMENTO** |  | 485d | 2014-05-19 | 2016-03-25 |  |  |  | 2014-09-18 | 2015-09-07 | 242d | 2014-05-26 | 2015-03-20 | 0d |  |  | 152h |
| 122 | 1.5.1 | **Desenho Técnico** |  | 96d | 2014-11-24 | 2015-04-06 |  |  |  | 2014-12-01 | 2015-01-23 | 36d | 2014-08-11 | 2014-09-29 | -40d | 0d |  |  |
| 123 | 1.5.1.1 | **WEDO** |  | 40d | 2014-12-01 | 2015-01-23 |  |  |  |  |  |  |  |  | -45d | 0d |  |  |
| 124 | 1.5.1.1.1 | Elaborar Desenho Técnico |  | 34d | 2014-12-01 | 2015-01-15 |  |  |  | 2014-12-01 | 2015-01-15 | 30d | 2014-08-11 | 2014-09-19 | -45d | 0d | start no earlier than 2014-12-01 |  |
| 125 | 1.5.1.1.2 | Elaborar Modelo da Dados |  | 5d | 2015-01-09 | 2015-01-15 | 124FF |  |  | 2015-01-09 | 2015-01-15 | 5d | 2014-09-15 | 2014-09-19 | 311d |  |  |  |
| 126 | 1.5.1.1.3 | Validar Desenho Técnico |  | 5d | 2015-01-16 | 2015-01-22 | 124 |  |  | 2015-01-16 | 2015-01-22 | 5d | 2014-09-22 | 2014-09-26 | -45d | 0d |  |  |
| 127 | 1.5.1.1.4 | Aprovar Desenho Técnico |  | 1d | 2015-01-23 | 2015-01-23 | 126 |  |  | 2015-01-23 | 2015-01-23 | 1d | 2014-09-29 | 2014-09-29 | -45d | 0d |  |  |
| 128 | 1.5.1.1.5 | Desenho Técnico Finalizado | milestone | 0d | 2015-01-23 | 2015-01-23 | 127 |  |  | 2015-01-23 | 2015-01-23 | 0d | 2014-09-29 | 2014-09-29 | -45d | 0d |  |  |
| 129 | 1.5.1.2 | **ACCENTURE** |  | 96d | 2014-11-24 | 2015-04-06 | 128 |  |  |  |  |  |  |  | 0d |  |  |  |
| 130 | 1.5.1.2.1 | **Sistema Siebel 63** |  | 20d | 2015-01-05 | 2015-01-30 |  |  |  |  |  |  |  |  | 0d |  |  |  |
| 131 | 1.5.1.2.1.1 | Elaboração de Especificação Técnica | manual | 15d | 2015-01-05 | 2015-01-23 |  |  |  |  |  |  |  |  |  |  | start no earlier than 2015-01-05 |  |
| 132 | 1.5.1.2.1.2 | Validação da Especificação Técnica - Oi (opcional) |  | 5d | 2015-01-26 | 2015-01-30 | 131 |  |  | 2013-12-30 | 2014-01-13 | 10d |  |  | 261d |  |  |  |
| 133 | 1.5.1.2.2 | **Sistema INFORMATICA** |  | 20d | 2015-01-26 | 2015-02-20 |  |  |  |  |  |  |  |  | 246d |  |  |  |
| 134 | 1.5.1.2.2.1 | Elaboração de Especificação Técnica |  | 15d | 2015-01-26 | 2015-02-13 |  |  |  |  |  |  |  |  | 246d | 0d |  |  |
| 135 | 1.5.1.2.2.2 | Validação da Especificação Técnica - Oi (opcional) |  | 5d | 2015-02-16 | 2015-02-20 | 134 |  |  | 2013-12-30 | 2014-01-13 | 10d |  |  | 246d |  |  |  |
| 136 | 1.5.1.2.3 | **Sistema SISMOVEL** |  | 50d | 2014-11-24 | 2015-01-30 |  |  |  |  |  |  |  |  | 0d |  |  |  |
| 137 | 1.5.1.2.3.1 | Elaboração de Especificação Técnica |  | 19d | 2014-11-24 | 2014-12-18 |  |  |  |  |  |  |  |  | -45d | 0d | must start on 2014-11-24 |  |
| 138 | 1.5.1.2.3.2 | Validação da Especificação Técnica - Oi (opcional) |  | 5d | 2015-01-26 | 2015-01-30 | 137 |  |  | 2013-12-30 | 2014-01-13 | 10d |  |  | 261d |  |  |  |

| ID | WBS | Task | Type | Duration | Start | Finish | Predecessors | Baseline start | Baseline finish | Baseline duration | Baseline 1 start | Baseline 1 finish | Total slack | Free slack | Constraint | Work |
| --- | --- | --- | --- | --- | --- | --- | --- | --- | --- | --- | --- | --- | --- | --- | --- | --- |
| 139 | 1.5.1.2.4 | **Sistema STC** |  | 11d | 2015-03-23 | 2015-04-06 |  |  |  |  |  |  | 215d |  |  |  |
| 140 | 1.5.1.2.4.1 | Elaboração de Especificação Técnica |  | 6d | 2015-03-23 | 2015-03-30 | 143SS |  |  |  |  |  | 215d | 0d |  |  |
| 141 | 1.5.1.2.4.2 | Validação da Especificação Técnica - Oi (opcional) |  | 5d | 2015-03-31 | 2015-04-06 | 140 | 2013-12-30 | 2014-01-13 | 10d |  |  | 215d |  |  |  |
| 142 | 1.5.1.2.5 | **Sistema SAC** |  | 10d | 2015-03-23 | 2015-04-03 |  |  |  |  |  |  | 0d |  |  |  |
| 143 | 1.5.1.2.5.1 | Elaboração de Especificação Técnica |  | 5d | 2015-03-23 | 2015-03-27 |  |  |  |  |  |  | 0d |  | must start on 2015-03-23 |  |
| 144 | 1.5.1.2.5.2 | Validação da Especificação Técnica - Oi (opcional) |  | 5d | 2015-03-30 | 2015-04-03 | 143 | 2013-12-30 | 2014-01-13 | 10d |  |  | 216d |  |  |  |
| 145 | 1.5.1.2.6 | **Sistema ARBOR** |  | 15d | 2015-01-20 | 2015-02-09 |  |  |  |  |  |  | 0d |  |  |  |
| 146 | 1.5.1.2.6.1 | Elaboração de Especificação Técnica |  | 10d | 2015-01-20 | 2015-02-02 |  |  |  |  |  |  | -4d | 0d | must start on 2015-01-20 |  |
| 147 | 1.5.1.2.6.2 | Validação da Especificação Técnica - Oi (opcional) |  | 5d | 2015-02-03 | 2015-02-09 | 146 | 2013-12-30 | 2014-01-13 | 10d |  |  | 255d |  |  |  |
| 148 | 1.5.1.3 | **IBM** |  | 24d | 2014-12-09 | 2015-01-09 |  |  |  |  |  |  | 0d |  |  |  |
| 149 | 1.5.1.3.1 | Elaborar Desenho Técnico SFA e Geneva |  | 19d | 2014-12-09 | 2015-01-02 |  |  |  |  |  |  | 0d |  | must start on 2014-12-09 |  |
| 150 | 1.5.1.3.2 | Validar Desenho Técnico (opcional) |  | 5d | 2015-01-05 | 2015-01-09 | 149 |  |  |  |  |  | 315d |  | finish no earlier than 2015-01-09 |  |
| 151 | 1.5.2 | **Planejamento de Testes** |  | 85d | 2015-02-02 | 2015-05-29 |  | 2015-01-26 | 2015-03-19 | 36d | 2014-09-30 | 2014-10-20 | 215d |  |  | 144h |
| 152 | 1.5.2.1 | **Testes de Sistema** |  | 63d | 2015-02-02 | 2015-04-29 |  | 2015-01-26 | 2015-02-13 | 15d |  |  | 237d |  |  |  |
| 153 | 1.5.2.1.1 | **WEDO** |  | 17d | 2015-04-07 | 2015-04-29 |  |  |  |  |  |  | 215d |  |  |  |
| 154 | 1.5.2.1.1.1 | Elaborar Plano/Cenários de Testes Sistema |  | 12d | 2015-04-07 | 2015-04-22 | 129 | 2015-01-26 | 2015-02-06 | 10d | 2014-09-30 | 2014-10-13 | 215d | 0d | start no earlier than 2014-11-04 |  |
| 155 | 1.5.2.1.1.2 | Validar Plano/Cenários de Testes de sistema |  | 4d | 2015-04-23 | 2015-04-28 | 154 | 2015-02-09 | 2015-02-12 | 4d | 2014-10-14 | 2014-10-17 | 215d | 0d |  |  |
| 156 | 1.5.2.1.1.3 | Aprovar Plano/Cenários de Testes de Sistema |  | 1d | 2015-04-29 | 2015-04-29 | 155 | 2015-02-13 | 2015-02-13 | 1d | 2014-10-20 | 2014-10-20 | 215d | 0d |  |  |
| 157 | 1.5.2.1.1.4 | Plano de Testes Finalizado | milestone | 0d | 2015-04-29 | 2015-04-29 | 156 | 2015-02-13 | 2015-02-13 | 0d | 2014-10-20 | 2014-10-20 | 215d | 0d |  |  |
| 158 | 1.5.2.1.2 | **ACCENTURE** |  | 51d | 2015-02-02 | 2015-04-13 |  |  |  |  |  |  | 249d |  |  |  |
| 159 | 1.5.2.1.2.1 | **Sistema Siebel 63** |  | 7d | 2015-02-02 | 2015-02-10 |  |  |  |  |  |  | 293d |  |  |  |
| 160 | 1.5.2.1.2.1.1 | Elaboração do planejamento de teste |  | 7d | 2015-02-02 | 2015-02-10 |  |  |  |  |  |  | 293d |  | start no earlier than 2015-02-02 |  |
| 161 | 1.5.2.1.2.2 | **Sistema STC** |  | 6d | 2015-04-06 | 2015-04-13 |  |  |  |  |  |  | 249d |  |  |  |
| 162 | 1.5.2.1.2.2.1 | Elaboração do planejamento de teste |  | 6d | 2015-04-06 | 2015-04-13 |  |  |  |  |  |  | 249d |  | start no earlier than 2015-04-06 |  |

Notes:
- 148: Text3: [28]UID=RNR.3GJ[(`Y4*$N7A'$>.^1`[15]PUN=PRJ00000709[8]TUID=580[27]PUID=inv_investments5068023
- 149: Text3: [28]UID=RNAFC0$MLOU$"TU8UT,%,>FP[15]PUN=PRJ00000709[8]TUID=581[27]PUID=inv_investments5068023
- 150: Text3: [28]UID=RN?\/:0A`@>D&IDLF$0VJ+A`[15]PUN=PRJ00000709[8]TUID=582[27]PUID=inv_investments5068023

| ID | WBS | Task | Type | Duration | Start | Finish | Predecessors | Baseline start | Baseline finish | Baseline duration | Baseline 1 start | Baseline 1 finish | Total slack | Free slack | Constraint | Resources | Work |
| --- | --- | --- | --- | --- | --- | --- | --- | --- | --- | --- | --- | --- | --- | --- | --- | --- | --- |
| 163 | 1.5.2.1.2.3 | **Sistema SAC** |  | 6d | 2015-04-06 | 2015-04-13 |  |  |  |  |  |  | 249d |  |  |  |  |
| 164 | 1.5.2.1.2.3.1 | Elaboração do planejamento de teste |  | 6d | 2015-04-06 | 2015-04-13 |  |  |  |  |  |  | 249d |  | start no earlier than 2015-04-06 |  |  |
| 165 | 1.5.2.1.2.4 | **Sistema ARBOR** |  | 2d | 2015-02-02 | 2015-02-03 |  |  |  |  |  |  | 298d |  |  |  |  |
| 166 | 1.5.2.1.2.4.1 | Elaboração do planejamento de teste |  | 2d | 2015-02-02 | 2015-02-03 |  |  |  |  |  |  | 298d |  | start no earlier than 2015-02-02 |  |  |
| 167 | 1.5.2.2 | **Testes Integrados e UAT** |  | 85d | 2015-02-02 | 2015-05-29 |  | 2015-02-19 | 2015-03-19 | 21d |  |  | 215d |  |  |  | 144h |
| 168 | 1.5.2.2.1 | **WEDO** |  | 22d | 2015-04-30 | 2015-05-29 |  |  |  |  |  |  | 215d |  |  |  |  |
| 169 | 1.5.2.2.1.1 | Elaborar e Cadastrar (Quality Center) Plano/Cenários de Testes Integrados e UAT |  | 11d | 2015-04-30 | 2015-05-14 | 157 | 2015-02-19 | 2015-03-04 | 10d |  |  | 215d | 0d |  |  |  |
| 170 | 1.5.2.2.1.2 | Validar Plano/Cenários de Testes Integrados e UAT |  | 5d | 2015-05-15 | 2015-05-21 | 169 | 2015-03-05 | 2015-03-11 | 5d |  |  | 215d | 0d |  |  |  |
| 171 | 1.5.2.2.1.3 | Validar Plano/Cenários de Testes Integrados e UAT |  | 5d | 2015-05-22 | 2015-05-28 | 170 | 2015-03-12 | 2015-03-18 | 5d |  |  | 215d | 0d |  |  |  |
| 172 | 1.5.2.2.1.4 | Aprovar Plano/Cenários de Testes de Sistema |  | 1d | 2015-05-29 | 2015-05-29 | 171 | 2015-03-19 | 2015-03-19 | 1d |  |  | 215d | 0d |  |  |  |
| 173 | 1.5.2.2.1.5 | Plano de Testes Finalizado | milestone | 0d | 2015-05-29 | 2015-05-29 | 172 | 2015-03-19 | 2015-03-19 | 0d |  |  | 215d |  |  |  |  |
| 174 | 1.5.2.2.2 | **IBM** |  | 41d | 2015-02-02 | 2015-03-30 |  |  |  |  |  |  | 259d |  |  |  | 144h |
| 175 | 1.5.2.2.2.1 | Elaborar e Cadastrar (Quality Center) Plano/Cenários de Testes Integrados e UAT |  | 10d | 2015-02-02 | 2015-02-13 |  |  |  |  |  |  | 262d | 3d | start no earlier than 2015-02-02 |  |  |
| 176 | 1.5.2.2.2.2 | Validar Plano/Cenários de Testes Integrados e UAT |  | 5d | 2015-02-19 | 2015-02-25 | 175 |  |  |  |  |  | 259d | 0d |  | oi | 40h |
| 177 | 1.5.2.2.2.3 | Validar Plano/Cenários de Testes Integrados e UAT |  | 5d | 2015-02-26 | 2015-03-04 | 176 |  |  |  |  |  | 259d | 0d |  | oi | 40h |
| 178 | 1.5.2.2.2.4 | Aprovar Plano/Cenário de testes Integrados e UAT |  | 1d | 2015-03-05 | 2015-03-05 | 177 |  |  |  |  |  | 259d | 0d |  | oi | 8h |
| 179 | 1.5.2.2.2.5 | Reuniões de Interdependências |  | 5d | 2015-03-06 | 2015-03-12 | 178 |  |  |  |  |  | 259d | 0d |  |  |  |
| 180 | 1.5.2.2.2.6 | Atualizar Cronograma de TI/UAT com interdependências |  | 2d | 2015-03-13 | 2015-03-16 | 179 |  |  |  |  |  | 259d | 0d |  |  |  |
| 181 | 1.5.2.2.2.7 | Consolidar Cronograma de TI/UAT |  | 2d | 2015-03-17 | 2015-03-18 | 180 |  |  |  |  |  | 259d | 0d |  | oi | 16h |
| 182 | 1.5.2.2.2.8 | Aprovar Cronograma TI/UAT |  | 5d | 2015-03-19 | 2015-03-25 | 181 |  |  |  |  |  | 259d | 0d |  | oi | 40h |
| 183 | 1.5.2.2.2.9 | Atualizar datas no ALM11 |  | 3d | 2015-03-26 | 2015-03-30 | 182 |  |  |  |  |  | 259d |  |  |  |  |
| 184 | 1.5.3 | **Construção/Configuração e Testes de Sistema** |  | 485d | 2014-05-19 | 2016-03-25 |  | 2015-01-26 | 2015-06-01 | 85d | 2014-07-11 | 2015-01-05 | 0d |  |  |  |  |
| 185 | 1.5.3.1 | **WEDO** |  | 91d | 2015-01-26 | 2015-06-01 |  |  |  |  |  |  | 204d |  |  |  |  |
| 186 | 1.5.3.1.1 | Realizar Construção e TU |  | 65d | 2015-01-26 | 2015-04-24 | 128 | 2015-01-26 | 2015-04-24 | 60d | 2014-09-30 | 2014-12-09 | 204d | 0d |  |  |  |
| 187 | 1.5.3.1.2 | Realizar Testes de sistema |  | 31d | 2015-04-20 | 2015-06-01 | 186FS-5d | 2015-04-17 | 2015-06-01 | 30d | 2014-12-03 | 2015-01-05 | 204d | 0d |  |  |  |
| 188 | 1.5.3.1.3 | Construção e Teste de sistema WEDO Finalizada | milestone | 0d | 2015-06-01 | 2015-06-01 | 187 | 2015-06-01 | 2015-06-01 | 0d | 2015-01-05 | 2015-01-05 | 204d | 0d |  |  |  |

Notes:
- 174: Text3: [28]UID=RN0D]!(3-NM4&0W2V;D^?/,`[15]PUN=PRJ00000709[8]TUID=639[27]PUID=inv_investments5068023
- 187: Neste ambito serão carregdos arquivos de produção para a máquina de DEV ou homologação (a definir) de forma a executar os testes com massa real. / O resultado dos TS serão utilizados como evidencia para o UAT;

| ID | WBS | Task | Duration | Start | Finish | Predecessors | Baseline start | Baseline finish | Baseline duration | Total slack | Free slack | Constraint |
| --- | --- | --- | --- | --- | --- | --- | --- | --- | --- | --- | --- | --- |
| 189 | 1.5.3.2 | **ACCENTURE** | 485d | 2014-05-19 | 2016-03-25 |  |  |  |  | 0d |  |  |
| 190 | 1.5.3.2.1 | **Construção** | 239d | 2014-05-19 | 2015-04-16 |  |  |  |  | 246d |  |  |
| 191 | 1.5.3.2.1.1 | **Sistema Siebel 63** | 30d | 2015-01-26 | 2015-03-06 |  |  |  |  | 275d |  |  |
| 192 | 1.5.3.2.1.1.1 | Construção e teste unitário | 20d | 2015-01-26 | 2015-02-20 | 131 |  |  |  | 275d | 0d |  |
| 193 | 1.5.3.2.1.1.2 | Merge | 1d | 2015-02-23 | 2015-02-23 | 192 |  |  |  | 279d | 0d |  |
| 194 | 1.5.3.2.1.1.3 | Elaborar Runbook / Simproc | 5d | 2015-02-23 | 2015-02-27 | 192 |  |  |  | 275d | 0d |  |
| 195 | 1.5.3.2.1.1.4 | Validação Runbook / Simproc - Oi | 5d | 2015-03-02 | 2015-03-06 | 194 |  |  |  | 275d |  |  |
| 196 | 1.5.3.2.1.1.5 | Execução do teste de conectividade | 5d | 2015-02-24 | 2015-03-02 | 193 | 2014-03-18 | 2014-04-23 | 27d | 279d |  |  |
| 197 | 1.5.3.2.1.2 | **Sistema INFORMATICA** | 235d | 2014-05-19 | 2015-04-10 |  |  |  |  | 250d |  |  |
| 198 | 1.5.3.2.1.2.1 | Construção e teste unitário | 30d | 2015-02-16 | 2015-03-27 | 134 |  |  |  | 250d | 0d |  |
| 199 | 1.5.3.2.1.2.2 | Elaborar Runbook / Simproc | 5d | 2015-03-30 | 2015-04-03 | 198 |  |  |  | 250d | 0d |  |
| 200 | 1.5.3.2.1.2.3 | Validação Runbook / Simproc - Oi | 5d | 2015-04-06 | 2015-04-10 | 199 |  |  |  | 250d |  |  |
| 201 | 1.5.3.2.1.2.4 | Execução do teste de conectividade | 5d | 2014-05-19 | 2014-05-23 |  | 2014-03-18 | 2014-04-23 | 27d | 480d |  |  |
| 202 | 1.5.3.2.1.3 | **Sistema STC** | 13d | 2015-03-31 | 2015-04-16 |  |  |  |  | 246d |  |  |
| 203 | 1.5.3.2.1.3.1 | Construção e teste unitário | 12d | 2015-03-31 | 2015-04-15 | 140 |  |  |  | 246d | 0d |  |
| 204 | 1.5.3.2.1.3.2 | Merge | 1d | 2015-04-16 | 2015-04-16 | 203 |  |  |  | 246d |  |  |
| 205 | 1.5.3.2.1.4 | **Sistema SAC** | 7d | 2015-03-30 | 2015-04-07 |  |  |  |  | 253d |  |  |
| 206 | 1.5.3.2.1.4.1 | Construção e teste unitário | 6d | 2015-03-30 | 2015-04-06 | 143 |  |  |  | 253d | 0d |  |
| 207 | 1.5.3.2.1.4.2 | Merge | 1d | 2015-04-07 | 2015-04-07 | 206 |  |  |  | 253d |  |  |
| 208 | 1.5.3.2.1.5 | **Sistema ARBOR** | 16d | 2015-02-03 | 2015-02-24 |  |  |  |  | 283d |  |  |
| 209 | 1.5.3.2.1.5.1 | Construção e teste unitário | 15d | 2015-02-03 | 2015-02-23 | 146 |  |  |  | 283d | 0d |  |
| 210 | 1.5.3.2.1.5.2 | Merge | 1d | 2015-02-24 | 2015-02-24 | 209 |  |  |  | 283d |  |  |
| 211 | 1.5.3.2.2 | **Migração** | 264d | 2014-07-08 | 2015-07-10 |  |  |  |  | 185d |  |  |
| 212 | 1.5.3.2.2.1 | **Sistema Siebel 63** | 79d | 2015-03-20 | 2015-07-08 |  |  |  |  | 177d |  |  |
| 213 | 1.5.3.2.2.1.1 | Migração para TS | 1d | 2015-03-20 | 2015-03-20 |  |  |  |  | 253d | 0d | start no earlier than 2015-03-20 |
| 214 | 1.5.3.2.2.1.2 | Migração para TI | 1d | 2015-05-12 | 2015-05-12 |  |  |  |  | 140d | 0d | start no earlier than 2015-05-12 |
| 215 | 1.5.3.2.2.1.3 | Migração para TRG | 1d | 2015-07-08 | 2015-07-08 |  |  |  |  | 187d | 0d | start no earlier than 2015-07-08 |

| ID | WBS | Task | Duration | Start | Finish | Predecessors | Total slack | Free slack | Constraint |
| --- | --- | --- | --- | --- | --- | --- | --- | --- | --- |
| 216 | 1.5.3.2.2.2 | **Sistema INFORMATICA** | 221d | 2014-07-08 | 2015-05-12 |  | 228d |  |  |
| 217 | 1.5.3.2.2.2.1 | Migração para TI | 1d | 2015-05-12 | 2015-05-12 |  | 228d |  | start no earlier than 2015-05-12 |
| 218 | 1.5.3.2.2.2.2 | Migração para TRG | 1d | 2014-07-08 | 2014-07-08 |  | 448d |  | start no earlier than 2014-07-08 |
| 219 | 1.5.3.2.2.3 | **Sistema STC** | 69d | 2015-04-07 | 2015-07-10 |  | 0d |  |  |
| 220 | 1.5.3.2.2.3.1 | Migração para TS | 1d | 2015-04-07 | 2015-04-07 |  | 0d |  | start no earlier than 2015-04-07 |
| 221 | 1.5.3.2.2.3.2 | Migração para TI | 1d | 2015-05-13 | 2015-05-13 |  | 227d | 0d | start no earlier than 2015-05-13 |
| 222 | 1.5.3.2.2.3.3 | Migração para TRG | 1d | 2015-07-10 | 2015-07-10 |  | 185d | 0d | start no earlier than 2015-07-10 |
| 223 | 1.5.3.2.2.4 | **Sistema SAC** | 69d | 2015-04-07 | 2015-07-10 |  | 0d |  |  |
| 224 | 1.5.3.2.2.4.1 | Migração para TS | 1d | 2015-04-07 | 2015-04-07 | 220SS | 0d |  |  |
| 225 | 1.5.3.2.2.4.2 | Migração para TI | 1d | 2015-05-13 | 2015-05-13 | 221SS | 227d |  |  |
| 226 | 1.5.3.2.2.4.3 | Migração para TRG | 1d | 2015-07-10 | 2015-07-10 | 222SS | 185d |  |  |
| 227 | 1.5.3.2.2.5 | **Sistema ARBOR** | 73d | 2015-03-30 | 2015-07-08 |  | 187d |  |  |
| 228 | 1.5.3.2.2.5.1 | Migração para TS | 1d | 2015-03-30 | 2015-03-30 | 213FS+5d | 253d | 0d |  |
| 229 | 1.5.3.2.2.5.2 | Migração para TI | 1d | 2015-05-12 | 2015-05-12 | 214SS | 228d |  |  |
| 230 | 1.5.3.2.2.5.3 | Migração para TRG | 1d | 2015-07-08 | 2015-07-08 | 215SS | 187d |  |  |
| 231 | 1.5.3.2.3 | **Execução Testes de sistemas** | 265d | 2015-03-23 | 2016-03-25 |  | 0d |  |  |
| 232 | 1.5.3.2.3.1 | **Sistema Siebel 63** | 12d | 2015-03-23 | 2015-04-07 |  | 253d |  |  |
| 233 | 1.5.3.2.3.1.1 | Execução do teste | 11d | 2015-03-23 | 2015-04-06 | 213 | 253d | 0d |  |
| 234 | 1.5.3.2.3.1.2 | Envio do Termo de Aceite do TS | 1d | 2015-04-07 | 2015-04-07 | 233 | 253d |  |  |
| 235 | 1.5.3.2.3.2 | **Sistema STC** | 8d | 2015-04-08 | 2015-04-17 |  | 245d |  |  |
| 236 | 1.5.3.2.3.2.1 | Execução do teste | 7d | 2015-04-08 | 2015-04-16 | 220 | 245d | 0d |  |
| 237 | 1.5.3.2.3.2.2 | Envio do Termo de Aceite do TS | 1d | 2015-04-17 | 2015-04-17 | 236 | 245d |  |  |
| 238 | 1.5.3.2.3.3 | **Sistema SAC** | 253d | 2015-04-08 | 2016-03-25 |  | 0d |  |  |
| 239 | 1.5.3.2.3.3.1 | Execução do teste | 252d | 2015-04-08 | 2016-03-24 | 224 | 0d |  |  |
| 240 | 1.5.3.2.3.3.2 | Envio do Termo de Aceite do TS | 1d | 2016-03-25 | 2016-03-25 | 239 | 0d |  |  |

| ID | WBS | Task | Type | Duration | Start | Finish | Predecessors | Baseline start | Baseline finish | Baseline duration | Baseline 1 start | Baseline 1 finish | Total slack | Free slack | Constraint |
| --- | --- | --- | --- | --- | --- | --- | --- | --- | --- | --- | --- | --- | --- | --- | --- |
| 241 | 1.5.3.2.3.4 | **Sistema ARBOR** |  | 6d | 2015-03-31 | 2015-04-07 |  |  |  |  |  |  | 253d |  |  |
| 242 | 1.5.3.2.3.4.1 | Execução do teste |  | 5d | 2015-03-31 | 2015-04-06 | 228 |  |  |  |  |  | 253d | 0d |  |
| 243 | 1.5.3.2.3.4.2 | Envio do Termo de Aceite do TS |  | 1d | 2015-04-07 | 2015-04-07 | 242 |  |  |  |  |  | 253d |  |  |
| 244 | 1.5.3.3 | **IBM** |  | 37d | 2015-01-05 | 2015-02-24 |  |  |  |  |  |  | 283d |  |  |
| 245 | 1.5.3.3.1 | Construção SFA e Geneva |  | 22d | 2015-01-05 | 2015-02-03 | 149 |  |  |  |  |  | 283d | 0d |  |
| 246 | 1.5.3.3.2 | Teste de Sistema |  | 15d | 2015-02-04 | 2015-02-24 | 245 |  |  |  |  |  | 283d |  |  |
| 247 | 1.5.4 | **Treinamento** |  | 10d | 2015-06-02 | 2015-06-15 |  | 2015-06-02 | 2015-06-15 | 10d | 2014-12-17 | 2015-01-08 | 204d |  |  |
| 248 | 1.5.4.1 | Preparar Treinamento (Material e ambiente) |  | 5d | 2015-06-02 | 2015-06-08 | 188 | 2015-06-02 | 2015-06-08 | 5d | 2014-12-17 | 2014-12-29 | 204d | 0d |  |
| 249 | 1.5.4.2 | Realizar Treinamento |  | 5d | 2015-06-09 | 2015-06-15 | 248, 187 | 2015-06-09 | 2015-06-15 | 5d | 2015-01-06 | 2015-01-08 | 204d | 0d |  |
| 250 | 1.5.4.3 | Treinamento Finalizado | milestone | 0d | 2015-06-15 | 2015-06-15 | 249 | 2015-06-15 | 2015-06-15 | 0d | 2015-01-08 | 2015-01-08 | 204d |  |  |
| 251 | 1.5.5 | **Testes Integrados** |  | 51d | 2015-04-27 | 2015-07-06 |  | 2015-06-02 | 2015-07-01 | 22d | 2014-10-21 | 2015-01-19 | 152d |  |  |
| 252 | 1.5.5.1 | **ACCENTURE** |  | 34d | 2015-04-27 | 2015-06-11 |  |  |  |  |  |  | 152d |  |  |
| 253 | 1.5.5.1.1 | Criação Massa |  | 10d | 2015-04-27 | 2015-05-08 | 214FS-12d |  |  |  |  |  | 230d |  |  |
| 254 | 1.5.5.1.2 | Execução testes integrados Acc |  | 22d | 2015-05-13 | 2015-06-11 | 214 |  |  |  |  |  | 140d | 0d |  |
| 255 | 1.5.5.2 | **IBM** |  | 22d | 2015-05-13 | 2015-06-11 |  |  |  |  |  |  | 201d |  |  |
| 256 | 1.5.5.2.1 | Execução testes integrados IBM |  | 22d | 2015-05-13 | 2015-06-11 | 254SS |  |  |  |  |  | 201d | 0d |  |
| 257 | 1.5.5.3 | **WEDO** |  | 25d | 2015-06-02 | 2015-07-06 |  |  |  |  |  |  | 148d |  |  |
| 258 | 1.5.5.3.1 | Preparar Ambiente de Homologação para inicio dos TI (Migrar Funcionalidades) |  | 5d | 2015-06-02 | 2015-06-08 | 188 | 2015-06-02 | 2015-06-08 | 5d |  |  | 209d |  |  |
| 259 | 1.5.5.3.2 | Receber massa para Testes Integrados |  | 2d | 2015-06-12 | 2015-06-15 | 254 | 2015-06-09 | 2015-06-10 | 2d |  |  | 140d | 0d |  |
| 260 | 1.5.5.3.3 | Executar Testes Integrados |  | 10d | 2015-06-16 | 2015-06-29 | 259 | 2015-06-11 | 2015-06-24 | 10d | 2014-10-21 | 2014-10-21 | 140d | 0d | start no earlier than 2014-10-21 |
| 261 | 1.5.5.3.4 | Validar Evidencias Testes Integrados |  | 5d | 2015-06-30 | 2015-07-06 | 260 | 2015-06-25 | 2015-07-01 | 5d | 2014-10-21 | 2014-10-21 | 140d | 0d |  |
| 262 | 1.5.5.3.5 | Testes integrados Aprovados | milestone | 0d | 2015-07-06 | 2015-07-06 | 261 | 2015-07-01 | 2015-07-01 | 0d | 2014-10-21 | 2014-10-21 | 189d |  | start no earlier than 2014-08-25 |
| 263 | 1.5.5.3.6 | Testes Integrados Finalizados | milestone | 0d | 2015-07-06 | 2015-07-06 | 261 | 2015-07-01 | 2015-07-01 | 0d | 2015-01-19 | 2015-01-19 | 140d | 0d |  |
| 264 | 1.5.6 | **UAT** |  | 38d | 2015-06-12 | 2015-08-04 |  | 2015-07-02 | 2015-07-30 | 21d | 2015-01-09 | 2015-01-30 | 157d |  |  |
| 265 | 1.5.6.1 | **ACCENTURE** |  | 10d | 2015-06-12 | 2015-06-25 |  |  |  |  |  |  | 196d |  |  |
| 266 | 1.5.6.1.1 | Validar evidências UAT SBL / ARB / STC / SIS / Informatica |  | 10d | 2015-06-12 | 2015-06-25 | 254 |  |  |  |  |  | 196d |  |  |

Notes:
- 244: Text3: [28]UID=RN:/^4W2Z1*DRX.2-1VZ!)P0[15]PUN=PRJ00000709[8]TUID=676[27]PUID=inv_investments5068023
- 245: Text3: [28]UID=RN.;.`0_G]F4"3`2HJ4OL7U`[15]PUN=PRJ00000709[8]TUID=677[27]PUID=inv_investments5068023
- 248: A ser realizado em ambiente de DEsenvolvimento, de forma que possas ser paralelizados com os TI
- 249: Expectativa 5 dias (part time , separado em : / 4 dias = user ; / 1 dia = operação.
- 251: Os testes integrados deverão ser executados em ambiente de homologação. / A expectativa é que a massa ( referente a novas interfaces e as já existentes) sejam entregues pela OI na máquina e homologação, nos diretórios esperados. / Deverá ser usado a ferramenta quality center para registrar os cenários.
- 262: Data planejada no cronograma da Frente Vanilla. Frente Vanilla em produçào
- 264: Deve ser realizado no ambiente de homologação. Tendo em atenção que será feito com base nas evidencias dos TI realizados.

| ID | WBS | Task | Type | Duration | Start | Finish | Predecessors | Baseline start | Baseline finish | Baseline duration | Baseline 1 start | Baseline 1 finish | Total slack | Free slack | Constraint | Work |
| --- | --- | --- | --- | --- | --- | --- | --- | --- | --- | --- | --- | --- | --- | --- | --- | --- |
| 267 | 1.5.6.2 | **IBM** |  | 5d | 2015-06-12 | 2015-06-18 |  |  |  |  |  |  | 201d |  |  |  |
| 268 | 1.5.6.2.1 | Validar evidências UAT SFA e Geneva |  | 5d | 2015-06-12 | 2015-06-18 | 256 |  |  |  |  |  | 201d |  |  |  |
| 269 | 1.5.6.3 | **WEDO** |  | 21d | 2015-07-07 | 2015-08-04 |  |  |  |  |  |  | 140d |  |  |  |
| 270 | 1.5.6.3.1 | Validar Evidencias Testes de UAT |  | 20d | 2015-07-07 | 2015-08-03 | 263 | 2015-07-02 | 2015-07-29 | 20d | 2015-01-09 | 2015-01-29 | 140d | 0d |  |  |
| 271 | 1.5.6.3.2 | Aprovar UAT |  | 1d | 2015-08-04 | 2015-08-04 | 270 | 2015-07-30 | 2015-07-30 | 1d | 2015-01-30 | 2015-01-30 | 140d | 0d |  |  |
| 272 | 1.5.6.3.3 | Testes de UAT Finalizados e Aprovados | milestone | 0d | 2015-08-04 | 2015-08-04 | 271 | 2015-07-30 | 2015-07-30 | 0d | 2015-01-30 | 2015-01-30 | 140d | 0d |  |  |
| 273 | 1.5.7 | **Testes de Performance** |  | 12d | 2015-07-07 | 2015-07-22 |  | 2015-07-02 | 2015-07-17 | 12d | 2015-01-20 | 2015-01-29 | 177d |  |  |  |
| 274 | 1.5.7.1 | Migrar Fluxos para ambiente de Produção |  | 5d | 2015-07-07 | 2015-07-13 | 263 | 2015-07-02 | 2015-07-08 | 5d |  |  | 177d | 0d |  |  |
| 275 | 1.5.7.2 | Realizar Testes de Performance |  | 5d | 2015-07-14 | 2015-07-20 | 274 | 2015-07-09 | 2015-07-15 | 5d | 2015-01-20 | 2015-01-26 | 177d | 0d |  |  |
| 276 | 1.5.7.3 | Gerar relatório de Performance |  | 1d | 2015-07-20 | 2015-07-20 | 275FF | 2015-07-15 | 2015-07-15 | 1d | 2015-01-27 | 2015-01-27 | 177d | 0d |  |  |
| 277 | 1.5.7.4 | Validar Evidencias Testes Performance |  | 2d | 2015-07-21 | 2015-07-22 | 276 | 2015-07-16 | 2015-07-17 | 2d | 2015-01-28 | 2015-01-29 | 177d | 0d |  |  |
| 278 | 1.5.7.5 | Aprovar Testes de Perfomance |  | 1d | 2015-07-22 | 2015-07-22 | 277FF | 2015-07-17 | 2015-07-17 | 1d | 2015-01-29 | 2015-01-29 | 177d | 0d |  |  |
| 279 | 1.5.7.6 | Testes de Performance Finalizado | milestone | 0d | 2015-07-22 | 2015-07-22 | 278 | 2015-07-17 | 2015-07-17 | 0d | 2015-01-29 | 2015-01-29 | 177d |  |  |  |
| 280 | 1.5.8 | **Preparação para Implantação** |  | 339d | 2014-05-19 | 2015-09-03 |  | 2015-07-02 | 2015-08-06 | 26d | 2015-01-09 | 2015-02-13 | 146d |  |  | 8h |
| 281 | 1.5.8.1 | **WEDO** |  | 24d | 2015-07-07 | 2015-08-07 |  |  |  |  |  |  | 140d |  |  |  |
| 282 | 1.5.8.1.1 | Definir estratégia de Implantação e Preparar Plano de Implantação |  | 3d | 2015-07-07 | 2015-07-09 | 263 | 2015-07-02 | 2015-07-06 | 3d |  |  | 140d | 0d |  |  |
| 283 | 1.5.8.1.2 | Preparar Runbook e Manual da Operação RAID |  | 5d | 2015-07-10 | 2015-07-16 | 282 | 2015-07-07 | 2015-07-13 | 5d | 2015-01-09 | 2015-01-15 | 140d | 0d | start no earlier than 2014-10-24 |  |
| 284 | 1.5.8.1.3 | Validar e Aprovar Runbook |  | 3d | 2015-07-17 | 2015-07-21 | 283 | 2015-07-14 | 2015-07-16 | 3d | 2015-01-16 | 2015-01-20 | 140d | 0d | start no earlier than 2014-10-31 |  |
| 285 | 1.5.8.1.4 | Elaborar Runbook PI - Grupo 1 e 2 |  | 5d | 2015-07-10 | 2015-07-16 | 283SS | 2015-07-07 | 2015-07-13 | 5d | 2015-01-09 | 2015-01-15 | 140d | 0d |  |  |
| 286 | 1.5.8.1.5 | Validar Runbook - Grupo 1 e 2 |  | 3d | 2015-07-17 | 2015-07-21 | 285 | 2015-07-14 | 2015-07-16 | 3d | 2015-01-16 | 2015-01-20 | 140d | 0d |  |  |
| 287 | 1.5.8.1.6 | Criação de CRQ |  | 2d | 2015-07-22 | 2015-07-23 | 286 | 2015-07-17 | 2015-07-20 | 2d | 2015-01-21 | 2015-01-22 | 174d | 0d |  |  |
| 288 | 1.5.8.1.7 | Validação de CRQ |  | 2d | 2015-07-24 | 2015-07-27 | 287 | 2015-07-21 | 2015-07-22 | 2d | 2015-01-23 | 2015-01-26 | 174d |  |  |  |
| 289 | 1.5.8.1.8 | Preparar cadeias ControlM e scripts |  | 10d | 2015-07-22 | 2015-08-04 | 284, 286 | 2015-07-17 | 2015-07-30 | 10d | 2015-01-21 | 2015-02-03 | 140d | 0d | start no earlier than 2014-11-05 |  |
| 290 | 1.5.8.1.9 | Abertura GMUD STI 84710 |  | 2d | 2015-08-05 | 2015-08-06 | 289, 282, 272 | 2015-07-31 | 2015-08-03 | 2d | 2015-01-27 | 2015-01-28 | 140d | 0d |  |  |
| 291 | 1.5.8.1.10 | Pronta para implantação |  | 1d | 2015-08-07 | 2015-08-07 | 289, 282, 290 | 2015-07-31 | 2015-07-31 | 1d | 2015-02-04 | 2015-02-04 | 140d | 0d |  |  |

Notes:
- 275: TEstes de Performance devem ser realizados já no ambiente do RAID 7 de produção. / A Expectativa é que a OI entregue os arquivos em ambiente de produçao para execução dos testes.

| ID | WBS | Task | Duration | Start | Finish | Predecessors | Baseline start | Baseline finish | Baseline duration | Baseline 1 start | Baseline 1 finish | Total slack | Free slack | Constraint | Resources | Work |
| --- | --- | --- | --- | --- | --- | --- | --- | --- | --- | --- | --- | --- | --- | --- | --- | --- |
| 292 | 1.5.8.2 | **ACCENTURE** | 6d | 2014-05-19 | 2014-05-26 |  |  |  |  |  |  | 479d |  |  |  |  |
| 293 | 1.5.8.2.1 | **Sistema STC** | 6d | 2014-05-19 | 2014-05-26 |  | 2014-05-12 | 2014-05-16 | 5d |  |  | 479d |  |  |  |  |
| 294 | 1.5.8.2.1.1 | Plano de implantação | 1d | 2014-05-19 | 2014-05-19 |  | 2014-04-24 | 2014-04-25 | 2d |  |  | 479d | 0d |  |  |  |
| 295 | 1.5.8.2.1.2 | Validação Plano Implantação | 5d | 2014-05-20 | 2014-05-26 | 294 |  |  |  |  |  | 479d |  |  |  |  |
| 296 | 1.5.8.2.2 | **Sistema SAC** | 5d | 2014-05-19 | 2014-05-23 |  | 2014-05-12 | 2014-05-16 | 5d |  |  | 480d |  |  |  |  |
| 297 | 1.5.8.2.2.1 | Plano de implantação | 2d | 2014-05-19 | 2014-05-20 |  | 2014-04-24 | 2014-04-25 | 2d |  |  | 483d |  |  |  |  |
| 298 | 1.5.8.2.2.2 | Validação Plano Implantação | 5d | 2014-05-19 | 2014-05-23 |  |  |  |  |  |  | 480d |  |  |  |  |
| 299 | 1.5.8.3 | **IBM** | 87d | 2015-05-06 | 2015-09-03 |  |  |  |  |  |  | 146d |  |  |  | 8h |
| 300 | 1.5.8.3.1 | Entrega de Runbook/simproc | 1d | 2015-08-13 | 2015-08-13 |  |  |  |  |  |  | 156d | 0d | start no earlier than 2015-08-13 |  |  |
| 301 | 1.5.8.3.2 | Validação Runbook/simproc | 5d | 2015-08-14 | 2015-08-20 | 300 |  |  |  |  |  | 156d |  |  |  |  |
| 302 | 1.5.8.3.3 | Entrega RNC | 1d | 2015-05-06 | 2015-05-06 |  |  |  |  |  |  | 232d |  | start no earlier than 2015-05-06 | oi | 8h |
| 303 | 1.5.8.3.4 | Abertura de CRQ | 1d | 2015-09-03 | 2015-09-03 |  |  |  |  |  |  | 146d |  | start no earlier than 2015-09-03 |  |  |
| 304 | 1.5.9 | **Colocar em Produção** | 279d | 2014-07-18 | 2015-08-12 |  | 2015-08-04 | 2015-08-06 | 3d | 2015-02-11 | 2015-02-13 | 162d | 0d |  |  |  |
| 305 | 1.5.9.1 | **WEDO** | 3d | 2015-08-10 | 2015-08-12 |  |  |  |  |  |  | 140d |  |  |  |  |
| 306 | 1.5.9.1.1 | Implantar RAID | 3d | 2015-08-10 | 2015-08-12 | 291 | 2015-08-04 | 2015-08-06 | 3d | 2015-02-11 | 2015-02-13 | 140d | 0d | start no earlier than 2015-01-05 |  |  |
| 307 | 1.5.9.2 | **ACCENTURE** | 267d | 2014-07-18 | 2015-07-27 |  |  |  |  |  |  | 174d |  |  |  |  |
| 308 | 1.5.9.2.1 | **Sistema Siebel 63** | 2d | 2015-07-24 | 2015-07-27 |  | 2014-05-12 | 2014-05-16 | 5d |  |  | 174d |  |  |  |  |
| 309 | 1.5.9.2.1.1 | Pré-Implantação | 1d | 2015-07-24 | 2015-07-24 |  | 2014-05-25 | 2014-05-25 | 1d |  |  | 174d | 0d | start no earlier than 2015-07-24 |  |  |
| 310 | 1.5.9.2.1.2 | Release | 2d | 2015-07-24 | 2015-07-27 | 309SS |  |  |  |  |  | 174d |  |  |  |  |
| 311 | 1.5.9.2.2 | **Sistema INFORMATICA** | 2d | 2015-07-24 | 2015-07-27 |  | 2014-05-12 | 2014-05-16 | 5d |  |  | 174d |  |  |  |  |
| 312 | 1.5.9.2.2.1 | Pré-Implantação | 1d | 2015-07-24 | 2015-07-24 | 309SS | 2014-05-25 | 2014-05-25 | 1d |  |  | 174d | 0d |  |  |  |
| 313 | 1.5.9.2.2.2 | Release | 2d | 2015-07-24 | 2015-07-27 | 312SS |  |  |  |  |  | 174d |  |  |  |  |
| 314 | 1.5.9.2.3 | **Sistema STC** | 2d | 2015-07-24 | 2015-07-27 |  | 2014-05-12 | 2014-05-16 | 5d |  |  | 174d |  |  |  |  |
| 315 | 1.5.9.2.3.1 | Pré-Implantação | 1d | 2015-07-24 | 2015-07-24 | 312SS | 2014-05-25 | 2014-05-25 | 1d |  |  | 174d | 0d |  |  |  |
| 316 | 1.5.9.2.3.2 | Release | 2d | 2015-07-24 | 2015-07-27 | 315SS |  |  |  |  |  | 174d |  |  |  |  |

| ID | WBS | Task | Type | Duration | Start | Finish | Predecessors | Baseline start | Baseline finish | Baseline duration | Baseline 1 start | Baseline 1 finish | Total slack | Free slack | Constraint |
| --- | --- | --- | --- | --- | --- | --- | --- | --- | --- | --- | --- | --- | --- | --- | --- |
| 317 | 1.5.9.2.4 | **Sistema SAC** |  | 2d | 2015-07-24 | 2015-07-27 |  | 2014-05-12 | 2014-05-16 | 5d |  |  | 174d |  |  |
| 318 | 1.5.9.2.4.1 | Pré-Implantação |  | 1d | 2015-07-24 | 2015-07-24 | 315SS | 2014-05-25 | 2014-05-25 | 1d |  |  | 174d | 0d |  |
| 319 | 1.5.9.2.4.2 | Release |  | 2d | 2015-07-24 | 2015-07-27 | 318SS |  |  |  |  |  | 174d |  |  |
| 320 | 1.5.9.2.5 | **Sistema ARBOR** |  | 2d | 2014-07-18 | 2014-07-21 |  | 2014-05-12 | 2014-05-16 | 5d |  |  | 439d |  |  |
| 321 | 1.5.9.2.5.1 | Pré-Implantação |  | 1d | 2014-07-18 | 2014-07-18 |  | 2014-05-25 | 2014-05-25 | 1d |  |  | 439d | 0d | start no earlier than 2014-07-18 |
| 322 | 1.5.9.2.5.2 | Release |  | 2d | 2014-07-18 | 2014-07-21 | 321SS |  |  |  |  |  | 439d |  |  |
| 323 | 1.5.10 | Demanda 84710 - Upgrade PI - Grupo 1 e 2 Implantada | milestone | 0d | 2015-08-12 | 2015-08-12 | 304 | 2015-08-06 | 2015-08-06 | 0d | 2015-02-13 | 2015-02-13 | 162d |  |  |
| 324 | 1.6 | **PÓS-PRODUÇÃO** |  | 22d | 2015-08-13 | 2015-09-11 |  |  |  |  |  |  | 140d |  |  |
| 325 | 1.6.1 | **Rollout** |  | 20d | 2015-08-13 | 2015-09-09 |  | 2015-08-07 | 2015-09-03 | 20d | 2015-02-19 | 2015-03-18 | 140d |  |  |
| 326 | 1.6.1.1 | Acompanhar Produção RAID (WEDO) |  | 20d | 2015-08-13 | 2015-09-09 | 306 | 2015-08-07 | 2015-09-03 | 20d | 2015-02-19 | 2015-03-18 | 140d | 0d |  |
| 327 | 1.6.2 | **Fecho do Projeto** |  | 2d | 2015-09-10 | 2015-09-11 |  | 2015-09-04 | 2015-09-07 | 2d | 2015-03-19 | 2015-03-20 | 140d |  |  |
| 328 | 1.6.2.1 | Gerar termo de Aceitação final do Projeto |  | 1d | 2015-09-10 | 2015-09-10 | 326 | 2015-09-04 | 2015-09-04 | 1d | 2015-03-19 | 2015-03-19 | 140d | 0d |  |
| 329 | 1.6.2.2 | Gerar Inquerito Satisfação do projeto |  | 1d | 2015-09-10 | 2015-09-10 | 328FF | 2015-09-04 | 2015-09-04 | 1d | 2015-03-19 | 2015-03-19 | 140d | 0d |  |
| 330 | 1.6.2.3 | Assinar Termo de Aceitação Final do Projeto |  | 1d | 2015-09-11 | 2015-09-11 | 329 | 2015-09-07 | 2015-09-07 | 1d | 2015-03-20 | 2015-03-20 | 140d |  |  |
| 331 | 1.6.2.4 | Preencher Inquerito de Satisfaçãp do projetos |  | 1d | 2015-09-10 | 2015-09-10 | 329FF | 2015-09-04 | 2015-09-04 | 1d | 2015-03-19 | 2015-03-19 | 141d | 0d |  |
| 332 | 1.7 | Projeto Finalizado | milestone | 0d | 2015-09-10 | 2015-09-10 | 331 | 2015-09-04 | 2015-09-04 | 0d | 2015-03-19 | 2015-03-19 | 141d |  |  |
