# 84710 - RAID - R1/R2/R3 - Fixo e Móvel - Migração Integridade

Schedule from MS Project, 2014-05-19 to 2015-09-24, status date 2014-12-01, A marks actual dates.

## Calendars

- Standard: Mon-Fri 09:00-12:00, 13:00-18:00; Sat-Sun off. Exceptions (off unless hours are given): 2014-06-12 08:00-12:00 (Feriado Copa), 2014-06-17 08:00-12:00 (Feriado Copa), 2014-06-19, 2014-06-23 08:00-12:00 (Feriado Copa), 2014-06-25 08:00-12:00 (Feriado Copa), 2014-07-04 (Feriado Copa), 2014-11-20 (Dia da consciencia Negra), 2014-12-24 to 2014-12-25 (Feriado Natal), 2014-12-31 to 2015-01-01 (Feriado Ano Novo), 2015-01-19 to 2015-01-20, 2015-02-16 09:00-12:00, 13:00-18:00, 2015-02-17 (Feriado Carnaval), 2015-02-18 09:00-12:00, 13:00-18:00, 2015-04-03 (Sexta feira Santa), 2015-04-21 (Tiradentes), 2015-04-23, 2015-05-01 (Dia do Trabalhador), 2015-06-04, 2015-09-07.

## Resources

| Resource |
| --- |
| FERNANDEZ FERREIRA RENATO |
| MARCOS FROSSARD LEANDRO |
| MARA DE M SOUZA MATTAR EDJA |
| PEREIRA DAMASCENO LIMA EDUARDO |

## Schedule

| ID | WBS | Task | Duration | Start | Finish | Predecessors | Complete | Remaining | Baseline start | Baseline finish | Baseline duration | Total slack | Constraint |
| --- | --- | --- | --- | --- | --- | --- | --- | --- | --- | --- | --- | --- | --- |
| 1 | 1 | **84710 - Controles de Integridade Grupos 1 e 2** | 336d | 2014-05-19 A | 2015-09-24 |  | 35% | 219.37d | 2014-05-19 | 2015-10-30 | 364d | 0d |  |
| 2 | 1.1 | **Visão e DSOL** | 86d | 2014-05-19 A | 2014-09-19 A |  | 100% |  | 2014-05-19 | 2014-09-19 | 89d |  |  |
| 3 | 1.1.1 | Ajustar STI | 6d | 2014-05-19 A | 2014-05-26 A |  | 100% |  | 2014-05-19 | 2014-05-26 | 6d |  | finish no earlier than 2014-05-26 |
| 4 | 1.1.2 | **Primeira plenária** | 4d | 2014-05-26 A | 2014-05-29 A |  | 100% |  | 2014-05-26 | 2014-05-29 | 4d |  |  |
| 5 | 1.1.2.1 | 1ª Plenária - CRM x HLR - Tráfego - STI 84710 | 1d | 2014-05-26 A | 2014-05-26 A |  | 100% |  | 2014-05-26 | 2014-05-26 | 1d |  | finish no earlier than 2014-05-26 |
| 6 | 1.1.2.2 | 1ª Plenária - CRM x Faturamento Móvel - STI 84710 | 1d | 2014-05-27 A | 2014-05-27 A | 5 | 100% |  | 2014-05-27 | 2014-05-27 | 1d |  | finish no earlier than 2014-05-27 |
| 7 | 1.1.2.3 | 1ª Plenária - CRM x Faturamento Fixa R2 - STI 84710 | 1d | 2014-05-28 A | 2014-05-28 A | 6 | 100% |  | 2014-05-28 | 2014-05-28 | 1d |  | finish no earlier than 2014-05-28 |
| 8 | 1.1.2.4 | 1ª Plenária - CRM x Rede Fixa R1 - STI 84710 | 1d | 2014-05-29 A | 2014-05-29 A | 7 | 100% |  | 2014-05-29 | 2014-05-29 | 1d |  | finish no earlier than 2014-05-29 |
| 9 | 1.1.2.5 | 1ª Plenária - STC x SISRAF - STI 84710 | 1d | 2014-05-29 A | 2014-05-29 A | 8FF | 100% |  | 2014-05-29 | 2014-05-29 | 1d |  | finish no earlier than 2014-05-29 |
| 10 | 1.1.3 | **Segunda plenária** | 1d | 2014-06-05 A | 2014-06-05 A |  | 100% |  | 2014-06-05 | 2014-06-05 | 1d |  |  |
| 11 | 1.1.3.1 | 2ª Plenária - Revisão do documento STI 84710 | 1d | 2014-06-05 A | 2014-06-05 A |  | 100% |  | 2014-06-05 | 2014-06-05 | 1d |  | finish no earlier than 2014-06-05 |
| 12 | 1.1.4 | **Terceira plenária** | 1d | 2014-06-05 A | 2014-06-05 A |  | 100% |  | 2014-06-05 | 2014-06-05 | 1d |  |  |
| 13 | 1.1.4.1 | 3ª Plenária - Revisão do documento STI 84710 | 1d | 2014-06-05 A | 2014-06-05 A |  | 100% |  | 2014-06-05 | 2014-06-05 | 1d |  | finish no earlier than 2014-06-05 |
| 14 | 1.1.5 | **Quarta plenária** | 3d | 2014-07-23 A | 2014-07-25 A |  | 100% |  | 2014-07-23 | 2014-07-25 | 3d |  |  |
| 15 | 1.1.5.1 | STI 84710 - DSOL - SAC x SFA - 4ª Plenária | 1d | 2014-07-23 A | 2014-07-23 A |  | 100% |  | 2014-07-23 | 2014-07-23 | 1d |  | finish no earlier than 2014-07-23 |
| 16 | 1.1.5.2 | STI 84710 - DSOL - STC e SISRAF - 4ª Plenária | 1d | 2014-07-25 A | 2014-07-25 A |  | 100% |  | 2014-07-25 | 2014-07-25 | 1d |  | finish no earlier than 2014-07-25 |
| 17 | 1.1.5.3 | STI 84710 - DSOL - SIEBEL, INFORMÁTICA - 4ª Plenária | 1d | 2014-07-25 A | 2014-07-25 A |  | 100% |  | 2014-07-25 | 2014-07-25 | 1d |  | finish no earlier than 2014-07-25 |
| 18 | 1.1.6 | **Quinta plenária** | 3d | 2014-07-29 A | 2014-07-31 A |  | 100% |  | 2014-07-29 | 2014-07-31 | 3d |  |  |
| 19 | 1.1.6.1 | STI 84710 - DSOL - 5ª Plenária | 3d | 2014-07-29 A | 2014-07-31 A |  | 100% |  | 2014-07-29 | 2014-07-31 | 3d |  | finish no earlier than 2014-07-31 |
| 20 | 1.1.7 | **Sexta Plenária** | 1d | 2014-08-06 A | 2014-08-06 A |  | 100% |  | 2014-08-06 | 2014-08-06 | 1d |  |  |
| 21 | 1.1.7.1 | Reunião - 6a. Plenaria | 1d | 2014-08-06 A | 2014-08-06 A |  | 100% |  | 2014-08-06 | 2014-08-06 | 1d |  | finish no earlier than 2014-08-06 |
| 22 | 1.1.8 | **1a Revisão de escopo - acerto de interfaces** | 4d | 2014-06-13 A | 2014-06-20 A |  | 100% |  | 2014-06-13 | 2014-06-19 | 4d |  |  |
| 23 | 1.1.8.1 | Documento atualizado no STI | 1d | 2014-06-13 A | 2014-06-13 A |  | 100% |  | 2014-06-13 | 2014-06-13 | 1d |  | finish no earlier than 2014-06-13 |
| 24 | 1.1.8.2 | Aprovação Gerente imediato | 1d | 2014-06-13 A | 2014-06-13 A |  | 100% |  | 2014-06-13 | 2014-06-13 | 1d |  | finish no earlier than 2014-06-13 |

Notes:
- 1: Text3: [28]UID=RN%IGUDP6TPDZ1QRF9=LT160[15]PUN=PRJ00000709[8]TUID=424[12]PUID=5068023
- 2: Text3: [28]UID=RNIX9F%:_Y:T65Z@N/G6,+)@[15]PUN=PRJ00000709[8]TUID=425[12]PUID=5068023
- 3: Text3: [28]UID=RN*#EIV"UG8$FN<N7#D5VA_@[15]PUN=PRJ00000709[8]TUID=426[12]PUID=5068023
- 4: Text3: [28]UID=RNE)0'$_RYTTV+=IC.(S4&6`[15]PUN=PRJ00000709[8]TUID=427[12]PUID=5068023
- 5: Text3: [28]UID=RNG)`4P/XT'TVCG=1[U)4..`[15]PUN=PRJ00000709[8]TUID=428[12]PUID=5068023
- 6: Text3: [28]UID=RN2:D[DPA9:4FT!'Y8*?S5`0[15]PUN=PRJ00000709[8]TUID=429[12]PUID=5068023
- 7: Text3: [28]UID=RNR!-&-]#T*D.+_L!FY-I?\`[15]PUN=PRJ00000709[8]TUID=430[12]PUID=5068023
- 8: Text3: [28]UID=RN9S7:ZX9+24./!84*\FDQU0[15]PUN=PRJ00000709[8]TUID=431[12]PUID=5068023
- 9: Text3: [28]UID=RN!X$U^D'$:42F8KJT2V$G`0[15]PUN=PRJ00000709[8]TUID=432[12]PUID=5068023
- 10: Text3: [28]UID=RN5]-@@%BBBD&";:G&TKD&K0[15]PUN=PRJ00000709[8]TUID=433[12]PUID=5068023
- 11: Text3: [28]UID=RN@$?<\'#/BT"2OLCRO'.OA@[15]PUN=PRJ00000709[8]TUID=434[12]PUID=5068023
- 12: Text3: [28]UID=RN(3X9[@O">4^:3*8[3(.%N@[15]PUN=PRJ00000709[8]TUID=435[12]PUID=5068023
- 13: Text3: [28]UID=RN04O+/QZV\T.-B1N%`6AK:P[15]PUN=PRJ00000709[8]TUID=436[12]PUID=5068023
- 14: Text3: [28]UID=RN:]'#!N'.BT^=KB:>&;OGB0[15]PUN=PRJ00000709[8]TUID=437[12]PUID=5068023
- 15: Text3: [28]UID=RND&,\KOC5?$>*"I6V>,$XU`[15]PUN=PRJ00000709[8]TUID=438[12]PUID=5068023
- 16: Text3: [28]UID=RN/YO"S0G_+4^53='C,=HB+@[15]PUN=PRJ00000709[8]TUID=439[12]PUID=5068023
- 17: Text3: [28]UID=RN$(GM0&878$.P%D2J]8D'_`[15]PUN=PRJ00000709[8]TUID=440[12]PUID=5068023
- 18: Text3: [28]UID=RNV4,U`&W1-T.D//581$K?%P[15]PUN=PRJ00000709[8]TUID=441[12]PUID=5068023
- 19: Text3: [28]UID=RNMQ,W9@8`64>,-$:HU1<$Z`[15]PUN=PRJ00000709[8]TUID=442[12]PUID=5068023
- 20: Text3: [28]UID=RN&F3XGU/9HD.]0QNUTPCEI`[15]PUN=PRJ00000709[8]TUID=443[12]PUID=5068023
- 21: Text3: [28]UID=RN0^4J@I./_D.,L?U5J'$OW@[15]PUN=PRJ00000709[8]TUID=444[12]PUID=5068023
- 22: Text3: [28]UID=RN,&LX]9XG\4:H1\488;>8W0[15]PUN=PRJ00000709[8]TUID=445[12]PUID=5068023
- 23: Text3: [28]UID=RN=3\5&T;K_DF.YBH!JKR_?P[15]PUN=PRJ00000709[8]TUID=446[12]PUID=5068023
- 24: Text3: [28]UID=RN[L]5TUG]9TN>OWOG+'_;BP[15]PUN=PRJ00000709[8]TUID=447[12]PUID=5068023

| ID | WBS | Task | Duration | Start | Finish | Predecessors | Complete | Baseline start | Baseline finish | Baseline duration | Constraint |
| --- | --- | --- | --- | --- | --- | --- | --- | --- | --- | --- | --- |
| 25 | 1.1.8.3 | **Aprovaçao de áreas impactadas** | 4d | 2014-06-13 A | 2014-06-20 A |  | 100% | 2014-06-13 | 2014-06-19 | 4d |  |
| 26 | 1.1.8.3.1 | Controladoria | 3d | 2014-06-13 A | 2014-06-18 A |  | 100% | 2014-06-13 | 2014-06-17 | 3d | finish no earlier than 2014-06-17 |
| 27 | 1.1.8.3.2 | projetos de faturamento | 3d | 2014-06-13 A | 2014-06-18 A |  | 100% | 2014-06-13 | 2014-06-17 | 3d | finish no earlier than 2014-06-17 |
| 28 | 1.1.8.3.3 | planejamento core rede movel | 4d | 2014-06-13 A | 2014-06-20 A |  | 100% | 2014-06-13 | 2014-06-19 | 4d | finish no earlier than 2014-06-19 |
| 29 | 1.1.8.3.4 | RA e prevenção a fraudes | 3d | 2014-06-13 A | 2014-06-18 A |  | 100% | 2014-06-13 | 2014-06-17 | 3d | finish no earlier than 2014-06-17 |
| 30 | 1.1.8.3.5 | segurança da informação | 3d | 2014-06-13 A | 2014-06-18 A |  | 100% | 2014-06-13 | 2014-06-17 | 3d | finish no earlier than 2014-06-17 |
| 31 | 1.1.8.3.6 | Tributos diretos | 3d | 2014-06-13 A | 2014-06-18 A |  | 100% | 2014-06-13 | 2014-06-17 | 3d | finish no earlier than 2014-06-17 |
| 32 | 1.1.9 | **2a Revisão de escopo - retirada PTS** | 4.12d | 2014-06-18 A | 2014-06-26 A |  | 100% | 2014-06-18 | 2014-06-24 | 4d |  |
| 33 | 1.1.9.1 | Aprovação Gerente imediato | 1d | 2014-06-18 A | 2014-06-18 A |  | 100% | 2014-06-18 | 2014-06-18 | 1d | finish no earlier than 2014-06-18 |
| 34 | 1.1.9.2 | Documento atualizado no STI | 1d | 2014-06-19 A | 2014-06-20 A | 33 | 100% | 2014-06-19 | 2014-06-20 | 1d | finish no earlier than 2014-06-20 |
| 35 | 1.1.9.3 | **Aprovação de áreas impactadas** | 2d | 2014-06-23 A | 2014-06-26 A |  | 100% | 2014-06-23 | 2014-06-24 | 2d |  |
| 36 | 1.1.9.3.1 | controladoria | 2d | 2014-06-23 A | 2014-06-26 A | 34 | 100% | 2014-06-23 | 2014-06-24 | 2d | finish no earlier than 2014-06-24 |
| 37 | 1.1.9.3.2 | projetos de faturamento | 1d | 2014-06-23 A | 2014-06-24 A | 34 | 100% | 2014-06-23 | 2014-06-23 | 1d | finish no earlier than 2014-06-23 |
| 38 | 1.1.9.3.3 | planejamento core rede movel | 2d | 2014-06-23 A | 2014-06-26 A | 34 | 100% | 2014-06-23 | 2014-06-24 | 2d | finish no earlier than 2014-06-24 |
| 39 | 1.1.9.3.4 | RA e prevenção a fraudes | 2d | 2014-06-23 A | 2014-06-26 A | 34 | 100% | 2014-06-23 | 2014-06-24 | 2d | finish no earlier than 2014-06-24 |
| 40 | 1.1.9.3.5 | Segurança da informação | 1d | 2014-06-23 A | 2014-06-24 A | 34 | 100% | 2014-06-23 | 2014-06-23 | 1d | finish no earlier than 2014-06-23 |
| 41 | 1.1.9.3.6 | Tributos diretos | 1d | 2014-06-23 A | 2014-06-24 A | 34 | 100% | 2014-06-23 | 2014-06-23 | 1d | finish no earlier than 2014-06-23 |
| 42 | 1.1.10 | STI enviado para o CSOL | 1d | 2014-06-24 A | 2014-06-24 A | 35 | 100% | 2014-06-24 | 2014-06-24 | 1d | finish no earlier than 2014-06-24 |
| 43 | 1.1.11 | Atualização de Visão Gráfica | 2d | 2014-06-25 A | 2014-06-27 A | 42 | 100% | 2014-06-25 | 2014-06-26 | 2d | finish no earlier than 2014-06-26 |
| 44 | 1.1.12 | Atualização de ME Consolidada STI | 1d | 2014-06-26 A | 2014-06-26 A | 43 | 100% | 2014-06-26 | 2014-06-26 | 1d | finish no earlier than 2014-06-26 |
| 45 | 1.1.13 | **Revalidação de GO para as fábricas** | 1d | 2014-06-27 A | 2014-06-27 A | 43 | 100% | 2014-06-27 | 2014-06-27 | 1d |  |
| 46 | 1.1.13.1 | Confirmação de Custo/Prazo ACC SBL | 1d | 2014-06-27 A | 2014-06-27 A | 43 | 100% | 2014-06-27 | 2014-06-27 | 1d | finish no earlier than 2014-06-27 |
| 47 | 1.1.13.2 | Confirmação de Custo/Prazo ACC ARBOR | 1d | 2014-06-27 A | 2014-06-27 A | 43 | 100% | 2014-06-27 | 2014-06-27 | 1d | finish no earlier than 2014-06-27 |
| 48 | 1.1.13.3 | Confirmação de Custo/Prazo ACC STC | 1d | 2014-06-27 A | 2014-06-27 A | 43 | 100% | 2014-06-27 | 2014-06-27 | 1d | finish no earlier than 2014-06-27 |
| 49 | 1.1.13.4 | Confirmação de Custo/Prazo ACC SAC | 1d | 2014-06-27 A | 2014-06-27 A | 43 | 100% | 2014-06-27 | 2014-06-27 | 1d | finish no earlier than 2014-06-27 |
| 50 | 1.1.13.5 | Confirmação de Custo/Prazo ACC INF | 1d | 2014-06-27 A | 2014-06-27 A | 43 | 100% | 2014-06-27 | 2014-06-27 | 1d | finish no earlier than 2014-06-27 |
| 51 | 1.1.13.6 | Confirmação de Custo/Prazo IBM SISRAF | 1d | 2014-06-27 A | 2014-06-27 A | 43 | 100% | 2014-06-27 | 2014-06-27 | 1d | finish no earlier than 2014-06-27 |
| 52 | 1.1.13.7 | Confirmação de Custo/Prazo IBM SFA | 1d | 2014-06-27 A | 2014-06-27 A | 43 | 100% | 2014-06-27 | 2014-06-27 | 1d | finish no earlier than 2014-06-27 |
| 53 | 1.1.13.8 | Confirmação de Custo/Prazo IBM GENEVA | 1d | 2014-06-27 A | 2014-06-27 A | 43 | 100% | 2014-06-27 | 2014-06-27 | 1d | finish no earlier than 2014-06-27 |
| 54 | 1.1.13.9 | Confirmação de Custo/Prazo WEDO RAID PI | 1d | 2014-06-27 A | 2014-06-27 A | 43 | 100% | 2014-06-27 | 2014-06-27 | 1d | finish no earlier than 2014-06-27 |
| 55 | 1.1.14 | Revisão de plano do DSOL | 1d | 2014-06-27 A | 2014-06-27 A | 45 | 100% | 2014-06-27 | 2014-06-27 | 1d | finish no earlier than 2014-06-27 |

Notes:
- 25: Text3: [28]UID=RN6J,)2P_*B$NB/F";W0H(#`[15]PUN=PRJ00000709[8]TUID=448[12]PUID=5068023
- 26: Text3: [28]UID=RNB&E-?==>#$V32DX')`=&'`[15]PUN=PRJ00000709[8]TUID=449[12]PUID=5068023
- 27: Text3: [28]UID=RN)*N\_G!AY4.$BOD@6<A25`[15]PUN=PRJ00000709[8]TUID=450[12]PUID=5068023
- 28: Text3: [28]UID=RNK&X+IORPA4*0@5>*2OQ'30[15]PUN=PRJ00000709[8]TUID=451[12]PUID=5068023
- 29: Text3: [28]UID=RNP@GGS?^;MT2<EJ\5@E.N-@[15]PUN=PRJ00000709[8]TUID=452[12]PUID=5068023
- 30: Text3: [28]UID=RN&)=9+GY.$$N2=7,H)FI&)P[15]PUN=PRJ00000709[8]TUID=453[12]PUID=5068023
- 31: Text3: [28]UID=RN'-(2O3:@<DRXK7J2.[?0\P[15]PUN=PRJ00000709[8]TUID=454[12]PUID=5068023
- 32: Text3: [28]UID=RN]N/IM'/U'$V@:>@C+R?)70[15]PUN=PRJ00000709[8]TUID=455[12]PUID=5068023
- 33: Text3: [28]UID=RN0I#]<Y]R$46T*&!D?RC,?P[15]PUN=PRJ00000709[8]TUID=456[12]PUID=5068023
- 34: Text3: [28]UID=RNQ"5E_1JE!46TI[L<XDE_F@[15]PUN=PRJ00000709[8]TUID=457[12]PUID=5068023
- 35: Text3: [28]UID=RNG('5YJJ.8DV-1IV+FPR..0[15]PUN=PRJ00000709[8]TUID=458[12]PUID=5068023
- 36: Text3: [28]UID=RNP8T^<WG\F$^:3K^@62XGPP[15]PUN=PRJ00000709[8]TUID=459[12]PUID=5068023
- 37: Text3: [28]UID=RN,`R89OU<$DZ01<#0:"%`H`[15]PUN=PRJ00000709[8]TUID=460[12]PUID=5068023
- 38: Text3: [28]UID=RN+FMV+-N\?DV[X];7%K]*0`[15]PUN=PRJ00000709[8]TUID=461[12]PUID=5068023
- 39: Text3: [28]UID=RN2A0Z%B5!.$6<$7+T#BU^[P[15]PUN=PRJ00000709[8]TUID=462[12]PUID=5068023
- 40: Text3: [28]UID=RNS=T03+C4-T.<,.B4,77/!`[15]PUN=PRJ00000709[8]TUID=463[12]PUID=5068023
- 41: Text3: [28]UID=RN^N'P6+5$4TJ@/#!?KF3-[@[15]PUN=PRJ00000709[8]TUID=464[12]PUID=5068023
- 42: Text3: [28]UID=RNX:FC0/MEBTBN1FO#37!=C0[15]PUN=PRJ00000709[8]TUID=465[12]PUID=5068023
- 43: Text3: [28]UID=RN12%^MLTB3$^;4-E0$@CI9@[15]PUN=PRJ00000709[8]TUID=466[12]PUID=5068023
- 44: Text3: [28]UID=RNM5CE(YN)(4ZL%:W<]YO_P0[15]PUN=PRJ00000709[8]TUID=467[12]PUID=5068023
- 45: Text3: [28]UID=RN8+_M!X1R7D*H:`/T"*'K?`[15]PUN=PRJ00000709[8]TUID=468[12]PUID=5068023
- 46: Text3: [28]UID=RN'M<_74AWFT6P+B-$V'S#=0[15]PUN=PRJ00000709[8]TUID=469[12]PUID=5068023
- 47: Text3: [28]UID=RNQ^>(5"+C0D6%NREKY)QX+0[15]PUN=PRJ00000709[8]TUID=470[12]PUID=5068023
- 48: Text3: [28]UID=RN'V.7\?**ODBD[7V@4)_=X@[15]PUN=PRJ00000709[8]TUID=471[12]PUID=5068023
- 49: Text3: [28]UID=RN?KB4BC(2X$:M:.G'`U8:@0[15]PUN=PRJ00000709[8]TUID=472[12]PUID=5068023
- 50: Text3: [28]UID=RN!5<PB,2R[DN</<T_>:=?D@[15]PUN=PRJ00000709[8]TUID=473[12]PUID=5068023
- 51: Text3: [28]UID=RN68(4G#\I5TFH3'/7VN.^1@[15]PUN=PRJ00000709[8]TUID=474[12]PUID=5068023
- 52: Text3: [28]UID=RNK^38;-8U<DN"-L$DGYU)_0[15]PUN=PRJ00000709[8]TUID=475[12]PUID=5068023
- 53: Text3: [28]UID=RNI!V"/^Q>K4F2IM:$<+Y14@[15]PUN=PRJ00000709[8]TUID=476[12]PUID=5068023
- 54: Text3: [28]UID=RN&^FS/S05-TZ(:S(P$^;L=`[15]PUN=PRJ00000709[8]TUID=477[12]PUID=5068023
- 55: Text3: [28]UID=RN,6G50:*P?D>+5,6_830UXP[15]PUN=PRJ00000709[8]TUID=478[12]PUID=5068023

| ID | WBS | Task | Duration | Start | Finish | Predecessors | Complete | Baseline start | Baseline finish | Baseline duration | Constraint |
| --- | --- | --- | --- | --- | --- | --- | --- | --- | --- | --- | --- |
| 56 | 1.1.15 | **Elaboração Visão de Solução Final SISTEMAS IMPACTADOS** | 16d | 2014-06-27 A | 2014-07-21 A |  | 100% | 2014-06-27 | 2014-07-18 | 16d |  |
| 57 | 1.1.15.1 | DS - Elaborar Visão da solução Final Siebel 6.3 | 10d | 2014-07-01 A | 2014-07-15 A | 46 | 100% | 2014-07-01 | 2014-07-14 | 10d | finish no earlier than 2014-07-14 |
| 58 | 1.1.15.2 | DS - Elaborar Visão da solução Final ARBOR | 10d | 2014-07-01 A | 2014-07-15 A | 47 | 100% | 2014-07-01 | 2014-07-14 | 10d | finish no earlier than 2014-07-14 |
| 59 | 1.1.15.3 | DS - Elaborar Visão da solução Final STC/SISRAF | 10d | 2014-07-01 A | 2014-07-15 A | 48 | 100% | 2014-07-01 | 2014-07-14 | 10d | finish no earlier than 2014-07-14 |
| 60 | 1.1.15.4 | DS - Elaborar Visão da solução Final SAC | 10d | 2014-07-01 A | 2014-07-15 A | 49 | 100% | 2014-07-01 | 2014-07-14 | 10d | finish no earlier than 2014-07-14 |
| 61 | 1.1.15.5 | DS - Elaborar Visão da solução Final INF | 16d | 2014-06-27 A | 2014-07-21 A | 50 | 100% | 2014-06-27 | 2014-07-18 | 16d | finish no earlier than 2014-07-18 |
| 62 | 1.1.15.6 | DS - Elaborar Visão da solução Fina SFA | 10d | 2014-07-01 A | 2014-07-15 A | 51 | 100% | 2014-07-01 | 2014-07-14 | 10d | finish no earlier than 2014-07-14 |
| 63 | 1.1.15.7 | DS - Elaborar Visão da solução Final GENEVA | 10d | 2014-07-01 A | 2014-07-15 A | 52 | 100% | 2014-07-01 | 2014-07-14 | 10d | finish no earlier than 2014-07-14 |
| 64 | 1.1.15.8 | DS - Elaborar Visão da solução Final HLR | 10d | 2014-07-01 A | 2014-07-15 A | 53 | 100% | 2014-07-01 | 2014-07-14 | 10d | finish no earlier than 2014-07-14 |
| 65 | 1.1.15.9 | DS - Elaborar Visão da solução Final RAID IP | 10d | 2014-06-30 A | 2014-07-14 A | 54 | 100% | 2014-06-30 | 2014-07-11 | 10d | finish no earlier than 2014-07-11 |
| 66 | 1.1.16 | **Aprovação Visão da Solução Final** | 10d | 2014-07-14 A | 2014-07-25 A |  | 100% | 2014-07-14 | 2014-07-25 | 10d |  |
| 67 | 1.1.16.1 | DS – Aprovar Visão da Solução Final – Siebel 6.3 | 9d | 2014-07-15 A | 2014-07-25 A | 57 | 100% | 2014-07-15 | 2014-07-25 | 9d | finish no earlier than 2014-07-25 |
| 68 | 1.1.16.2 | DS – Aprovar Visão da Solução Final – Arbor | 9d | 2014-07-15 A | 2014-07-25 A | 58 | 100% | 2014-07-15 | 2014-07-25 | 9d | finish no earlier than 2014-07-25 |
| 69 | 1.1.16.3 | DS – Aprovar Visão da Solução Final – STC | 5d | 2014-07-15 A | 2014-07-21 A | 59 | 100% | 2014-07-15 | 2014-07-21 | 5d | finish no earlier than 2014-07-21 |
| 70 | 1.1.16.4 | DS – Aprovar Visão da Solução Final – SAC | 5d | 2014-07-15 A | 2014-07-21 A | 60 | 100% | 2014-07-15 | 2014-07-21 | 5d | finish no earlier than 2014-07-21 |
| 71 | 1.1.16.5 | DS – Aprovar Visão da Solução Final – Informatica | 3d | 2014-07-21 A | 2014-07-23 A | 61 | 100% | 2014-07-21 | 2014-07-23 | 3d | finish no earlier than 2014-07-23 |
| 72 | 1.1.16.6 | DS – Aprovar Visão da Solução Final – SFA | 5d | 2014-07-15 A | 2014-07-21 A | 62 | 100% | 2014-07-15 | 2014-07-21 | 5d | finish no earlier than 2014-07-21 |
| 73 | 1.1.16.7 | DS – Aprovar Visão da Solução Final – GENEVA | 5d | 2014-07-15 A | 2014-07-21 A | 63 | 100% | 2014-07-15 | 2014-07-21 | 5d | finish no earlier than 2014-07-21 |
| 74 | 1.1.16.8 | DS – Aprovar Visão da Solução Final – HLR | 5d | 2014-07-15 A | 2014-07-21 A | 64 | 100% | 2014-07-15 | 2014-07-21 | 5d | finish no earlier than 2014-07-21 |
| 75 | 1.1.16.9 | DS – Aprovar Visão da Solução Final – RAID IP | 5d | 2014-07-14 A | 2014-07-18 A | 65 | 100% | 2014-07-14 | 2014-07-18 | 5d | finish no earlier than 2014-07-18 |
| 76 | 1.1.17 | DS – Consolidar Visão da Solução Final – Todos os sistemas | 2d | 2014-07-28 A | 2014-07-29 A | 66 | 100% | 2014-07-28 | 2014-07-29 | 2d | finish no earlier than 2014-07-29 |
| 77 | 1.1.18 | DS – Aprovar Visão da Solução Final Consolidada | 1d | 2014-07-29 A | 2014-07-29 A | 76 | 100% | 2014-07-29 | 2014-07-29 | 1d | finish no earlier than 2014-07-29 |
| 78 | 1.1.19 | **Elaboração Artefatos do Desenho de Solução SISTEMAS IMPACTADOS** | 26d | 2014-07-22 A | 2014-08-26 A |  | 100% | 2014-07-22 | 2014-08-26 | 26d |  |
| 79 | 1.1.19.1 | DS – Elabora artefatos do Desenho da Solução – Siebel 6.3 | 18d | 2014-07-24 A | 2014-08-18 A | 67FS-2d | 100% | 2014-07-24 | 2014-08-18 | 18d | finish no earlier than 2014-08-18 |
| 80 | 1.1.19.2 | DS – Elabora artefatos do Desenho da Solução – Arbor | 24d | 2014-07-24 A | 2014-08-26 A | 68FS-2d | 100% | 2014-07-24 | 2014-08-26 | 24d | finish no earlier than 2014-08-26 |
| 81 | 1.1.19.3 | DS – Elabora artefatos do Desenho da Solução – STC | 10d | 2014-07-22 A | 2014-08-04 A | 69 | 100% | 2014-07-22 | 2014-08-04 | 10d | finish no earlier than 2014-08-04 |
| 82 | 1.1.19.4 | DS – Elabora artefatos do Desenho da Solução – SAC | 17d | 2014-07-24 A | 2014-08-15 A | 70FS+2d | 100% | 2014-07-24 | 2014-08-15 | 17d | finish no earlier than 2014-08-15 |
| 83 | 1.1.19.5 | DS – Elabora artefatos do Desenho da Solução – Informatica | 19d | 2014-07-28 A | 2014-08-21 A | 71FS+2d | 100% | 2014-07-28 | 2014-08-21 | 19d | finish no earlier than 2014-08-21 |
| 84 | 1.1.19.6 | DS – Elabora artefatos do Desenho da Solução – SFA | 10d | 2014-07-22 A | 2014-08-04 A | 72 | 100% | 2014-07-22 | 2014-08-04 | 10d | finish no earlier than 2014-08-04 |
| 85 | 1.1.19.7 | DS – Elabora artefatos do Desenho da Solução – GENEVA | 10d | 2014-07-22 A | 2014-08-04 A | 73 | 100% | 2014-07-22 | 2014-08-04 | 10d | finish no earlier than 2014-08-04 |
| 86 | 1.1.19.8 | DS – Elabora artefatos do Desenho da Solução – HLR | 15d | 2014-07-22 A | 2014-08-11 A | 74 | 100% | 2014-07-22 | 2014-08-11 | 15d | finish no earlier than 2014-08-11 |
| 87 | 1.1.19.9 | DS – Elabora artefatos do Desenho da Solução – RAID IP | 24d | 2014-07-22 A | 2014-08-22 A | 75FS+1d | 100% | 2014-07-22 | 2014-08-22 | 24d | finish no earlier than 2014-08-22 |
| 88 | 1.1.19.10 | DS - Elaborar artefatos do Desenho da solução - SIS Móvel | 8d | 2014-08-12 A | 2014-08-21 A | 86 | 100% | 2014-08-12 | 2014-08-21 | 8d | finish no earlier than 2014-08-21 |

Notes:
- 56: Text3: [28]UID=RN5*48^,\3($V]6_6&<JFLV0[15]PUN=PRJ00000709[8]TUID=479[12]PUID=5068023
- 57: Text3: [28]UID=RNB"^\9Q;TH4RT9?5RF=\X:0[15]PUN=PRJ00000709[8]TUID=480[12]PUID=5068023
- 58: Text3: [28]UID=RN4FLMS`S/O4NM]6!)Q_"9K@[15]PUN=PRJ00000709[8]TUID=481[12]PUID=5068023
- 59: Text3: [28]UID=RN_ED5'#_$"$JXUGU1RU>EH`[15]PUN=PRJ00000709[8]TUID=482[12]PUID=5068023
- 60: Text3: [28]UID=RN=B1`686$O4N:3`,R=#U\QP[15]PUN=PRJ00000709[8]TUID=483[12]PUID=5068023
- 61: Text3: [28]UID=RN>KRQPO(&=D.8_[X[G_89^`[15]PUN=PRJ00000709[8]TUID=484[12]PUID=5068023
- 62: Text3: [28]UID=RN%0(*KN>-*4:"'5TIK=&?C`[15]PUN=PRJ00000709[8]TUID=485[12]PUID=5068023
- 63: Text3: [28]UID=RN`R*B0G)%UT>4S#0*GP5OF`[15]PUN=PRJ00000709[8]TUID=486[12]PUID=5068023
- 64: Text3: [28]UID=RNQ>]HE"^Z#4R_`MV/+C5WHP[15]PUN=PRJ00000709[8]TUID=487[12]PUID=5068023
- 65: Text3: [28]UID=RN=?,!R'X33$Z;5$YEGWE[NP[15]PUN=PRJ00000709[8]TUID=488[12]PUID=5068023
- 66: Text3: [28]UID=RN8K;I$!(?4DR"L$PPLU1)>P[15]PUN=PRJ00000709[8]TUID=489[12]PUID=5068023
- 67: Text3: [28]UID=RN'JEMMJC[3T^L[SA.092P<0[15]PUN=PRJ00000709[8]TUID=490[12]PUID=5068023
- 68: Text3: [28]UID=RNQUK!1BA;$D&I:!+X0$W7R`[15]PUN=PRJ00000709[8]TUID=491[12]PUID=5068023
- 69: Text3: [28]UID=RNP@BKJ2N*A$6BC7L]J(\&;`[15]PUN=PRJ00000709[8]TUID=492[12]PUID=5068023
- 70: Text3: [28]UID=RN',--*`<VD$^)VL>#3B,!+@[15]PUN=PRJ00000709[8]TUID=493[12]PUID=5068023
- 71: Text3: [28]UID=RN25GOB$(`ATV5RMW%G\!P10[15]PUN=PRJ00000709[8]TUID=494[12]PUID=5068023
- 72: Text3: [28]UID=RN["E,3;&9RT2!F:@;QA[3P`[15]PUN=PRJ00000709[8]TUID=495[12]PUID=5068023
- 73: Text3: [28]UID=RN.RF]$@]DA$"EAT<EB@5KR`[15]PUN=PRJ00000709[8]TUID=496[12]PUID=5068023
- 74: Text3: [28]UID=RNJ0"N*F_9NT:!@D+/:?!TT@[15]PUN=PRJ00000709[8]TUID=497[12]PUID=5068023
- 75: Text3: [28]UID=RNT4R5+GL9\4>*)0`YK:*Z)0[15]PUN=PRJ00000709[8]TUID=498[12]PUID=5068023
- 76: Text3: [28]UID=RN*TEJOGG2=4^X1`$PL2YVV`[15]PUN=PRJ00000709[8]TUID=499[12]PUID=5068023
- 77: Text3: [28]UID=RNP$IJM21G`4"RV#&BBXPQ"`[15]PUN=PRJ00000709[8]TUID=500[12]PUID=5068023
- 78: Text3: [28]UID=RN%XRA95KU+D^)J"-5;DND,P[15]PUN=PRJ00000709[8]TUID=501[12]PUID=5068023
- 79: Text3: [28]UID=RNHE6@A78T&D^_EM,SN!8'0`[15]PUN=PRJ00000709[8]TUID=502[12]PUID=5068023
- 80: Text3: [28]UID=RN4D>0YO!:64.&!S#:Y']1D@[15]PUN=PRJ00000709[8]TUID=503[12]PUID=5068023
- 81: Text3: [28]UID=RN^7J*=#=_34JY&.(;'7'&7`[15]PUN=PRJ00000709[8]TUID=504[12]PUID=5068023
- 82: Text3: [28]UID=RNTLV@7,1'W$29@D[L-9P@DP[15]PUN=PRJ00000709[8]TUID=505[12]PUID=5068023
- 83: Text3: [28]UID=RNI@:BJ,O&D$.((J;?(N7-EP[15]PUN=PRJ00000709[8]TUID=506[12]PUID=5068023
- 84: Text3: [28]UID=RNF]3$!@2+\46[G3;^3H[^RP[15]PUN=PRJ00000709[8]TUID=507[12]PUID=5068023
- 85: Text3: [28]UID=RN37W6CY16-T&^^Y%-U1F2_0[15]PUN=PRJ00000709[8]TUID=508[12]PUID=5068023
- 86: Text3: [28]UID=RN<;K=):1"S46"VL@2&_TPH0[15]PUN=PRJ00000709[8]TUID=509[12]PUID=5068023
- 87: Text3: [28]UID=RNK/4"+2ODMT:^6O!*W]1P"@[15]PUN=PRJ00000709[8]TUID=510[12]PUID=5068023
- 88: Text3: [28]UID=RN*K^5_``^/T:.;8`PK53MJ0[15]PUN=PRJ00000709[8]TUID=511[12]PUID=5068023

| ID | WBS | Task | Duration | Start | Finish | Predecessors | Complete | Baseline start | Baseline finish | Baseline duration | Constraint |
| --- | --- | --- | --- | --- | --- | --- | --- | --- | --- | --- | --- |
| 89 | 1.1.20 | **Aprovação de Artefatos de Desenho de Solução** | 31d | 2014-08-05 A | 2014-09-16 A |  | 100% | 2014-08-05 | 2014-09-16 | 31d |  |
| 90 | 1.1.20.1 | DS – Aprovar artefatos do Desenho da Solução – Siebel 6.3 | 11d | 2014-08-07 A | 2014-08-21 A | 79FS-2d | 100% | 2014-08-07 | 2014-08-21 | 11d | finish no earlier than 2014-08-21 |
| 91 | 1.1.20.2 | DS – Aprovar artefatos do Desenho da Solução – Arbor | 12d | 2014-08-13 A | 2014-08-28 A | 80FS-10d | 100% | 2014-08-13 | 2014-08-28 | 12d | finish no earlier than 2014-08-28 |
| 92 | 1.1.20.3 | DS – Aprovar artefatos do Desenho da Solução – STC | 5d | 2014-08-05 A | 2014-08-11 A | 81 | 100% | 2014-08-05 | 2014-08-11 | 5d | finish no earlier than 2014-08-11 |
| 93 | 1.1.20.4 | DS – Aprovar artefatos do Desenho da Solução – SAC | 5d | 2014-08-18 A | 2014-08-22 A | 82 | 100% | 2014-08-18 | 2014-08-22 | 5d | finish no earlier than 2014-08-22 |
| 94 | 1.1.20.5 | DS – Aprovar artefatos do Desenho da Solução – Informatica | 2d | 2014-08-22 A | 2014-08-25 A | 83 | 100% | 2014-08-22 | 2014-08-25 | 2d | finish no earlier than 2014-08-25 |
| 95 | 1.1.20.6 | DS – Aprovar artefatos do Desenho da Solução – SFA | 5d | 2014-08-05 A | 2014-08-11 A | 84 | 100% | 2014-08-05 | 2014-08-11 | 5d | finish no earlier than 2014-08-11 |
| 96 | 1.1.20.7 | DS – Aprovar artefatos do Desenho da Solução – GENEVA | 19d | 2014-08-13 A | 2014-09-08 A | 85FS+6d | 100% | 2014-08-13 | 2014-09-08 | 19d | finish no earlier than 2014-09-08 |
| 97 | 1.1.20.8 | DS – Aprovar artefatos do Desenho da Solução – HLR | 5d | 2014-08-12 A | 2014-08-18 A | 86 | 100% | 2014-08-12 | 2014-08-18 | 5d | finish no earlier than 2014-08-18 |
| 98 | 1.1.20.9 | DS – Aprovar artefatos do Desenho da Solução – RAID IP | 17d | 2014-08-25 A | 2014-09-16 A | 87 | 100% | 2014-08-25 | 2014-09-16 | 17d | finish no earlier than 2014-09-16 |
| 99 | 1.1.20.10 | DS - Aprovar artefatos do Desneho da Solução - SIS Móvel | 1d | 2014-08-22 A | 2014-08-22 A | 88 | 100% | 2014-08-22 | 2014-08-22 | 1d | finish no earlier than 2014-08-22 |
| 100 | 1.1.21 | DS – Consolidar Desenho da Solução Final – Todos os sistemas + HLR | 2d | 2014-09-17 A | 2014-09-18 A | 89 | 100% | 2014-09-17 | 2014-09-18 | 2d | finish no earlier than 2014-09-18 |
| 101 | 1.1.22 | DS – Aprovar Desenho da Solução Final Consolidada | 1d | 2014-09-19 A | 2014-09-19 A | 100 | 100% | 2014-09-19 | 2014-09-19 | 1d | finish no earlier than 2014-09-19 |
| 102 | 1.2 | **Fechar Custo** | 34d | 2014-09-12 A | 2014-10-29 A | 101 | 100% | 2014-09-12 | 2014-10-29 | 34d |  |
| 103 | 1.2.1 | Receber proposta Desenvolvimento | 10d | 2014-09-12 A | 2014-09-25 A |  | 100% | 2014-09-12 | 2014-09-17 | 4d | finish no earlier than 2014-09-25 |
| 104 | 1.2.2 | Validar propostas Desenvolvimento | 11d | 2014-09-26 A | 2014-10-10 A | 103 | 100% | 2014-09-26 | 2014-10-10 | 11d | finish no earlier than 2014-10-10 |
| 105 | 1.2.3 | **RAID** | 4d | 2014-09-29 A | 2014-10-02 A |  | 100% | 2014-09-29 | 2014-10-02 | 4d |  |
| 106 | 1.2.3.1 | Validação Métricas | 1d | 2014-09-29 A | 2014-09-29 A | 103FS+1d | 100% | 2014-09-29 | 2014-09-29 | 1d | finish no earlier than 2014-09-29 |
| 107 | 1.2.3.2 | Validação Métricas e WEDO | 1d | 2014-10-01 A | 2014-10-01 A | 106FS+1d | 100% | 2014-10-01 | 2014-10-01 | 1d | finish no earlier than 2014-10-01 |
| 108 | 1.2.3.3 | Receber proposta RAID ajustada | 1d | 2014-10-02 A | 2014-10-02 A | 107FS+2d | 100% | 2014-10-02 | 2014-10-02 | 1d | finish no earlier than 2014-10-02 |
| 109 | 1.2.3.4 | Validar proposta RAId ajustada | 1d | 2014-10-02 A | 2014-10-02 A | 108 | 100% | 2014-10-02 | 2014-10-02 | 1d | finish no earlier than 2014-10-02 |
| 110 | 1.2.4 | **Testes** | 28d | 2014-09-22 A | 2014-10-29 A |  | 100% | 2014-09-22 | 2014-10-29 | 28d |  |
| 111 | 1.2.4.1 | Elaborar estratégia de testes | 7d | 2014-09-22 A | 2014-09-30 A | 101 | 100% | 2014-09-22 | 2014-09-30 | 7d | finish no earlier than 2014-09-30 |
| 112 | 1.2.4.2 | Validar estratégia de testes | 2d | 2014-10-01 A | 2014-10-02 A | 111 | 100% | 2014-10-01 | 2014-10-02 | 2d | finish no earlier than 2014-10-02 |
| 113 | 1.2.4.3 | Receber/validar propostas de testes | 19d | 2014-10-03 A | 2014-10-29 A | 112 | 100% | 2014-10-03 | 2014-10-29 | 19d | finish no earlier than 2014-10-29 |

Notes:
- 89: Text3: [28]UID=RN79R5)L9G;D:"U1:2+`X*L@[15]PUN=PRJ00000709[8]TUID=512[12]PUID=5068023
- 90: Text3: [28]UID=RN>IGFVX(2K$:,X1M"=0L6@`[15]PUN=PRJ00000709[8]TUID=513[12]PUID=5068023
- 91: Text3: [28]UID=RNV(+;,GC&%$N([4T.7!>I`@[15]PUN=PRJ00000709[8]TUID=514[12]PUID=5068023
- 92: Text3: [28]UID=RN6UHPOUEXJD*!4CFV1?-UB`[15]PUN=PRJ00000709[8]TUID=515[12]PUID=5068023
- 93: Text3: [28]UID=RN$G<^HN41_$N8;>G!^XU9`@[15]PUN=PRJ00000709[8]TUID=516[12]PUID=5068023
- 94: Text3: [28]UID=RNZ@"D/H2-(TB%T5.190OZM0[15]PUN=PRJ00000709[8]TUID=517[12]PUID=5068023
- 95: Text3: [28]UID=RNMH.,W:*:AD*_K)AT+-1B%P[15]PUN=PRJ00000709[8]TUID=518[12]PUID=5068023
- 96: Text3: [28]UID=RNOXG0585&3DJ-LS]AI[_XE0[15]PUN=PRJ00000709[8]TUID=519[12]PUID=5068023
- 97: Text3: [28]UID=RN<AOYGRJ:.4ZS:40$`G,5;P[15]PUN=PRJ00000709[8]TUID=520[12]PUID=5068023
- 98: Text3: [28]UID=RN\BA`L7:\HDR[W,B$D[Q9&@[15]PUN=PRJ00000709[8]TUID=521[12]PUID=5068023
- 99: Text3: [28]UID=RN.9M5CV,6WD.,6&""A0I1V@[15]PUN=PRJ00000709[8]TUID=522[12]PUID=5068023
- 100: Text3: [28]UID=RNWGQN,-D/A4N'2"Z[J-D1X@[15]PUN=PRJ00000709[8]TUID=523[12]PUID=5068023
- 101: Text3: [28]UID=RN^*[M:WG"Y4BQ7A7$U,[+Y`[15]PUN=PRJ00000709[8]TUID=524[12]PUID=5068023
- 102: Text3: [28]UID=RN;Y].W*%2_TR^S<%'*N>!X`[15]PUN=PRJ00000709[8]TUID=525[12]PUID=5068023
- 103: Text3: [28]UID=RNT;^9K>YKE4BESGYQ1[C-QP[15]PUN=PRJ00000709[8]TUID=526[12]PUID=5068023
- 104: Text3: [28]UID=RN/\_8C&+.@TR9ZIGH;A:%/0[15]PUN=PRJ00000709[8]TUID=527[12]PUID=5068023
- 105: Text3: [28]UID=RNN0:&(?R`\TR<[&7LJ>=:BP[15]PUN=PRJ00000709[8]TUID=528[12]PUID=5068023
- 106: Text3: [28]UID=RNSUY`Y8>-7D&YY79A)7C$XP[15]PUN=PRJ00000709[8]TUID=529[12]PUID=5068023
- 107: Text3: [28]UID=RNQN;PP$Z<^T.F+"]%Y3+&"@[15]PUN=PRJ00000709[8]TUID=530[12]PUID=5068023
- 108: Text3: [28]UID=RN">R$'#)974>C&7UQ%X;+[@[15]PUN=PRJ00000709[8]TUID=531[12]PUID=5068023
- 109: Text3: [28]UID=RNKXV%@4!3GTR*9JO88ZE\7@[15]PUN=PRJ00000709[8]TUID=532[12]PUID=5068023
- 110: Text3: [28]UID=RN?2(Q"$(#B4Z`&)Q*+90Q5`[15]PUN=PRJ00000709[8]TUID=533[12]PUID=5068023
- 111: Text3: [28]UID=RN[$2UFBB+*D><!H1=JEAHW`[15]PUN=PRJ00000709[8]TUID=534[12]PUID=5068023
- 112: Text3: [28]UID=RN^9?,I_"2CD&PDV5E&2J;#0[15]PUN=PRJ00000709[8]TUID=535[12]PUID=5068023
- 113: Text3: [28]UID=RNHZ_]^?\E9$2PR<-<K;O<.`[15]PUN=PRJ00000709[8]TUID=536[12]PUID=5068023

| ID | WBS | Task | Type | Duration | Start | Finish | Predecessors | Complete | Remaining | Baseline start | Baseline finish | Baseline duration | Total slack | Constraint |
| --- | --- | --- | --- | --- | --- | --- | --- | --- | --- | --- | --- | --- | --- | --- |
| 114 | 1.3 | **Aprovação financeira** |  | 5d | 2014-10-23 A | 2014-10-29 A | 102 | 100% |  | 2014-10-23 | 2014-10-29 | 5d |  |  |
| 115 | 1.3.1 | Custo desenvolvimento fechado |  | 1d | 2014-10-29 A | 2014-10-29 A |  | 100% |  | 2014-10-29 | 2014-10-29 | 1d |  | finish no earlier than 2014-10-29 |
| 116 | 1.3.2 | Aprovação Custo final |  | 5d | 2014-10-23 A | 2014-10-29 A | 115FS-5d | 100% |  | 2014-10-23 | 2014-10-29 | 5d |  | finish no earlier than 2014-10-29 |
| 117 | 1.3.3 | Go para fornecedores |  | 1d | 2014-10-29 A | 2014-10-29 A | 116 | 100% |  | 2014-10-29 | 2014-10-29 | 1d |  | finish no earlier than 2014-10-29 |
| 118 | 1.4 | **Planejar Desenvolvimento** |  | 57d | 2014-10-30 A | 2015-01-27 |  | 61% | 22.5d | 2014-10-30 | 2014-12-08 | 27d | 0d |  |
| 119 | 1.4.1 | Receber cronogramas Desenvolvimento |  | 12d | 2014-10-30 A | 2014-11-14 A | 117 | 100% |  | 2014-10-30 | 2014-11-14 | 12d |  | finish no earlier than 2014-11-14 |
| 120 | 1.4.2 | Validar e Consolidar Cronogramas |  | 45d | 2014-11-17 A | 2015-01-27 | 119 | 50% | 22.5d | 2014-11-17 | 2014-12-08 | 15d | 0d | finish no earlier than 2014-11-21 |
| 121 | 1.5 | **DESENVOLVIMENTO** |  | 282d | 2014-07-08 A | 2015-08-24 |  | 1% | 279.74d | 2014-09-18 | 2015-09-07 | 242d | 0d |  |
| 122 | 1.5.1 | **Desenho Técnico** |  | 78d | 2014-11-24 | 2015-03-20 |  |  |  | 2014-12-01 | 2015-01-23 | 36d | 0d |  |
| 123 | 1.5.1.1 | **WEDO** |  | 40d | 2014-12-01 | 2015-02-02 |  |  |  |  |  |  | 0d |  |
| 124 | 1.5.1.1.1 | Elaborar Desenho Técnico |  | 34d | 2014-12-01 | 2015-01-23 |  |  |  | 2014-12-01 | 2015-01-15 | 30d | 0d | start no earlier than 2014-12-01 |
| 125 | 1.5.1.1.2 | Elaborar Modelo da Dados |  | 5d | 2015-01-15 | 2015-01-23 | 124FF |  |  | 2015-01-09 | 2015-01-15 | 5d | 0d |  |
| 126 | 1.5.1.1.3 | Validar Desenho Técnico |  | 5d | 2015-01-26 | 2015-01-30 | 124 |  |  | 2015-01-16 | 2015-01-22 | 5d | 0d |  |
| 127 | 1.5.1.1.4 | Aprovar Desenho Técnico |  | 1d | 2015-02-02 | 2015-02-02 | 126 |  |  | 2015-01-23 | 2015-01-23 | 1d | 0d |  |
| 128 | 1.5.1.1.5 | Desenho Técnico Finalizado | milestone | 0d | 2015-02-02 | 2015-02-02 | 127 |  |  | 2015-01-23 | 2015-01-23 | 0d | 0d |  |
| 129 | 1.5.1.2 | **ACCENTURE** |  | 78d | 2014-11-24 | 2015-03-20 |  |  |  |  |  |  | 0d |  |
| 130 | 1.5.1.2.1 | **Sistema Siebel 63** |  | 19d | 2015-01-05 | 2015-02-02 |  |  |  |  |  |  | 0d |  |
| 131 | 1.5.1.2.1.1 | Elaboração de Especificação Técnica |  | 14d | 2015-01-05 | 2015-01-26 |  |  |  |  |  |  | 0d | start no earlier than 2015-01-05 |
| 132 | 1.5.1.2.1.2 | Validação da Especificação Técnica - Oi (opcional) |  | 5d | 2015-01-27 | 2015-02-02 | 131 |  |  | 2013-12-30 | 2014-01-13 | 10d | 33d |  |
| 133 | 1.5.1.2.2 | **Sistema INFORMATICA** |  | 20d | 2015-01-26 | 2015-02-23 |  |  |  |  |  |  | 0d |  |
| 134 | 1.5.1.2.2.1 | Elaboração de Especificação Técnica |  | 15d | 2015-01-26 | 2015-02-13 |  |  |  |  |  |  | 0d | start no earlier than 2015-01-26 |
| 135 | 1.5.1.2.2.2 | Validação da Especificação Técnica - Oi (opcional) |  | 5d | 2015-02-16 | 2015-02-23 | 134 |  |  | 2013-12-30 | 2014-01-13 | 10d | 0d |  |
| 136 | 1.5.1.2.3 | **Sistema SISMOVEL** |  | 24d | 2014-11-24 | 2014-12-29 |  |  |  |  |  |  | 0d |  |
| 137 | 1.5.1.2.3.1 | Elaboração de Especificação Técnica |  | 19d | 2014-11-24 | 2014-12-18 |  |  |  |  |  |  | 0d | must start on 2014-11-24 |
| 138 | 1.5.1.2.3.2 | Validação da Especificação Técnica - Oi (opcional) |  | 5d | 2014-12-19 | 2014-12-29 | 137 |  |  | 2013-12-30 | 2014-01-13 | 10d | 54d |  |

Notes:
- 114: Text3: [28]UID=RNU;=O9V4IB42?7X[YA<5@\`[15]PUN=PRJ00000709[8]TUID=537[12]PUID=5068023
- 115: Text3: [28]UID=RN47E,^S!.H$^W?2"N=L)_+`[15]PUN=PRJ00000709[8]TUID=538[12]PUID=5068023
- 116: Text3: [28]UID=RNI(F@"*<5AT&VZG0RCN/32P[15]PUN=PRJ00000709[8]TUID=539[12]PUID=5068023
- 117: Text3: [28]UID=RN\SJ>&V;;\4J84W,Q&6NFDP[15]PUN=PRJ00000709[8]TUID=540[12]PUID=5068023
- 118: Text3: [28]UID=RNS(,5(L@W@$.%DQ*9TA_IE0[15]PUN=PRJ00000709[8]TUID=541[12]PUID=5068023
- 119: Text3: [28]UID=RN^UH8E3SCC$FBC#YK8DC^U`[15]PUN=PRJ00000709[8]TUID=542[12]PUID=5068023
- 120: Text3: [28]UID=RNP5W@>>)UZ$&:!_H`UYQ#]@[15]PUN=PRJ00000709[8]TUID=543[12]PUID=5068023
- 121: Text3: [28]UID=RNTN_/0%>`$T>09]H_DY&="0[15]PUN=PRJ00000709[8]TUID=965[12]PUID=5068023
- 122: Text3: [28]UID=RNAQ35L4U99T.=7DB5L!8%_0[15]PUN=PRJ00000709[8]TUID=966[12]PUID=5068023
- 123: Text3: [28]UID=RNT97P@;:9%T2;$;:C/*X]_@[15]PUN=PRJ00000709[8]TUID=967[12]PUID=5068023
- 124: Text3: [28]UID=RNZ&CQJ3L;GTNSN=@U<&:T0P[15]PUN=PRJ00000709[8]TUID=968[12]PUID=5068023
- 125: Text3: [28]UID=RN=OO1X+G"UDB9TY+=L0[3I@[15]PUN=PRJ00000709[8]TUID=969[12]PUID=5068023
- 126: Text3: [28]UID=RN*Z7"?]R#=D^CB5Q71CU4*`[15]PUN=PRJ00000709[8]TUID=970[12]PUID=5068023
- 127: Text3: [28]UID=RN6=\`7.@*UD:<,JF]GZVJEP[15]PUN=PRJ00000709[8]TUID=971[12]PUID=5068023
- 128: Text3: [28]UID=RN8`2#K$"0P4ZBXU!2%VLU:0[15]PUN=PRJ00000709[8]TUID=972[12]PUID=5068023
- 129: Text3: [28]UID=RN_N3LVM2BB$ZUBK9//D-SY@[15]PUN=PRJ00000709[8]TUID=973[12]PUID=5068023
- 130: Text3: [28]UID=RN;T[MB(.][4^1>PFE,QD-)`[15]PUN=PRJ00000709[8]TUID=974[12]PUID=5068023
- 131: Text3: [28]UID=RNPQ#4J5>##$"RY]N,@_,%\0[15]PUN=PRJ00000709[8]TUID=975[12]PUID=5068023
- 132: Text3: [28]UID=RNJ%4`@,&2ZD:5\K0:@_LD(@[15]PUN=PRJ00000709[8]TUID=976[12]PUID=5068023
- 133: Text3: [28]UID=RNY5_$'-#LZD&J"(\?7TFY10[15]PUN=PRJ00000709[8]TUID=977[12]PUID=5068023
- 134: Text3: [28]UID=RNFBMENJ8/(T&JJ$?&L[ID^P[15]PUN=PRJ00000709[8]TUID=978[12]PUID=5068023
- 135: Text3: [28]UID=RND9B5+X%X*D>Z7F[9MM<Z^@[15]PUN=PRJ00000709[8]TUID=979[12]PUID=5068023
- 136: Text3: [28]UID=RN538SIEL)&$^QF*A[?)-L/0[15]PUN=PRJ00000709[8]TUID=980[12]PUID=5068023
- 137: Text3: [28]UID=RNWYX=;(>/U$V?9?9YGK`;A0[15]PUN=PRJ00000709[8]TUID=981[12]PUID=5068023
- 138: Text3: [28]UID=RN#O6[N2FC;4F.5\FE/?LJ8@[15]PUN=PRJ00000709[8]TUID=982[12]PUID=5068023

| ID | WBS | Task | Type | Duration | Start | Finish | Predecessors | Complete | Remaining | Baseline start | Baseline finish | Baseline duration | Total slack | Constraint |
| --- | --- | --- | --- | --- | --- | --- | --- | --- | --- | --- | --- | --- | --- | --- |
| 139 | 1.5.1.2.4 | **Sistema STC** |  | 11d | 2015-03-06 | 2015-03-20 |  |  |  |  |  |  | 0d |  |
| 140 | 1.5.1.2.4.1 | Elaboração de Especificação Técnica |  | 6d | 2015-03-06 | 2015-03-13 |  |  |  |  |  |  | 0d | start no earlier than 2015-03-06 |
| 141 | 1.5.1.2.4.2 | Validação da Especificação Técnica - Oi (opcional) |  | 5d | 2015-03-16 | 2015-03-20 | 140 |  |  | 2013-12-30 | 2014-01-13 | 10d | 0d |  |
| 142 | 1.5.1.2.5 | **Sistema SAC** |  | 10d | 2015-03-09 | 2015-03-20 |  |  |  |  |  |  | 0d |  |
| 143 | 1.5.1.2.5.1 | Elaboração de Especificação Técnica |  | 5d | 2015-03-09 | 2015-03-13 | 140SS+1d |  |  |  |  |  | 0d |  |
| 144 | 1.5.1.2.5.2 | Validação da Especificação Técnica - Oi (opcional) |  | 5d | 2015-03-16 | 2015-03-20 | 143 |  |  | 2013-12-30 | 2014-01-13 | 10d | 0d |  |
| 145 | 1.5.1.2.6 | **Sistema ARBOR** |  | 15d | 2015-01-20 | 2015-02-10 |  |  |  |  |  |  | 0d |  |
| 146 | 1.5.1.2.6.1 | Elaboração de Especificação Técnica |  | 10d | 2015-01-20 | 2015-02-03 |  |  |  |  |  |  | 0d | must start on 2015-01-20 |
| 147 | 1.5.1.2.6.2 | Validação da Especificação Técnica - Oi (opcional) |  | 5d | 2015-02-04 | 2015-02-10 | 146 |  |  | 2013-12-30 | 2014-01-13 | 10d | 27d |  |
| 148 | 1.5.1.3 | **IBM** |  | 24d | 2014-12-09 | 2015-01-15 |  |  |  |  |  |  | 0d |  |
| 149 | 1.5.1.3.1 | Elaborar Desenho Técnico SFA e Geneva |  | 19d | 2014-12-09 | 2015-01-08 |  |  |  |  |  |  | 0d | must start on 2014-12-09 |
| 150 | 1.5.1.3.2 | Validar Desenho Técnico (opcional) |  | 5d | 2015-01-09 | 2015-01-15 | 149 |  |  |  |  |  | 0d | finish no earlier than 2015-01-09 |
| 151 | 1.5.2 | **Planejamento de Testes** |  | 73d | 2015-02-02 A | 2015-05-20 |  | 4% | 69.76d | 2015-01-26 | 2015-03-19 | 36d | 0d |  |
| 152 | 1.5.2.1 | **Testes de Sistema** |  | 51d | 2015-02-02 | 2015-04-15 |  |  |  | 2015-01-26 | 2015-02-13 | 15d | 0d |  |
| 153 | 1.5.2.1.1 | **WEDO** |  | 17d | 2015-03-23 | 2015-04-15 |  |  |  |  |  |  | 0d |  |
| 154 | 1.5.2.1.1.1 | Elaborar Plano/Cenários de Testes Sistema |  | 12d | 2015-03-23 | 2015-04-08 | 129 |  |  | 2015-01-26 | 2015-02-06 | 10d | 0d | start no earlier than 2014-11-04 |
| 155 | 1.5.2.1.1.2 | Validar Plano/Cenários de Testes de sistema |  | 4d | 2015-04-09 | 2015-04-14 | 154 |  |  | 2015-02-09 | 2015-02-12 | 4d | 0d |  |
| 156 | 1.5.2.1.1.3 | Aprovar Plano/Cenários de Testes de Sistema |  | 1d | 2015-04-15 | 2015-04-15 | 155 |  |  | 2015-02-13 | 2015-02-13 | 1d | 0d |  |
| 157 | 1.5.2.1.1.4 | Plano de Testes Finalizado | milestone | 0d | 2015-04-15 | 2015-04-15 | 156 |  |  | 2015-02-13 | 2015-02-13 | 0d | 0d |  |
| 158 | 1.5.2.1.2 | **ACCENTURE** |  | 49d | 2015-02-02 | 2015-04-13 |  |  |  |  |  |  | 0d |  |
| 159 | 1.5.2.1.2.1 | **Sistema Siebel 63** |  | 7d | 2015-02-02 | 2015-02-10 |  |  |  |  |  |  | 0d |  |
| 160 | 1.5.2.1.2.1.1 | Elaboração do planejamento de teste |  | 7d | 2015-02-02 | 2015-02-10 |  |  |  |  |  |  | 0d | start no earlier than 2015-02-02 |
| 161 | 1.5.2.1.2.2 | **Sistema STC** |  | 6d | 2015-04-06 | 2015-04-13 |  |  |  |  |  |  | 0d |  |
| 162 | 1.5.2.1.2.2.1 | Elaboração do planejamento de teste |  | 6d | 2015-04-06 | 2015-04-13 |  |  |  |  |  |  | 0d | start no earlier than 2015-04-06 |

Notes:
- 139: Text3: [28]UID=RN:9I+IA/3(4B'8R6B-&(Y;P[15]PUN=PRJ00000709[8]TUID=983[12]PUID=5068023
- 140: Text3: [28]UID=RN'XWL6'$/&T*TW[[<>G/;W0[15]PUN=PRJ00000709[8]TUID=984[12]PUID=5068023
- 141: Text3: [28]UID=RNY.3@OZ6)[4Z\4GVC]&N+CP[15]PUN=PRJ00000709[8]TUID=985[12]PUID=5068023
- 142: Text3: [28]UID=RN0,Y!O5$NJ4R![C6&*"?[10[15]PUN=PRJ00000709[8]TUID=986[12]PUID=5068023
- 143: Text3: [28]UID=RN=<@PI@W>]T^4;U*302+70`[15]PUN=PRJ00000709[8]TUID=987[12]PUID=5068023
- 144: Text3: [28]UID=RN<)JK^,_ZYT*[C_;2)+'UVP[15]PUN=PRJ00000709[8]TUID=988[12]PUID=5068023
- 145: Text3: [28]UID=RN/$HED;:=8T*MH-"(P"G<?`[15]PUN=PRJ00000709[8]TUID=989[12]PUID=5068023
- 146: Text3: [28]UID=RNBC\#O?!<S$FC2O8IV*"B4@[15]PUN=PRJ00000709[8]TUID=990[12]PUID=5068023
- 147: Text3: [28]UID=RN7NS&(-R79DF=@`.@5Y*@I@[15]PUN=PRJ00000709[8]TUID=991[12]PUID=5068023
- 148: Text3: [28]UID=RNBM\Y__<;LTF];M0N;.C='0[15]PUN=PRJ00000709[8]TUID=992[12]PUID=5068023
- 149: Text3: [28]UID=RN_B5U1D/K^$.U'4`;]QY,1@[15]PUN=PRJ00000709[8]TUID=993[12]PUID=5068023
- 150: Text3: [28]UID=RNO*VJSRC#84^6/GO6[R#C?P[15]PUN=PRJ00000709[8]TUID=994[12]PUID=5068023
- 151: Text3: [28]UID=RN,3B'>)))!$2)\9^EDBQ>,P[15]PUN=PRJ00000709[8]TUID=995[12]PUID=5068023
- 152: Text3: [28]UID=RN$PSD-_)_S$B&A)V;XB($7P[15]PUN=PRJ00000709[8]TUID=996[12]PUID=5068023
- 153: Text3: [28]UID=RNR<?L\J_PH$28B>7D#GS@Q@[15]PUN=PRJ00000709[8]TUID=997[12]PUID=5068023
- 154: Text3: [28]UID=RN%#)JXNG4STJ]#;#V**W1/`[15]PUN=PRJ00000709[8]TUID=998[12]PUID=5068023
- 155: Text3: [28]UID=RN3HP2'1=U#4>[_Z\1E!*ZX`[15]PUN=PRJ00000709[8]TUID=999[12]PUID=5068023
- 156: Text3: [28]UID=RNNX7OUQBD<4>7\@GQ8G][L@[15]PUN=PRJ00000709[9]TUID=1000[12]PUID=5068023
- 157: Text3: [28]UID=RND8[/$TX"TD&7-<71_EV4P0[15]PUN=PRJ00000709[9]TUID=1001[12]PUID=5068023
- 158: Text3: [28]UID=RN_Y0Q`77[2$:771L1XXQ(V@[15]PUN=PRJ00000709[9]TUID=1002[12]PUID=5068023
- 159: Text3: [28]UID=RN$S+TVT`:N$&2#4N^H[*,2P[15]PUN=PRJ00000709[9]TUID=1003[12]PUID=5068023
- 160: Text3: [28]UID=RNK-`17*]8RTBYBZH@]A:OYP[15]PUN=PRJ00000709[9]TUID=1004[12]PUID=5068023
- 161: Text3: [28]UID=RN7X[08!\LXDRR'C;O/0IE@P[15]PUN=PRJ00000709[9]TUID=1005[12]PUID=5068023
- 162: Text3: [28]UID=RN>Q'(7\9@=T2H^EXLY:"LY`[15]PUN=PRJ00000709[9]TUID=1006[12]PUID=5068023

| ID | WBS | Task | Type | Duration | Start | Finish | Predecessors | Complete | Remaining | Baseline start | Baseline finish | Baseline duration | Total slack | Constraint |
| --- | --- | --- | --- | --- | --- | --- | --- | --- | --- | --- | --- | --- | --- | --- |
| 163 | 1.5.2.1.2.3 | **Sistema SAC** |  | 6d | 2015-04-06 | 2015-04-13 |  |  |  |  |  |  | 0d |  |
| 164 | 1.5.2.1.2.3.1 | Elaboração do planejamento de teste |  | 6d | 2015-04-06 | 2015-04-13 |  |  |  |  |  |  | 0d | start no earlier than 2015-04-06 |
| 165 | 1.5.2.1.2.4 | **Sistema ARBOR** |  | 2d | 2015-02-02 | 2015-02-03 |  |  |  |  |  |  | 0d |  |
| 166 | 1.5.2.1.2.4.1 | Elaboração do planejamento de teste |  | 2d | 2015-02-02 | 2015-02-03 |  |  |  |  |  |  | 0d | start no earlier than 2015-02-02 |
| 167 | 1.5.2.2 | **Testes Integrados e UAT** |  | 73d | 2015-02-02 A | 2015-05-20 |  | 6% | 68.89d | 2015-02-19 | 2015-03-19 | 21d | 0d |  |
| 168 | 1.5.2.2.1 | **WEDO** |  | 22d | 2015-04-16 | 2015-05-20 |  |  |  |  |  |  | 0d |  |
| 169 | 1.5.2.2.1.1 | Elaborar e Cadastrar (Quality Center) Plano/Cenários de Testes Integrados e UAT |  | 11d | 2015-04-16 | 2015-05-05 | 157 |  |  | 2015-02-19 | 2015-03-04 | 10d | 0d |  |
| 170 | 1.5.2.2.1.2 | Validar Plano/Cenários de Testes Integrados e UAT |  | 5d | 2015-05-06 | 2015-05-12 | 169 |  |  | 2015-03-05 | 2015-03-11 | 5d | 0d |  |
| 171 | 1.5.2.2.1.3 | Validar Plano/Cenários de Testes Integrados e UAT |  | 5d | 2015-05-13 | 2015-05-19 | 170 |  |  | 2015-03-12 | 2015-03-18 | 5d | 0d |  |
| 172 | 1.5.2.2.1.4 | Aprovar Plano/Cenários de Testes de Sistema |  | 1d | 2015-05-20 | 2015-05-20 | 171 |  |  | 2015-03-19 | 2015-03-19 | 1d | 0d |  |
| 173 | 1.5.2.2.1.5 | Plano de Testes Finalizado | milestone | 0d | 2015-05-20 | 2015-05-20 | 172 |  |  | 2015-03-19 | 2015-03-19 | 0d | 0d |  |
| 174 | 1.5.2.2.2 | **IBM** |  | 40d | 2015-02-02 A | 2015-03-30 |  | 21% | 31.58d |  |  |  | 0d |  |
| 175 | 1.5.2.2.2.1 | Elaborar e Cadastrar (Quality Center) Plano/Cenários de Testes Integrados e UAT |  | 10d | 2015-02-02 A | 2015-02-13 |  | 80% | 2d |  |  |  | 2d | start no earlier than 2015-02-02 |
| 176 | 1.5.2.2.2.2 | Validar Plano/Cenários de Testes Integrados e UAT |  | 5d | 2015-02-19 | 2015-02-25 | 175 |  |  |  |  |  | 0d | start no earlier than 2015-02-19 |
| 177 | 1.5.2.2.2.3 | Validar Plano/Cenários de Testes Integrados e UAT |  | 5d | 2015-02-26 | 2015-03-04 | 176 |  |  |  |  |  | 0d | start no earlier than 2015-02-24 |
| 178 | 1.5.2.2.2.4 | Aprovar Plano/Cenário de testes Integrados e UAT |  | 1d | 2015-03-05 | 2015-03-05 | 177 |  |  |  |  |  | 0d | start no earlier than 2015-03-03 |
| 179 | 1.5.2.2.2.5 | Reuniões de Interdependências |  | 5d | 2015-03-06 | 2015-03-12 | 178 |  |  |  |  |  | 0d | start no earlier than 2015-03-04 |
| 180 | 1.5.2.2.2.6 | Atualizar Cronograma de TI/UAT com interdependências |  | 2d | 2015-03-13 | 2015-03-16 | 179 |  |  |  |  |  | 0d | start no earlier than 2015-03-11 |
| 181 | 1.5.2.2.2.7 | Consolidar Cronograma de TI/UAT |  | 2d | 2015-03-17 | 2015-03-18 | 180 |  |  |  |  |  | 0d | start no earlier than 2015-03-13 |
| 182 | 1.5.2.2.2.8 | Aprovar Cronograma TI/UAT |  | 5d | 2015-03-19 | 2015-03-25 | 181 |  |  |  |  |  | 0d | start no earlier than 2015-03-17 |
| 183 | 1.5.2.2.2.9 | Atualizar datas no ALM11 |  | 3d | 2015-03-26 | 2015-03-30 | 182 |  |  |  |  |  | 0d | start no earlier than 2015-03-24 |
| 184 | 1.5.2.2.3 | **Accenture** |  | 38d | 2015-02-19 | 2015-04-14 |  |  |  |  |  |  | 0d |  |
| 185 | 1.5.2.2.3.1 | **Siebel 6** |  | 20d | 2015-02-19 | 2015-03-18 |  |  |  |  |  |  | 0d |  |
| 186 | 1.5.2.2.3.1.1 | Elaborar Planilha de carga no Repositório Central |  | 3d | 2015-02-19 | 2015-02-23 |  |  |  |  |  |  | 0d | start no earlier than 2015-02-19 |
| 187 | 1.5.2.2.3.1.2 | Carga no Repositório Central |  | 3d | 2015-02-24 | 2015-02-26 | 186 |  |  |  |  |  | 0d | start no earlier than 2014-10-06 |
| 188 | 1.5.2.2.3.1.3 | Cadastro de cenários no ALM |  | 4d | 2015-02-27 | 2015-03-04 | 187 |  |  |  |  |  | 0d | start no earlier than 2014-10-06 |
| 189 | 1.5.2.2.3.1.4 | Validar Plano de TI |  | 5d | 2015-03-05 | 2015-03-11 | 188 |  |  |  |  |  | 0d |  |
| 190 | 1.5.2.2.3.1.5 | Validar Plano de UAT |  | 5d | 2015-03-12 | 2015-03-18 | 189 |  |  |  |  |  | 0d | start no earlier than 2014-10-27 |

Notes:
- 163: Text3: [28]UID=RNA<VAGH/&J$*"^^OWE\!OO0[15]PUN=PRJ00000709[9]TUID=1007[12]PUID=5068023
- 164: Text3: [28]UID=RNE@[>9[W0-4*<F!JU;X/8"P[15]PUN=PRJ00000709[9]TUID=1008[12]PUID=5068023
- 165: Text3: [28]UID=RN*3)V.L9ZZT6QOLMG"T`U%0[15]PUN=PRJ00000709[9]TUID=1009[12]PUID=5068023
- 166: Text3: [28]UID=RN5=,L<NSRXDN+%W'_6<&GJ0[15]PUN=PRJ00000709[9]TUID=1010[12]PUID=5068023
- 167: Text3: [28]UID=RN)^5!XMR8\$ZS%_3?..,?C0[15]PUN=PRJ00000709[9]TUID=1011[12]PUID=5068023
- 168: Text3: [28]UID=RN&V+;J6A'9D2"F1&75@NE+P[15]PUN=PRJ00000709[9]TUID=1012[12]PUID=5068023
- 169: Text3: [28]UID=RN.F$OC/W1>DF$JNF)]Z83V@[15]PUN=PRJ00000709[9]TUID=1013[12]PUID=5068023
- 170: Text3: [28]UID=RNR#F/!@B;TDN)$]Q.C&A-,0[15]PUN=PRJ00000709[9]TUID=1014[12]PUID=5068023
- 171: Text3: [28]UID=RN=52*28=^IT6T(1^?SQW1D`[15]PUN=PRJ00000709[9]TUID=1015[12]PUID=5068023
- 172: Text3: [28]UID=RN;OU-"/7)3T"H7N/Z&`+?`0[15]PUN=PRJ00000709[9]TUID=1016[12]PUID=5068023
- 173: Text3: [28]UID=RN0J8/V_Y.\4"^S5;X:^%>#@[15]PUN=PRJ00000709[9]TUID=1017[12]PUID=5068023
- 174: Text3: [28]UID=RN15N'@1B"%$>\4<:V7W\".@[15]PUN=PRJ00000709[9]TUID=1018[12]PUID=5068023
- 175: Text3: [28]UID=RN=OR,`\4<)TB@L1-B`6SYZ`[15]PUN=PRJ00000709[9]TUID=1019[12]PUID=5068023
- 176: Text3: [28]UID=RN78O1[71>`D*#J$AU()`]=P[15]PUN=PRJ00000709[9]TUID=1020[12]PUID=5068023
- 177: Text3: [28]UID=RN,70+R'QD34FH`64<MB!380[15]PUN=PRJ00000709[9]TUID=1021[12]PUID=5068023
- 178: Text3: [28]UID=RN87>Z&%2()T2E2(-<5N$XC@[15]PUN=PRJ00000709[9]TUID=1022[12]PUID=5068023
- 179: Text3: [28]UID=RN\)$5M%=OGDB%:$8>"NOQ2P[15]PUN=PRJ00000709[9]TUID=1023[12]PUID=5068023
- 180: Text3: [28]UID=RN&H_4D03X7DRK(RQW&W[12P[15]PUN=PRJ00000709[9]TUID=1024[12]PUID=5068023
- 181: Text3: [28]UID=RNR4!J>[:R"DF4ZVH9L4[-@0[15]PUN=PRJ00000709[9]TUID=1025[12]PUID=5068023
- 182: Text3: [28]UID=RNL9G*M!^5O$VHN_R:"VWSZ@[15]PUN=PRJ00000709[9]TUID=1026[12]PUID=5068023
- 183: Text3: [28]UID=RN@4S-X?OR_DZMF7%6F]*.F@[15]PUN=PRJ00000709[9]TUID=1027[12]PUID=5068023

| ID | WBS | Task | Type | Duration | Start | Finish | Predecessors | Baseline start | Baseline finish | Baseline duration | Total slack | Constraint |
| --- | --- | --- | --- | --- | --- | --- | --- | --- | --- | --- | --- | --- |
| 191 | 1.5.2.2.3.2 | **Arbor** |  | 16d | 2015-02-19 | 2015-03-12 |  |  |  |  | 0d |  |
| 192 | 1.5.2.2.3.2.1 | Elaborar Planilha de carga no Repositório Central |  | 1d | 2015-02-19 | 2015-02-19 |  |  |  |  | 0d | start no earlier than 2015-02-19 |
| 193 | 1.5.2.2.3.2.2 | Carga no Repositório Central |  | 3d | 2015-02-20 | 2015-02-24 | 192 |  |  |  | 0d | start no earlier than 2014-10-06 |
| 194 | 1.5.2.2.3.2.3 | Cadastro de cenários no ALM |  | 2d | 2015-02-25 | 2015-02-26 | 193 |  |  |  | 0d | start no earlier than 2014-10-06 |
| 195 | 1.5.2.2.3.2.4 | Validar Plano de TI |  | 5d | 2015-02-27 | 2015-03-05 | 194 |  |  |  | 0d |  |
| 196 | 1.5.2.2.3.2.5 | Validar Plano de UAT |  | 5d | 2015-03-06 | 2015-03-12 | 195 |  |  |  | 0d | start no earlier than 2014-10-27 |
| 197 | 1.5.2.2.3.3 | **STC / SISRAF Cadastro** |  | 17d | 2015-03-20 | 2015-04-14 |  |  |  |  | 0d |  |
| 198 | 1.5.2.2.3.3.1 | Elaborar Planilha de carga no Repositório Central |  | 2d | 2015-03-20 | 2015-03-23 |  |  |  |  | 0d | start no earlier than 2015-03-20 |
| 199 | 1.5.2.2.3.3.2 | Carga no Repositório Central |  | 3d | 2015-03-24 | 2015-03-26 | 198 |  |  |  | 0d | start no earlier than 2014-10-06 |
| 200 | 1.5.2.2.3.3.3 | Cadastro de cenários no ALM |  | 2d | 2015-03-27 | 2015-03-30 | 199 |  |  |  | 0d | start no earlier than 2014-10-06 |
| 201 | 1.5.2.2.3.3.4 | Validar Plano de TI |  | 5d | 2015-03-31 | 2015-04-07 | 200 |  |  |  | 0d |  |
| 202 | 1.5.2.2.3.3.5 | Validar Plano de UAT |  | 5d | 2015-04-08 | 2015-04-14 | 201 |  |  |  | 0d | start no earlier than 2014-10-27 |
| 203 | 1.5.2.2.3.4 | **SAC** |  | 17d | 2015-03-20 | 2015-04-14 |  |  |  |  | 0d |  |
| 204 | 1.5.2.2.3.4.1 | Elaborar Planilha de carga no Repositório Central |  | 2d | 2015-03-20 | 2015-03-23 |  |  |  |  | 0d | start no earlier than 2015-03-20 |
| 205 | 1.5.2.2.3.4.2 | Carga no Repositório Central |  | 3d | 2015-03-24 | 2015-03-26 | 204 |  |  |  | 0d | start no earlier than 2014-10-06 |
| 206 | 1.5.2.2.3.4.3 | Cadastro de cenários no ALM |  | 2d | 2015-03-27 | 2015-03-30 | 205 |  |  |  | 0d | start no earlier than 2014-10-06 |
| 207 | 1.5.2.2.3.4.4 | Validar Plano de TI |  | 5d | 2015-03-31 | 2015-04-07 | 206 |  |  |  | 0d |  |
| 208 | 1.5.2.2.3.4.5 | Validar Plano de UAT |  | 5d | 2015-04-08 | 2015-04-14 | 207 |  |  |  | 0d | start no earlier than 2014-10-27 |
| 209 | 1.5.2.2.3.5 | **Informática** |  | 12d | 2015-02-24 | 2015-03-11 |  |  |  |  | 0d |  |
| 210 | 1.5.2.2.3.5.1 | Elaborar Planilha de carga no Repositório Central |  | 2d | 2015-02-24 | 2015-02-25 | 135 |  |  |  | 0d | start no earlier than 2015-02-19 |
| 211 | 1.5.2.2.3.5.2 | Carga no Repositório Central |  | 3d | 2015-02-26 | 2015-03-02 | 210 |  |  |  | 0d | start no earlier than 2014-10-06 |
| 212 | 1.5.2.2.3.5.3 | Cadastro de cenários no ALM |  | 2d | 2015-03-03 | 2015-03-04 | 211 |  |  |  | 0d | start no earlier than 2014-10-06 |
| 213 | 1.5.2.2.3.5.4 | Validar Plano de TI |  | 5d | 2015-03-05 | 2015-03-11 | 212 |  |  |  | 0d |  |
| 214 | 1.5.3 | **Construção/Configuração e Testes de Sistema** |  | 251d | 2014-07-08 | 2015-07-10 |  | 2015-01-26 | 2015-06-01 | 85d | 0d |  |
| 215 | 1.5.3.1 | **WEDO** |  | 93d | 2015-02-03 | 2015-06-19 |  |  |  |  | 0d |  |
| 216 | 1.5.3.1.1 | Realizar Construção e TU |  | 69d | 2015-02-03 | 2015-05-15 | 128 | 2015-01-26 | 2015-04-24 | 60d | 0d |  |
| 217 | 1.5.3.1.2 | Realizar Testes de sistema |  | 29d | 2015-05-11 | 2015-06-19 | 216FS-5d | 2015-04-17 | 2015-06-01 | 30d | 0d |  |
| 218 | 1.5.3.1.3 | Construção e Teste de sistema WEDO Finalizada | milestone | 0d | 2015-06-19 | 2015-06-19 | 217 | 2015-06-01 | 2015-06-01 | 0d | 0d |  |

Notes:
- 214: Text3: [28]UID=RN\*G/=\U0QT*6$9>.:&"]P0[15]PUN=PRJ00000709[9]TUID=1028[12]PUID=5068023
- 215: Text3: [28]UID=RNQ(8M-DA&'D^*K#]%`YY*$`[15]PUN=PRJ00000709[9]TUID=1029[12]PUID=5068023
- 216: Text3: [28]UID=RN0)YE5OASRD^-2DQMHRZKO@[15]PUN=PRJ00000709[9]TUID=1030[12]PUID=5068023
- 217: [21/01/2015 22:43:38 (5161050)] / Neste ambito serão carregdos arquivos de produção para a máquina de DEV ou homologação (a definir) de forma a executar os testes com massa real. / [21/01/2015 22:43:38 (5161051)] / O resultado dos TS serão utilizados como evidencia para o UAT; / Adicionar observações aqui: / Text3: [28]UID=RN-$WPW&^YEDZ.38Z9J%>T\0[15]PUN=PRJ00000709[9]TUID=1031[12]PUID=5068023
- 218: Text3: [28]UID=RNNPX4HS7ZJTV@?BKT*"D0_`[15]PUN=PRJ00000709[9]TUID=1032[12]PUID=5068023

| ID | WBS | Task | Duration | Start | Finish | Predecessors | Baseline start | Baseline finish | Baseline duration | Total slack | Constraint |
| --- | --- | --- | --- | --- | --- | --- | --- | --- | --- | --- | --- |
| 219 | 1.5.3.2 | **ACCENTURE** | 251d | 2014-07-08 | 2015-07-10 |  |  |  |  | 0d |  |
| 220 | 1.5.3.2.1 | **Construção** | 77d | 2015-01-27 | 2015-05-20 |  |  |  |  | 0d |  |
| 221 | 1.5.3.2.1.1 | **Sistema Siebel 63** | 77d | 2015-01-27 | 2015-05-20 |  |  |  |  | 0d |  |
| 222 | 1.5.3.2.1.1.1 | Construção e teste unitário | 20d | 2015-01-27 | 2015-02-24 | 131 |  |  |  | 0d |  |
| 223 | 1.5.3.2.1.1.2 | Merge | 1d | 2015-02-25 | 2015-02-25 | 222 |  |  |  | 0d |  |
| 224 | 1.5.3.2.1.1.3 | Elaborar Runbook / Simproc | 5d | 2015-02-25 | 2015-03-03 | 222 |  |  |  | 0d |  |
| 225 | 1.5.3.2.1.1.4 | Validação Runbook / Simproc - Oi | 5d | 2015-03-04 | 2015-03-10 | 224 |  |  |  | 0d |  |
| 226 | 1.5.3.2.1.1.5 | Execução do teste de conectividade | 5d | 2015-05-14 | 2015-05-20 |  | 2014-03-18 | 2014-04-23 | 27d | 0d | start no earlier than 2015-05-14 |
| 227 | 1.5.3.2.1.2 | **Sistema INFORMATICA** | 59d | 2015-02-23 | 2015-05-20 |  |  |  |  | 0d |  |
| 228 | 1.5.3.2.1.2.1 | Construção e teste unitário | 30d | 2015-02-23 | 2015-04-06 | 134FS+4d |  |  |  | 0d |  |
| 229 | 1.5.3.2.1.2.2 | Elaborar Runbook / Simproc | 5d | 2015-04-07 | 2015-04-13 | 228 |  |  |  | 0d |  |
| 230 | 1.5.3.2.1.2.3 | Validação Runbook / Simproc - Oi | 5d | 2015-04-14 | 2015-04-20 | 229 |  |  |  | 0d |  |
| 231 | 1.5.3.2.1.2.4 | Execução do teste de conectividade | 5d | 2015-05-14 | 2015-05-20 | 226SS | 2014-03-18 | 2014-04-23 | 27d | 0d |  |
| 232 | 1.5.3.2.1.3 | **Sistema STC** | 13d | 2015-04-06 | 2015-04-24 |  |  |  |  | 0d |  |
| 233 | 1.5.3.2.1.3.1 | Construção e teste unitário | 12d | 2015-04-06 | 2015-04-22 | 141FS+9d |  |  |  | 0d |  |
| 234 | 1.5.3.2.1.3.2 | Merge | 1d | 2015-04-24 | 2015-04-24 | 233 |  |  |  | 0d |  |
| 235 | 1.5.3.2.1.4 | **Sistema SAC** | 7d | 2015-03-30 | 2015-04-08 |  |  |  |  | 0d |  |
| 236 | 1.5.3.2.1.4.1 | Construção e teste unitário | 6d | 2015-03-30 | 2015-04-07 | 143FS+10d |  |  |  | 0d |  |
| 237 | 1.5.3.2.1.4.2 | Merge | 1d | 2015-04-08 | 2015-04-08 | 236 |  |  |  | 0d |  |
| 238 | 1.5.3.2.1.5 | **Sistema ARBOR** | 16d | 2015-02-04 | 2015-02-26 |  |  |  |  | 0d |  |
| 239 | 1.5.3.2.1.5.1 | Construção e teste unitário | 15d | 2015-02-04 | 2015-02-25 | 146 |  |  |  | 0d |  |
| 240 | 1.5.3.2.1.5.2 | Merge | 1d | 2015-02-26 | 2015-02-26 | 239 |  |  |  | 0d |  |
| 241 | 1.5.3.2.2 | **Migração** | 251d | 2014-07-08 | 2015-07-10 |  |  |  |  | 0d |  |
| 242 | 1.5.3.2.2.1 | **Sistema Siebel 63** | 74d | 2015-03-20 | 2015-07-08 |  |  |  |  | 0d |  |
| 243 | 1.5.3.2.2.1.1 | Migração para TS | 1d | 2015-03-20 | 2015-03-20 |  |  |  |  | 0d | start no earlier than 2015-03-20 |
| 244 | 1.5.3.2.2.1.2 | Migração para TI | 1d | 2015-05-13 | 2015-05-13 |  |  |  |  | 0d | start no earlier than 2015-05-13 |
| 245 | 1.5.3.2.2.1.3 | Migração para TRG | 1d | 2015-07-08 | 2015-07-08 |  |  |  |  | 0d | start no earlier than 2015-07-08 |

Notes:
- 219: Text3: [28]UID=RNH%<AYVVI?4JP%+)9CA0XZP[15]PUN=PRJ00000709[9]TUID=1033[12]PUID=5068023
- 220: Text3: [28]UID=RNW7?\\V]-OT>HNQ"^9PL<W0[15]PUN=PRJ00000709[9]TUID=1034[12]PUID=5068023
- 221: Text3: [28]UID=RNW*R4'K81]4V]4:F*DFWIC`[15]PUN=PRJ00000709[9]TUID=1035[12]PUID=5068023
- 222: Text3: [28]UID=RN6;._&[?JX4ZN6^56IMZP,P[15]PUN=PRJ00000709[9]TUID=1036[12]PUID=5068023
- 223: Text3: [28]UID=RNLQGX@T1X5TZDG]/7(#N<<@[15]PUN=PRJ00000709[9]TUID=1037[12]PUID=5068023
- 224: Text3: [28]UID=RNS&Z_#V]RLD^^:UPI6K_U*`[15]PUN=PRJ00000709[9]TUID=1038[12]PUID=5068023
- 225: Text3: [28]UID=RNN,O,2\#-5$"GV#P?!>?3!`[15]PUN=PRJ00000709[9]TUID=1039[12]PUID=5068023
- 226: Text3: [28]UID=RN;XLN-AV:HD^&IT/R.DPM1P[15]PUN=PRJ00000709[9]TUID=1040[12]PUID=5068023
- 227: Text3: [28]UID=RNOG*=VLX'<T6+<COI=<I<$P[15]PUN=PRJ00000709[9]TUID=1041[12]PUID=5068023
- 228: Text3: [28]UID=RN@%8-T="6'$F_!;+1C![$:`[15]PUN=PRJ00000709[9]TUID=1042[12]PUID=5068023
- 229: Text3: [28]UID=RNH@RK?13F1T2OZ'SA<E<MD0[15]PUN=PRJ00000709[9]TUID=1043[12]PUID=5068023
- 230: Text3: [28]UID=RN%9FF+P-:+TV;0)&KGDIC$P[15]PUN=PRJ00000709[9]TUID=1044[12]PUID=5068023
- 231: Text3: [28]UID=RN7-%)A*HZ)$F"L.0L`>,)KP[15]PUN=PRJ00000709[9]TUID=1045[12]PUID=5068023
- 232: Text3: [28]UID=RNCQ,_XV[9:TJ>X(`ZN.X.+0[15]PUN=PRJ00000709[9]TUID=1046[12]PUID=5068023
- 233: Text3: [28]UID=RNA[%-:JO><46WMCQV4WMR<P[15]PUN=PRJ00000709[9]TUID=1047[12]PUID=5068023
- 234: Text3: [28]UID=RNCU"T>\Z4:TBAG,WG#MP^=0[15]PUN=PRJ00000709[9]TUID=1048[12]PUID=5068023
- 235: Text3: [28]UID=RN`2]B:HM'=D6TOHA^Z)8[@0[15]PUN=PRJ00000709[9]TUID=1049[12]PUID=5068023
- 236: Text3: [28]UID=RN-*!'LW[PW$>]:T"V?)[D1@[15]PUN=PRJ00000709[9]TUID=1050[12]PUID=5068023
- 237: Text3: [28]UID=RN9\G.EGGTRTZ#&#JT,_Y,3P[15]PUN=PRJ00000709[9]TUID=1051[12]PUID=5068023
- 238: Text3: [28]UID=RN[]V7'IU&@D^I[A"N?.5A30[15]PUN=PRJ00000709[9]TUID=1052[12]PUID=5068023
- 239: Text3: [28]UID=RN;N?TD@L074J0IO80P<XBI0[15]PUN=PRJ00000709[9]TUID=1053[12]PUID=5068023
- 240: Text3: [28]UID=RN?&%\YGJH746+KLY8*!N.F@[15]PUN=PRJ00000709[9]TUID=1054[12]PUID=5068023
- 241: Text3: [28]UID=RNM1AJ';`SKD6>U#+S[ASA-P[15]PUN=PRJ00000709[9]TUID=1055[12]PUID=5068023
- 242: Text3: [28]UID=RNG4?(2DJ6UTV#JPXI=!T#O@[15]PUN=PRJ00000709[9]TUID=1056[12]PUID=5068023
- 243: Text3: [28]UID=RN?AEM$C%(#TF'X(^6OM@$%P[15]PUN=PRJ00000709[9]TUID=1057[12]PUID=5068023
- 244: Text3: [28]UID=RN<.;K$D?>6TN:AFWH`S`&,P[15]PUN=PRJ00000709[9]TUID=1058[12]PUID=5068023
- 245: Text3: [28]UID=RN=BCL4S;"L4BU>4&2_*S"U0[15]PUN=PRJ00000709[9]TUID=1059[12]PUID=5068023

| ID | WBS | Task | Duration | Start | Finish | Predecessors | Total slack | Constraint |
| --- | --- | --- | --- | --- | --- | --- | --- | --- |
| 246 | 1.5.3.2.2.2 | **Sistema INFORMATICA** | 210d | 2014-07-08 | 2015-05-13 |  | 0d |  |
| 247 | 1.5.3.2.2.2.1 | Migração para TI | 1d | 2015-05-13 | 2015-05-13 |  | 0d | start no earlier than 2015-05-13 |
| 248 | 1.5.3.2.2.2.2 | Migração para TRG | 1d | 2014-07-08 | 2014-07-08 |  | 0d | start no earlier than 2014-07-08 |
| 249 | 1.5.3.2.2.3 | **Sistema STC** | 54d | 2015-04-24 | 2015-07-10 |  | 0d |  |
| 250 | 1.5.3.2.2.3.1 | Migração para TS | 1d | 2015-04-24 | 2015-04-24 | 234SS | 0d | start no earlier than 2015-04-07 |
| 251 | 1.5.3.2.2.3.2 | Migração para TI | 1d | 2015-05-13 | 2015-05-13 |  | 0d | start no earlier than 2015-05-13 |
| 252 | 1.5.3.2.2.3.3 | Migração para TRG | 1d | 2015-07-10 | 2015-07-10 |  | 0d | start no earlier than 2015-07-10 |
| 253 | 1.5.3.2.2.4 | **Sistema SAC** | 54d | 2015-04-24 | 2015-07-10 |  | 0d |  |
| 254 | 1.5.3.2.2.4.1 | Migração para TS | 1d | 2015-04-24 | 2015-04-24 | 250SS | 0d |  |
| 255 | 1.5.3.2.2.4.2 | Migração para TI | 1d | 2015-05-13 | 2015-05-13 | 251SS | 0d |  |
| 256 | 1.5.3.2.2.4.3 | Migração para TRG | 1d | 2015-07-10 | 2015-07-10 | 252SS | 0d |  |
| 257 | 1.5.3.2.2.5 | **Sistema ARBOR** | 68d | 2015-03-30 | 2015-07-08 |  | 0d |  |
| 258 | 1.5.3.2.2.5.1 | Migração para TS | 1d | 2015-03-30 | 2015-03-30 | 243FS+5d | 0d |  |
| 259 | 1.5.3.2.2.5.2 | Migração para TI | 1d | 2015-05-13 | 2015-05-13 | 251SS | 0d |  |
| 260 | 1.5.3.2.2.5.3 | Migração para TRG | 1d | 2015-07-08 | 2015-07-08 | 245SS | 0d |  |
| 261 | 1.5.3.2.3 | **Execução Testes de sistemas** | 30d | 2015-03-23 | 2015-05-07 |  | 0d |  |
| 262 | 1.5.3.2.3.1 | **Sistema Siebel 63** | 12d | 2015-03-23 | 2015-04-08 |  | 0d |  |
| 263 | 1.5.3.2.3.1.1 | Execução do teste | 11d | 2015-03-23 | 2015-04-07 | 243 | 0d |  |
| 264 | 1.5.3.2.3.1.2 | Envio do Termo de Aceite do TS | 1d | 2015-04-08 | 2015-04-08 | 263 | 0d |  |
| 265 | 1.5.3.2.3.2 | **Sistema STC** | 8d | 2015-04-27 | 2015-05-07 |  | 0d |  |
| 266 | 1.5.3.2.3.2.1 | Execução do teste | 7d | 2015-04-27 | 2015-05-06 | 233FS+1d | 0d |  |
| 267 | 1.5.3.2.3.2.2 | Envio do Termo de Aceite do TS | 1d | 2015-05-07 | 2015-05-07 | 266 | 0d |  |
| 268 | 1.5.3.2.3.3 | **Sistema SAC** | 8d | 2015-04-15 | 2015-04-28 |  | 0d |  |
| 269 | 1.5.3.2.3.3.1 | Execução do teste | 7d | 2015-04-15 | 2015-04-27 | 237FS+4d | 0d |  |
| 270 | 1.5.3.2.3.3.2 | Envio do Termo de Aceite do TS | 1d | 2015-04-28 | 2015-04-28 | 269 | 0d |  |

Notes:
- 246: Text3: [28]UID=RNO]-`0_"+:4.]L?+G#W2:!0[15]PUN=PRJ00000709[9]TUID=1060[12]PUID=5068023
- 247: Text3: [28]UID=RN#S55P<2.2$V#\/IC^0KL=`[15]PUN=PRJ00000709[9]TUID=1061[12]PUID=5068023
- 248: Text3: [28]UID=RN<L>JXHX724B3OVP5(R?O[`[15]PUN=PRJ00000709[9]TUID=1062[12]PUID=5068023
- 249: Text3: [28]UID=RN=80H72'LKD2+P**%4S5I(@[15]PUN=PRJ00000709[9]TUID=1063[12]PUID=5068023
- 250: Text3: [28]UID=RN+!TO7G4#:$2?88[1*HVW2@[15]PUN=PRJ00000709[9]TUID=1064[12]PUID=5068023
- 251: Text3: [28]UID=RNA`'K=R%8>$^U-P?&>`A*]@[15]PUN=PRJ00000709[9]TUID=1065[12]PUID=5068023
- 252: Text3: [28]UID=RNR2)[\6%,&4&D"/=6>/O/=0[15]PUN=PRJ00000709[9]TUID=1066[12]PUID=5068023
- 253: Text3: [28]UID=RN*?B#:&V&QDBJP3>4E4[G30[15]PUN=PRJ00000709[9]TUID=1067[12]PUID=5068023
- 254: Text3: [28]UID=RN/B4L9WV<)$Z-^4M`4+(5`0[15]PUN=PRJ00000709[9]TUID=1068[12]PUID=5068023
- 255: Text3: [28]UID=RNYY!(WPH3-D.N!,STN?^)?`[15]PUN=PRJ00000709[9]TUID=1069[12]PUID=5068023
- 256: Text3: [28]UID=RNU;;!U62A24JO6W*R_9>65`[15]PUN=PRJ00000709[9]TUID=1070[12]PUID=5068023
- 257: Text3: [28]UID=RNS,J[?X(ZGD*XW*FY9.M@M@[15]PUN=PRJ00000709[9]TUID=1071[12]PUID=5068023
- 258: Text3: [28]UID=RN]+JT"#;[,4:3(34HN,Z()@[15]PUN=PRJ00000709[9]TUID=1072[12]PUID=5068023
- 259: Text3: [28]UID=RNP@%:37E5T$6NI5!B6IJV[@[15]PUN=PRJ00000709[9]TUID=1073[12]PUID=5068023
- 260: Text3: [28]UID=RNLRR]<_[4^D*-MQ&_+I^+=`[15]PUN=PRJ00000709[9]TUID=1074[12]PUID=5068023
- 261: Text3: [28]UID=RN;NK+F^),+$>)6W5G2UM]90[15]PUN=PRJ00000709[9]TUID=1075[12]PUID=5068023
- 262: Text3: [28]UID=RNF/Q1M[Q/NDJZCX@_-5)QT@[15]PUN=PRJ00000709[9]TUID=1076[12]PUID=5068023
- 263: Text3: [28]UID=RNKA<22.X)_4"Q"UI49&)GH@[15]PUN=PRJ00000709[9]TUID=1077[12]PUID=5068023
- 264: Text3: [28]UID=RN^)0W:A9]M$BS#?N9%Y`7Q0[15]PUN=PRJ00000709[9]TUID=1078[12]PUID=5068023
- 265: Text3: [28]UID=RNF<K;51>#24V-@;FEYI@![@[15]PUN=PRJ00000709[9]TUID=1079[12]PUID=5068023
- 266: Text3: [28]UID=RN&?CYU!-*_$";U^JA]X>0`P[15]PUN=PRJ00000709[9]TUID=1080[12]PUID=5068023
- 267: Text3: [28]UID=RNP/U&RBZIODV.WO8:F`EE,@[15]PUN=PRJ00000709[9]TUID=1081[12]PUID=5068023
- 268: Text3: [28]UID=RN_;1@'-*^=D^S.36D]ZB'+0[15]PUN=PRJ00000709[9]TUID=1082[12]PUID=5068023
- 269: Text3: [28]UID=RNUF2C7*1$!TN<0W/I`=O500[15]PUN=PRJ00000709[9]TUID=1083[12]PUID=5068023
- 270: Text3: [28]UID=RN@FT0TKWQQ$"3R@=]3U>G3`[15]PUN=PRJ00000709[9]TUID=1084[12]PUID=5068023

| ID | WBS | Task | Type | Duration | Start | Finish | Predecessors | Baseline start | Baseline finish | Baseline duration | Total slack | Constraint |
| --- | --- | --- | --- | --- | --- | --- | --- | --- | --- | --- | --- | --- |
| 271 | 1.5.3.2.3.4 | **Sistema ARBOR** |  | 6d | 2015-03-31 | 2015-04-08 |  |  |  |  | 0d |  |
| 272 | 1.5.3.2.3.4.1 | Execução do teste |  | 5d | 2015-03-31 | 2015-04-07 | 258 |  |  |  | 0d |  |
| 273 | 1.5.3.2.3.4.2 | Envio do Termo de Aceite do TS |  | 1d | 2015-04-08 | 2015-04-08 | 272 |  |  |  | 0d |  |
| 274 | 1.5.3.3 | **IBM** |  | 65d | 2015-01-21 | 2015-04-27 |  |  |  |  | 0d |  |
| 275 | 1.5.3.3.1 | Construção SFA e Geneva |  | 50d | 2015-01-21 | 2015-04-01 | 149FS+6d |  |  |  | 0d | start no earlier than 2015-01-21 |
| 276 | 1.5.3.3.2 | Teste de Sistema |  | 15d | 2015-04-02 | 2015-04-27 | 275 |  |  |  | 0d |  |
| 277 | 1.5.4 | **Treinamento RAID** |  | 10d | 2015-06-22 | 2015-07-03 |  | 2015-06-02 | 2015-06-15 | 10d | 0d |  |
| 278 | 1.5.4.1 | Preparar Treinamento (Material e ambiente) |  | 5d | 2015-06-22 | 2015-06-26 | 218 | 2015-06-02 | 2015-06-08 | 5d | 0d |  |
| 279 | 1.5.4.2 | Realizar Treinamento |  | 5d | 2015-06-29 | 2015-07-03 | 278, 217 | 2015-06-09 | 2015-06-15 | 5d | 0d |  |
| 280 | 1.5.4.3 | Treinamento Finalizado | milestone | 0d | 2015-07-03 | 2015-07-03 | 279 | 2015-06-15 | 2015-06-15 | 0d | 0d |  |
| 281 | 1.5.5 | **Testes Integrados** |  | 61d | 2015-04-20 | 2015-07-17 |  | 2015-06-02 | 2015-07-01 | 22d | 0d |  |
| 282 | 1.5.5.1 | **ACCENTURE** |  | 49d | 2015-04-20 | 2015-07-01 |  |  |  |  | 0d |  |
| 283 | 1.5.5.1.1 | **STC** |  | 11d | 2015-05-14 | 2015-05-28 |  |  |  |  | 0d |  |
| 284 | 1.5.5.1.1.1 | Execução de TI |  | 6d | 2015-05-14 | 2015-05-21 | 251 |  |  |  | 0d |  |
| 285 | 1.5.5.1.1.2 | Validação das Evidências de TI |  | 5d | 2015-05-22 | 2015-05-28 | 284 |  |  |  | 0d |  |
| 286 | 1.5.5.1.2 | **SAC** |  | 7d | 2015-05-15 | 2015-05-25 |  |  |  |  | 0d |  |
| 287 | 1.5.5.1.2.1 | Execução de TI |  | 2d | 2015-05-15 | 2015-05-18 | 284SS+1d |  |  |  | 0d |  |
| 288 | 1.5.5.1.2.2 | Validação das Evidências de TI |  | 5d | 2015-05-19 | 2015-05-25 | 287 |  |  |  | 0d |  |
| 289 | 1.5.5.1.3 | **Siebel 6** |  | 40d | 2015-04-20 | 2015-06-18 |  |  |  |  | 0d |  |
| 290 | 1.5.5.1.3.1 | Execução de TI - (Massa - Fora da esteira) |  | 15d | 2015-04-20 | 2015-05-13 | 244FS-15d |  |  |  | 0d |  |
| 291 | 1.5.5.1.3.2 | Execução de TI |  | 14d | 2015-05-22 | 2015-06-11 | 284 |  |  |  | 0d |  |
| 292 | 1.5.5.1.3.3 | Validação das Evidências de TI |  | 5d | 2015-06-12 | 2015-06-18 | 291 |  |  |  | 0d | start no earlier than 2015-05-22 |
| 293 | 1.5.5.1.4 | **Arbor** |  | 34d | 2015-05-14 | 2015-07-01 |  |  |  |  |  |  |
| 294 | 1.5.5.1.4.1 | Execução de TI |  | 6d | 2015-05-14 | 2015-05-21 | 290 |  |  |  | 0d |  |
| 295 | 1.5.5.1.4.2 | Validação das Evidências de TI |  | 5d | 2015-05-22 | 2015-05-28 | 294 |  |  |  | 0d |  |

Notes:
- 271: Text3: [28]UID=RN@"@^.-UI.4F<N+M7_M"JGP[15]PUN=PRJ00000709[9]TUID=1085[12]PUID=5068023
- 272: Text3: [28]UID=RNMVW<Z2V[Z4"$#!X4]5;<P`[15]PUN=PRJ00000709[9]TUID=1086[12]PUID=5068023
- 273: Text3: [28]UID=RN3?X.,AL2W$"K]![7/?[?``[15]PUN=PRJ00000709[9]TUID=1087[12]PUID=5068023
- 274: Text3: [28]UID=RNYUG>'/6=3D:2\2(+B$ZNV`[15]PUN=PRJ00000709[9]TUID=1088[12]PUID=5068023
- 275: Text3: [28]UID=RNOA^/3<T9&DZ+F-R+_B*V[`[15]PUN=PRJ00000709[9]TUID=1089[12]PUID=5068023
- 276: Text3: [28]UID=RN3!`RV<'65$B1$S,+>A;":`[15]PUN=PRJ00000709[9]TUID=1090[12]PUID=5068023
- 277: Text3: [28]UID=RN[+?EN4)A746B/7`[,9&2#0[15]PUN=PRJ00000709[9]TUID=1091[12]PUID=5068023
- 278: [21/01/2015 22:43:38 (5161058)] / A ser realizado em ambiente de DEsenvolvimento, de forma que possas ser paralelizados com os TI / Adicionar observações aqui: / Text3: [28]UID=RNQ(4OSO5@&TV77)$_Z7\,3P[15]PUN=PRJ00000709[9]TUID=1092[12]PUID=5068023
- 279: [21/01/2015 22:43:38 (5161052)] / Expectativa 5 dias (part time , separado em : / [21/01/2015 22:43:38 (5161053)] / 4 dias = user ; / [21/01/2015 22:43:38 (5161054)] / 1 dia = operação. / Adicionar observações aqui: / Text3: [28]UID=RN_=6<NQS5[T^NRM%B2L"DK`[15]PUN=PRJ00000709[9]TUID=1093[12]PUID=5068023
- 280: Text3: [28]UID=RN8\ZE><=31$^SM$JEZ/)&OP[15]PUN=PRJ00000709[9]TUID=1094[12]PUID=5068023
- 281: [21/01/2015 22:43:38 (5161055)] / Os testes integrados deverão ser executados em ambiente de homologação. / [21/01/2015 22:43:38 (5161056)] / A expectativa é que a massa ( referente a novas interfaces e as já existentes) sejam entregues pela OI na máquina e homologação, nos diretórios esperados. / [21/01/2015 22:43:38 (5161057)] / Deverá ser usado a ferramenta quality center para registrar os cenários. / Adicionar observações aqui: / Text3: [28]UID=RN#YVO%Q48NTJUN0L;:]\)&`[15]PUN=PRJ00000709[9]TUID=1095[12]PUID=5068023
- 282: Text3: [28]UID=RN%1<%"`$;N$&FW"WQ0Z8P20[15]PUN=PRJ00000709[9]TUID=1096[12]PUID=5068023

| ID | WBS | Task | Type | Duration | Start | Finish | Predecessors | Baseline start | Baseline finish | Baseline duration | Total slack | Free slack | Constraint |
| --- | --- | --- | --- | --- | --- | --- | --- | --- | --- | --- | --- | --- | --- |
| 296 | 1.5.5.1.5 | **Informática** |  | 16d | 2015-05-22 | 2015-06-15 |  |  |  |  | 0d |  |  |
| 297 | 1.5.5.1.5.1 | Execução 1 TI - Integração SBL 6.3 x Raid |  | 4d | 2015-05-29 | 2015-06-03 | 291SS+5d |  |  |  | 0d |  | start no earlier than 2015-05-29 |
| 298 | 1.5.5.1.5.2 | Execução 2 TI - Integração ARB x Raid |  | 3d | 2015-05-22 | 2015-05-26 | 294 |  |  |  | 0d |  |  |
| 299 | 1.5.5.1.5.3 | Execução 3 TI - Integração HLR x Raid |  | 1d | 2015-06-12 | 2015-06-12 | 291 |  |  |  | 0d |  |  |
| 300 | 1.5.5.1.5.4 | Validação das Evidências de TI |  | 5d | 2015-06-09 | 2015-06-15 | 299FS-4d |  |  |  | 0d |  |  |
| 301 | 1.5.5.1.6 | Janela de testes integrados Acc concluída. Pronto para início testes RAID | milestone | 0d | 2015-06-15 | 2015-06-15 | 300 |  |  |  | 0d |  |  |
| 302 | 1.5.5.2 | **IBM** |  | 30d | 2015-05-11 | 2015-06-22 |  |  |  |  | 0d |  |  |
| 303 | 1.5.5.2.1 | Abertura de ARS Migração TI |  | 1d | 2015-05-11 | 2015-05-11 |  |  |  |  | 0d |  | must start on 2015-05-11 |
| 304 | 1.5.5.2.2 | Migração para Teste Integrado / UAT |  | 2d | 2015-05-12 | 2015-05-13 | 303 |  |  |  | 0d |  |  |
| 305 | 1.5.5.2.3 | **Geneva** |  | 27d | 2015-05-14 | 2015-06-22 |  |  |  |  | 0d |  |  |
| 306 | 1.5.5.2.3.1 | Execução de TI |  | 22d | 2015-05-14 | 2015-06-15 | 251 |  |  |  | 0d |  |  |
| 307 | 1.5.5.2.3.2 | Validação das Evidências de TI |  | 5d | 2015-06-16 | 2015-06-22 | 306 |  |  |  | 0d |  |  |
| 308 | 1.5.5.2.4 | **SFA - Faturamento** |  | 27d | 2015-05-14 | 2015-06-22 |  |  |  |  | 0d |  |  |
| 309 | 1.5.5.2.4.1 | Execução de TI |  | 22d | 2015-05-14 | 2015-06-15 | 306SS |  |  |  | 0d |  |  |
| 310 | 1.5.5.2.4.2 | Validação das Evidências de TI |  | 5d | 2015-06-16 | 2015-06-22 | 309 |  |  |  | 0d |  |  |
| 311 | 1.5.5.3 | **WEDO** |  | 22d | 2015-06-18 | 2015-07-17 |  |  |  |  | 0d |  |  |
| 312 | 1.5.5.3.1 | Preparação estrutura diretorios RAID |  | 2d | 2015-06-18 | 2015-06-19 | 313SS-2d |  |  |  | 3d | 0d |  |
| 313 | 1.5.5.3.2 | Preparar Ambiente de Homologação para inicio dos TI (Migrar Funcionalidades) |  | 5d | 2015-06-22 | 2015-06-26 | 218 | 2015-06-02 | 2015-06-08 | 5d | 0d |  |  |
| 314 | 1.5.5.3.3 | Receber massa para Testes Integrados |  | 2d | 2015-06-22 | 2015-06-23 | 312 | 2015-06-09 | 2015-06-10 | 2d | 3d |  |  |
| 315 | 1.5.5.3.4 | Executar Testes Integrados |  | 10d | 2015-06-29 | 2015-07-10 | 314, 313 | 2015-06-11 | 2015-06-24 | 10d | 0d |  | start no earlier than 2014-10-21 |
| 316 | 1.5.5.3.5 | Validação dos testes de carga (massa UAT Legados) |  | 5d | 2015-06-29 | 2015-07-03 | 315SS |  |  |  | 0d |  |  |
| 317 | 1.5.5.3.6 | Validar Evidencias Testes Integrados |  | 5d | 2015-07-13 | 2015-07-17 | 315 | 2015-06-25 | 2015-07-01 | 5d | 0d |  |  |
| 318 | 1.5.5.3.7 | Testes integrados Aprovados | milestone | 0d | 2015-07-17 | 2015-07-17 | 317 | 2015-07-01 | 2015-07-01 | 0d | 0d |  | start no earlier than 2014-08-25 |
| 319 | 1.5.5.3.8 | Testes Integrados Finalizados | milestone | 0d | 2015-07-17 | 2015-07-17 | 317 | 2015-07-01 | 2015-07-01 | 0d | 0d |  |  |

Notes:
- 301: Text3: [28]UID=RN,I4UOQGL6DBM/@D-<4\,\P[15]PUN=PRJ00000709[9]TUID=1098[12]PUID=5068023
- 302: Text3: [28]UID=RN7%%[["\E]$ZQT'W266[HSP[15]PUN=PRJ00000709[9]TUID=1099[12]PUID=5068023
- 303: Text3: [28]UID=RN`O[=31044T>0VED?7^N##P[9]TUID=1181[12]PUID=5068023
- 304: Text3: [28]UID=RNU3QCI+.OZ$B&;':!%IA">0[9]TUID=1180[12]PUID=5068023
- 305: Text3: [28]UID=RN;ZKRI9QSB$>],(Q5NXAGBP[15]PUN=PRJ00000709[9]TUID=1100[12]PUID=5068023
- 311: Text3: [28]UID=RNF\QN`^/A.$ZC__&,Z%)GYP[15]PUN=PRJ00000709[9]TUID=1101[12]PUID=5068023
- 313: Text3: [28]UID=RN%W[VQUCH4DJRY!:XF8?1#P[15]PUN=PRJ00000709[9]TUID=1102[12]PUID=5068023
- 314: Text3: [28]UID=RNC$0L7I](@4N!7)>P,=TX;@[15]PUN=PRJ00000709[9]TUID=1103[12]PUID=5068023
- 315: Text3: [28]UID=RN[9=6WTIS;4J"!PBTW"+#:0[15]PUN=PRJ00000709[9]TUID=1104[12]PUID=5068023
- 317: Text3: [28]UID=RNLV"=/4*<E4R1X8T;)G7Q<0[15]PUN=PRJ00000709[9]TUID=1105[12]PUID=5068023
- 318: [21/01/2015 22:43:38 (5161059)] / Data planejada no cronograma da Frente Vanilla. Frente Vanilla em produçào / Adicionar observações aqui: / Text3: [28]UID=RNN.2ZKMF^O4:^`SB7[#@'6`[15]PUN=PRJ00000709[9]TUID=1106[12]PUID=5068023
- 319: Text3: [28]UID=RNLD_:F(G1?4:E5JS.V#HE:@[15]PUN=PRJ00000709[9]TUID=1107[12]PUID=5068023

| ID | WBS | Task | Type | Duration | Start | Finish | Predecessors | Baseline start | Baseline finish | Baseline duration | Total slack | Constraint |
| --- | --- | --- | --- | --- | --- | --- | --- | --- | --- | --- | --- | --- |
| 320 | 1.5.6 | **Teste Performance Arbor** |  | 13d | 2015-03-09 | 2015-03-25 |  |  |  |  | 0d |  |
| 321 | 1.5.6.1 | **Accenture** |  | 13d | 2015-03-09 | 2015-03-25 |  |  |  |  | 0d |  |
| 322 | 1.5.6.1.1 | **Arbor** |  | 13d | 2015-03-09 | 2015-03-25 |  |  |  |  | 0d |  |
| 323 | 1.5.6.1.1.1 | Execução TP |  | 13d | 2015-03-09 | 2015-03-25 |  |  |  |  | 0d | start no earlier than 2015-03-09 |
| 324 | 1.5.7 | **UAT** |  | 59d | 2015-05-26 | 2015-08-17 |  | 2015-07-02 | 2015-07-30 | 21d | 0d |  |
| 325 | 1.5.7.1 | **ACCENTURE** |  | 22d | 2015-05-26 | 2015-06-25 |  |  |  |  | 0d |  |
| 326 | 1.5.7.1.1 | Validação das Evidências do UAT - STC |  | 5d | 2015-05-29 | 2015-06-05 | 285 |  |  |  | 0d | start no earlier than 2015-05-22 |
| 327 | 1.5.7.1.2 | Validação das Evidências do UAT - SAC |  | 5d | 2015-05-26 | 2015-06-01 | 288 |  |  |  | 0d | start no earlier than 2015-05-19 |
| 328 | 1.5.7.1.3 | Validação das Evidências do UAT - Siebel |  | 5d | 2015-06-19 | 2015-06-25 | 292 |  |  |  | 0d | start no earlier than 2015-06-12 |
| 329 | 1.5.7.1.4 | Validação das Evidências do UAT - Arbor |  | 5d | 2015-05-29 | 2015-06-05 | 295 |  |  |  | 0d |  |
| 330 | 1.5.7.2 | **IBM** |  | 5d | 2015-06-23 | 2015-06-29 |  |  |  |  | 0d |  |
| 331 | 1.5.7.2.1 | Validar evidências UAT - SFA e Geneva |  | 5d | 2015-06-23 | 2015-06-29 | 307, 310 |  |  |  | 0d |  |
| 332 | 1.5.7.3 | **WEDO** |  | 21d | 2015-07-20 | 2015-08-17 |  |  |  |  | 0d |  |
| 333 | 1.5.7.3.1 | Validar Evidencias Testes de UAT |  | 20d | 2015-07-20 | 2015-08-14 | 319 | 2015-07-02 | 2015-07-29 | 20d | 0d |  |
| 334 | 1.5.7.3.2 | Aprovar UAT |  | 1d | 2015-08-17 | 2015-08-17 | 333 | 2015-07-30 | 2015-07-30 | 1d | 0d |  |
| 335 | 1.5.7.3.3 | Testes de UAT Finalizados e Aprovados | milestone | 0d | 2015-08-17 | 2015-08-17 | 334 | 2015-07-30 | 2015-07-30 | 0d | 0d |  |
| 336 | 1.5.8 | **Preparação para Implantação** |  | 67d | 2015-05-18 | 2015-08-19 |  | 2015-07-02 | 2015-08-06 | 26d | 0d |  |
| 337 | 1.5.8.1 | **WEDO** |  | 23d | 2015-07-20 | 2015-08-19 |  |  |  |  | 0d |  |
| 338 | 1.5.8.1.1 | Definir estratégia de Implantação e Preparar Plano de Implantação |  | 3d | 2015-07-20 | 2015-07-22 | 319 | 2015-07-02 | 2015-07-06 | 3d | 0d |  |
| 339 | 1.5.8.1.2 | Preparar Runbook e Manual da Operação RAID |  | 5d | 2015-07-23 | 2015-07-29 | 338 | 2015-07-07 | 2015-07-13 | 5d | 0d | start no earlier than 2014-10-24 |
| 340 | 1.5.8.1.3 | Validar e Aprovar Runbook |  | 3d | 2015-07-30 | 2015-08-03 | 339 | 2015-07-14 | 2015-07-16 | 3d | 0d | start no earlier than 2014-10-31 |
| 341 | 1.5.8.1.4 | Elaborar Runbook PI - Grupo 1 e 2 |  | 5d | 2015-07-23 | 2015-07-29 | 339SS | 2015-07-07 | 2015-07-13 | 5d | 0d |  |
| 342 | 1.5.8.1.5 | Validar Runbook - Grupo 1 e 2 |  | 3d | 2015-07-30 | 2015-08-03 | 341 | 2015-07-14 | 2015-07-16 | 3d | 0d |  |
| 343 | 1.5.8.1.6 | Criação de CRQ |  | 2d | 2015-08-04 | 2015-08-05 | 342 | 2015-07-17 | 2015-07-20 | 2d | 0d |  |
| 344 | 1.5.8.1.7 | Validação de CRQ |  | 2d | 2015-08-06 | 2015-08-07 | 343 | 2015-07-21 | 2015-07-22 | 2d | 0d |  |
| 345 | 1.5.8.1.8 | Preparar cadeias ControlM e scripts |  | 10d | 2015-08-04 | 2015-08-17 | 342, 340 | 2015-07-17 | 2015-07-30 | 10d | 0d | start no earlier than 2014-11-05 |
| 346 | 1.5.8.1.9 | Abertura GMUD STI 84710 |  | 2d | 2015-08-18 | 2015-08-19 | 345, 338, 335 | 2015-07-31 | 2015-08-03 | 2d | 0d |  |
| 347 | 1.5.8.1.10 | Pronta para implantação | milestone | 0d | 2015-08-19 | 2015-08-19 | 346, 338, 345 | 2015-07-31 | 2015-07-31 | 1d | 0d |  |

Notes:
- 324: [21/01/2015 22:43:37 (5161047)] / Deve ser realizado no ambiente de homologação. Tendo em atenção que será feito com base nas evidencias dos TI realizados. / Adicionar observações aqui: / Text3: [28]UID=RN963X'OP_O4R&_&M=6HSH=@[15]PUN=PRJ00000709[9]TUID=1108[12]PUID=5068023
- 325: Text3: [28]UID=RN\*^D09+?,DFK-O_NSP;]N`[15]PUN=PRJ00000709[9]TUID=1109[12]PUID=5068023
- 330: Text3: [28]UID=RN@$/G%PU-ET6*#=_8O&''1`[15]PUN=PRJ00000709[9]TUID=1111[12]PUID=5068023
- 331: Text3: [28]UID=RNK-?%,JWG14F%+Y0^%)B9>@[15]PUN=PRJ00000709[9]TUID=1112[12]PUID=5068023
- 332: Text3: [28]UID=RN<F8X-AQJ3TVYP:NMX6WJIP[15]PUN=PRJ00000709[9]TUID=1113[12]PUID=5068023
- 333: Text3: [28]UID=RN&[<1[YB''$ZN4-SX2?N=+@[15]PUN=PRJ00000709[9]TUID=1114[12]PUID=5068023
- 334: Text3: [28]UID=RN5;+V5VOI_427*<KD$[:T]0[15]PUN=PRJ00000709[9]TUID=1115[12]PUID=5068023
- 335: Text3: [28]UID=RN\.]_\%!WDT&&2\[P>DQ\F0[15]PUN=PRJ00000709[9]TUID=1116[12]PUID=5068023
- 336: Text3: [28]UID=RNR_,%O/D7;T263'WO@7BO&@[15]PUN=PRJ00000709[9]TUID=1124[12]PUID=5068023
- 337: Text3: [28]UID=RN2I.1B;YO=$2C^OS[)!EB+`[15]PUN=PRJ00000709[9]TUID=1125[12]PUID=5068023
- 338: Text3: [28]UID=RN3.Z8^0I&@D&C^NM6A5-9VP[15]PUN=PRJ00000709[9]TUID=1126[12]PUID=5068023
- 339: Text3: [28]UID=RNIFAB9>2?^$.*OWC?_T?(Q0[15]PUN=PRJ00000709[9]TUID=1127[12]PUID=5068023
- 340: Text3: [28]UID=RN>*LOJ3#2_TF#_QGZ;8K@"0[15]PUN=PRJ00000709[9]TUID=1128[12]PUID=5068023
- 341: Text3: [28]UID=RNVNSBBLNK34^TAT-#>C6-OP[15]PUN=PRJ00000709[9]TUID=1129[12]PUID=5068023
- 342: Text3: [28]UID=RNF&$2M/%H&DF70XF-HKSJ"`[15]PUN=PRJ00000709[9]TUID=1130[12]PUID=5068023
- 343: Text3: [28]UID=RNUD,#8<WQ3T6QT$[U]+L&=`[15]PUN=PRJ00000709[9]TUID=1131[12]PUID=5068023
- 344: Text3: [28]UID=RNWQ</OTME@42]?OA,)$N6;@[15]PUN=PRJ00000709[9]TUID=1132[12]PUID=5068023
- 345: Text3: [28]UID=RNA:?N+M05KTB;U<;C#_7OK`[15]PUN=PRJ00000709[9]TUID=1133[12]PUID=5068023
- 346: Text3: [28]UID=RNZK\`DW0[KDVFS9XZ66!84P[15]PUN=PRJ00000709[9]TUID=1134[12]PUID=5068023
- 347: Text3: [28]UID=RN5YK67JDE3$R30)U1]H4RB@[15]PUN=PRJ00000709[9]TUID=1135[12]PUID=5068023

| ID | WBS | Task | Duration | Start | Finish | Predecessors | Baseline start | Baseline finish | Baseline duration | Total slack | Constraint |
| --- | --- | --- | --- | --- | --- | --- | --- | --- | --- | --- | --- |
| 348 | 1.5.8.2 | **ACCENTURE** | 10d | 2015-05-18 | 2015-05-29 |  |  |  |  | 0d |  |
| 349 | 1.5.8.2.1 | **Sistema STC** | 10d | 2015-05-18 | 2015-05-29 |  | 2014-05-12 | 2014-05-16 | 5d | 0d |  |
| 350 | 1.5.8.2.1.1 | Plano de implantação | 5d | 2015-05-18 | 2015-05-22 |  | 2014-04-24 | 2014-04-25 | 2d | 0d | start no earlier than 2015-05-18 |
| 351 | 1.5.8.2.1.2 | Validação Plano Implantação | 5d | 2015-05-25 | 2015-05-29 | 350 |  |  |  | 0d |  |
| 352 | 1.5.8.2.1.3 | Plano de shakeout | 5d | 2015-05-25 | 2015-05-29 | 351SS |  |  |  | 0d |  |
| 353 | 1.5.8.2.2 | **Sistema SAC** | 7d | 2015-05-19 | 2015-05-27 |  | 2014-05-12 | 2014-05-16 | 5d | 0d |  |
| 354 | 1.5.8.2.2.1 | Plano de implantação | 2d | 2015-05-19 | 2015-05-20 | 350SS+1d | 2014-04-24 | 2014-04-25 | 2d | 0d |  |
| 355 | 1.5.8.2.2.2 | Validação Plano Implantação | 5d | 2015-05-21 | 2015-05-27 | 354 |  |  |  | 0d |  |
| 356 | 1.5.8.3 | **IBM** | 15d | 2015-06-15 | 2015-07-03 |  |  |  |  | 0d |  |
| 357 | 1.5.8.3.1 | Entrega de Runbook | 1d | 2015-06-15 | 2015-06-15 |  |  |  |  | 0d | start no earlier than 2015-06-15 |
| 358 | 1.5.8.3.2 | Validação Runbook | 5d | 2015-06-16 | 2015-06-22 | 357 |  |  |  | 0d |  |
| 359 | 1.5.8.3.3 | Entrega de Simproc | 1d | 2015-06-23 | 2015-06-23 | 358 |  |  |  | 0d |  |
| 360 | 1.5.8.3.4 | Validação Simproc | 5d | 2015-06-24 | 2015-06-30 | 359 |  |  |  | 0d |  |
| 361 | 1.5.8.3.5 | Entrega RNC | 1d | 2015-06-24 | 2015-06-24 | 358FS+1d |  |  |  | 0d | start no earlier than 2015-05-06 |
| 362 | 1.5.8.3.6 | Abertura de CRQ | 1d | 2015-07-03 | 2015-07-03 |  |  |  |  | 0d | start no earlier than 2015-07-03 |
| 363 | 1.5.9 | **Colocar em Produção** | 30d | 2015-07-14 | 2015-08-24 |  | 2015-08-04 | 2015-08-06 | 3d | 0d |  |
| 364 | 1.5.9.1 | **WEDO** | 3d | 2015-08-20 | 2015-08-24 |  |  |  |  | 0d |  |
| 365 | 1.5.9.1.1 | Implantar RAID | 3d | 2015-08-20 | 2015-08-24 | 347 | 2015-08-04 | 2015-08-06 | 3d | 0d | start no earlier than 2015-01-05 |
| 366 | 1.5.9.2 | **ACCENTURE** | 7d | 2015-07-17 | 2015-07-27 |  |  |  |  | 0d |  |
| 367 | 1.5.9.2.1 | **Sistema Siebel 63** | 2d | 2015-07-24 | 2015-07-27 |  | 2014-05-12 | 2014-05-16 | 5d | 0d |  |
| 368 | 1.5.9.2.1.1 | Pré-Implantação | 1d | 2015-07-24 | 2015-07-24 |  | 2014-05-25 | 2014-05-25 | 1d | 0d | start no earlier than 2015-07-24 |
| 369 | 1.5.9.2.1.2 | Release | 2d | 2015-07-24 | 2015-07-27 | 368SS |  |  |  | 21d |  |
| 370 | 1.5.9.2.2 | **Sistema INFORMATICA** | 2d | 2015-07-24 | 2015-07-27 |  | 2014-05-12 | 2014-05-16 | 5d | 0d |  |
| 371 | 1.5.9.2.2.1 | Pré-Implantação | 1d | 2015-07-24 | 2015-07-24 | 368SS | 2014-05-25 | 2014-05-25 | 1d | 0d |  |
| 372 | 1.5.9.2.2.2 | Release | 2d | 2015-07-24 | 2015-07-27 | 371SS |  |  |  | 21d |  |

Notes:
- 348: Text3: [28]UID=RNPTLS6_=R>$.3F!Y<>'?4IP[15]PUN=PRJ00000709[9]TUID=1136[12]PUID=5068023
- 349: Text3: [28]UID=RN1$VH\9VQ`TBX=9R9X4GD^@[15]PUN=PRJ00000709[9]TUID=1137[12]PUID=5068023
- 350: Text3: [28]UID=RN>ZI!1V&3'$656*B^!XSE:P[15]PUN=PRJ00000709[9]TUID=1138[12]PUID=5068023
- 351: Text3: [28]UID=RNFNVJ)!QEMT.$&WVAFGM8"@[15]PUN=PRJ00000709[9]TUID=1139[12]PUID=5068023
- 353: Text3: [28]UID=RNU]6LF(OF'4V4CND$OMW=FP[15]PUN=PRJ00000709[9]TUID=1140[12]PUID=5068023
- 354: Text3: [28]UID=RNG>BVT.%5H$6C:=T_U%Z0[@[15]PUN=PRJ00000709[9]TUID=1141[12]PUID=5068023
- 355: Text3: [28]UID=RN#]I[60&.DDB#%%?B5K,560[15]PUN=PRJ00000709[9]TUID=1142[12]PUID=5068023
- 356: Text3: [28]UID=RN6K]5%)7$JD:N_0I1>%,BX@[15]PUN=PRJ00000709[9]TUID=1143[12]PUID=5068023
- 357: Text3: [28]UID=RNB/:(:%#A.$.L6TK*\@C"B@[15]PUN=PRJ00000709[9]TUID=1144[12]PUID=5068023
- 358: Text3: [28]UID=RNMC`;S=AN<$*2'[OQ*M#91@[15]PUN=PRJ00000709[9]TUID=1145[12]PUID=5068023
- 359: Text3: [15]PUN=PRJ00000709[9]TUID=1144[12]PUID=5068023[28]UID=RN6?<Z?;".G$*UQ"=QQ13,JP
- 360: Text3: [15]PUN=PRJ00000709[9]TUID=1145[12]PUID=5068023[28]UID=RN;`5&J*)&`4.PHI>S8H%.C0
- 361: Text3: [28]UID=RN2PYA-]8.M$*1E;40RV=H!P[15]PUN=PRJ00000709[9]TUID=1146[12]PUID=5068023
- 362: Text3: [28]UID=RN79"UR8_4HDB2S4,39W:%Q@[15]PUN=PRJ00000709[9]TUID=1147[12]PUID=5068023
- 363: Text3: [28]UID=RN?0:72E5.`DB$`IJ.WE!#FP[15]PUN=PRJ00000709[9]TUID=1148[12]PUID=5068023
- 364: Text3: [28]UID=RN1=SVZZH$'D.G%".)*'GD`P[15]PUN=PRJ00000709[9]TUID=1149[12]PUID=5068023
- 365: Text3: [28]UID=RNU_^42,Z`I46403"3XPH,Z@[15]PUN=PRJ00000709[9]TUID=1150[12]PUID=5068023
- 366: Text3: [28]UID=RN3O3V*IA'846E49E@J>4(-@[15]PUN=PRJ00000709[9]TUID=1151[12]PUID=5068023
- 367: Text3: [28]UID=RN=LCGEGYR0$&-](L^?A&^U@[15]PUN=PRJ00000709[9]TUID=1152[12]PUID=5068023
- 368: Text3: [28]UID=RN2M*(V^.AD4R!(S`GI)LG)P[15]PUN=PRJ00000709[9]TUID=1153[12]PUID=5068023
- 369: Text3: [28]UID=RN)5.M>7ZIFT.\DN_Z_X.R2@[15]PUN=PRJ00000709[9]TUID=1154[12]PUID=5068023
- 370: Text3: [28]UID=RNP#[:5:B6KDV;84(N>.9,SP[15]PUN=PRJ00000709[9]TUID=1155[12]PUID=5068023
- 371: Text3: [28]UID=RN1B'U\O`08DJSF/8#5UMD#@[15]PUN=PRJ00000709[9]TUID=1156[12]PUID=5068023
- 372: Text3: [28]UID=RNV07/J6*=94.?V9_^>Y6T^@[15]PUN=PRJ00000709[9]TUID=1157[12]PUID=5068023

| ID | WBS | Task | Type | Duration | Start | Finish | Predecessors | Baseline start | Baseline finish | Baseline duration | Total slack | Constraint |
| --- | --- | --- | --- | --- | --- | --- | --- | --- | --- | --- | --- | --- |
| 373 | 1.5.9.2.3 | **Sistema STC** |  | 2d | 2015-07-24 | 2015-07-27 |  | 2014-05-12 | 2014-05-16 | 5d | 0d |  |
| 374 | 1.5.9.2.3.1 | Pré-Implantação |  | 1d | 2015-07-24 | 2015-07-24 | 371SS | 2014-05-25 | 2014-05-25 | 1d | 0d |  |
| 375 | 1.5.9.2.3.2 | Release |  | 2d | 2015-07-24 | 2015-07-27 | 374SS |  |  |  | 21d |  |
| 376 | 1.5.9.2.4 | **Sistema SAC** |  | 2d | 2015-07-24 | 2015-07-27 |  | 2014-05-12 | 2014-05-16 | 5d | 0d |  |
| 377 | 1.5.9.2.4.1 | Pré-Implantação |  | 1d | 2015-07-24 | 2015-07-24 | 374SS | 2014-05-25 | 2014-05-25 | 1d | 0d |  |
| 378 | 1.5.9.2.4.2 | Release |  | 2d | 2015-07-24 | 2015-07-27 | 377SS |  |  |  | 21d |  |
| 379 | 1.5.9.2.5 | **Sistema ARBOR** |  | 2d | 2015-07-17 | 2015-07-20 |  | 2014-05-12 | 2014-05-16 | 5d | 0d |  |
| 380 | 1.5.9.2.5.1 | Pré-Implantação |  | 1d | 2015-07-17 | 2015-07-17 |  | 2014-05-25 | 2014-05-25 | 1d | 0d | start no earlier than 2015-07-17 |
| 381 | 1.5.9.2.5.2 | Release |  | 2d | 2015-07-17 | 2015-07-20 | 380SS |  |  |  | 26d |  |
| 382 | 1.5.9.3 | **IBM** |  | 1d | 2015-07-14 | 2015-07-14 |  |  |  |  | 0d |  |
| 383 | 1.5.9.3.1 | Implantar SFA |  | 1d | 2015-07-14 | 2015-07-14 |  |  |  |  | 0d | start no earlier than 2015-07-14 |
| 384 | 1.5.9.3.2 | Implantar Geneva |  | 1d | 2015-07-14 | 2015-07-14 | 383SS |  |  |  | 30d |  |
| 385 | 1.5.10 | Demanda 84710 - Upgrade PI - Grupo 1 e 2 Implantada | milestone | 0d | 2015-08-24 | 2015-08-24 | 363 | 2015-08-06 | 2015-08-06 | 0d | 0d |  |
| 386 | 1.6 | **PÓS-PRODUÇÃO** |  | 22d | 2015-08-25 | 2015-09-24 |  |  |  |  | 0d |  |
| 387 | 1.6.1 | **Rollout** |  | 20d | 2015-08-25 | 2015-09-22 |  | 2015-08-07 | 2015-09-03 | 20d | 0d |  |
| 388 | 1.6.1.1 | Acompanhar Produção RAID (WEDO) |  | 20d | 2015-08-25 | 2015-09-22 | 365 | 2015-08-07 | 2015-09-03 | 20d | 0d |  |
| 389 | 1.6.1.2 | **Testes de Performance RAID** |  | 12d | 2015-08-25 | 2015-09-10 |  | 2015-07-02 | 2015-07-17 | 12d | 0d |  |
| 390 | 1.6.1.2.1 | Migrar Fluxos para ambiente de Produção |  | 5d | 2015-08-25 | 2015-08-31 | 365 | 2015-07-02 | 2015-07-08 | 5d | 0d |  |
| 391 | 1.6.1.2.2 | Realizar Testes de Performance |  | 5d | 2015-09-01 | 2015-09-08 | 390 | 2015-07-09 | 2015-07-15 | 5d | 0d |  |
| 392 | 1.6.1.2.3 | Gerar relatório de Performance |  | 1d | 2015-09-08 | 2015-09-08 | 391FF | 2015-07-15 | 2015-07-15 | 1d | 0d |  |
| 393 | 1.6.1.2.4 | Validar Evidencias Testes Performance |  | 2d | 2015-09-09 | 2015-09-10 | 392 | 2015-07-16 | 2015-07-17 | 2d | 0d |  |
| 394 | 1.6.1.2.5 | Aprovar Testes de Perfomance |  | 1d | 2015-09-10 | 2015-09-10 | 393FF | 2015-07-17 | 2015-07-17 | 1d | 0d |  |
| 395 | 1.6.1.2.6 | Testes de Performance Finalizado | milestone | 0d | 2015-09-10 | 2015-09-10 | 394 | 2015-07-17 | 2015-07-17 | 0d | 0d |  |
| 396 | 1.6.2 | **Fecho do Projeto** |  | 2d | 2015-09-23 | 2015-09-24 |  | 2015-09-04 | 2015-09-07 | 2d | 0d |  |
| 397 | 1.6.2.1 | Gerar termo de Aceitação final do Projeto |  | 1d | 2015-09-23 | 2015-09-23 | 388 | 2015-09-04 | 2015-09-04 | 1d | 0d |  |
| 398 | 1.6.2.2 | Gerar Inquerito Satisfação do projeto |  | 1d | 2015-09-23 | 2015-09-23 | 397FF | 2015-09-04 | 2015-09-04 | 1d | 0d |  |
| 399 | 1.6.2.3 | Assinar Termo de Aceitação Final do Projeto |  | 1d | 2015-09-24 | 2015-09-24 | 398 | 2015-09-07 | 2015-09-07 | 1d | 0d |  |
| 400 | 1.6.2.4 | Preencher Inquerito de Satisfação do projetos |  | 1d | 2015-09-23 | 2015-09-23 | 398FF | 2015-09-04 | 2015-09-04 | 1d | 0d |  |
| 401 | 1.7 | Projeto Finalizado | milestone | 0d | 2015-09-23 | 2015-09-23 | 400 | 2015-09-04 | 2015-09-04 | 0d | 0d |  |

Notes:
- 373: Text3: [28]UID=RNO-RQHG)\=D>/1^JYOR`10P[15]PUN=PRJ00000709[9]TUID=1158[12]PUID=5068023
- 374: Text3: [28]UID=RNVQS_/9A]KD&^TF/TP1SKO0[15]PUN=PRJ00000709[9]TUID=1159[12]PUID=5068023
- 375: Text3: [28]UID=RN(A3>'O<)H42GS1KTJRU4S`[15]PUN=PRJ00000709[9]TUID=1160[12]PUID=5068023
- 376: Text3: [28]UID=RN\C_R+ZRBWDFY`YP_%`?\>@[15]PUN=PRJ00000709[9]TUID=1161[12]PUID=5068023
- 377: Text3: [28]UID=RNX36Y&W+_&T"-R8"L+BVA$0[15]PUN=PRJ00000709[9]TUID=1162[12]PUID=5068023
- 378: Text3: [28]UID=RNER,G"[GO\4FA_3BN8EIN?@[15]PUN=PRJ00000709[9]TUID=1163[12]PUID=5068023
- 379: Text3: [28]UID=RNYQ]$@=NII$N1<'9HK_=J4`[15]PUN=PRJ00000709[9]TUID=1164[12]PUID=5068023
- 380: Text3: [28]UID=RN;EA#[\_G)4JKD>&?&3T)<`[15]PUN=PRJ00000709[9]TUID=1165[12]PUID=5068023
- 381: Text3: [28]UID=RN))CA%,_<G$F)V^5*$7*=F`[15]PUN=PRJ00000709[9]TUID=1166[12]PUID=5068023
- 382: Text3: [28]UID=RNE&RUA3HX^D*HI7*"AM[ND@[15]PUN=PRJ00000709[9]TUID=1167[12]PUID=5068023
- 383: Text3: [28]UID=RNFBVH/#>EHT^%D"S,ED*,`P[15]PUN=PRJ00000709[9]TUID=1168[12]PUID=5068023
- 384: Text3: [28]UID=RN0G;G"FS.JDJ):7AD+H,-JP[15]PUN=PRJ00000709[9]TUID=1169[12]PUID=5068023
- 385: Text3: [28]UID=RN@R4FJZLU]$:R<'7;>%@ZMP[15]PUN=PRJ00000709[9]TUID=1170[12]PUID=5068023
- 386: Text3: [28]UID=RNKZYWEP<Y%T"CI!W/D^I0GP[15]PUN=PRJ00000709[9]TUID=1171[12]PUID=5068023
- 387: Text3: [28]UID=RN7>W[0>307DRT46"1V>[6/0[15]PUN=PRJ00000709[9]TUID=1172[12]PUID=5068023
- 388: Text3: [28]UID=RN5&K&7,YK($F^6E3[=,H+;P[15]PUN=PRJ00000709[9]TUID=1173[12]PUID=5068023
- 389: Text3: [28]UID=RN+7!P*YJ*VT&SN)VZ@06MQ@[15]PUN=PRJ00000709[9]TUID=1117[12]PUID=5068023
- 390: Text3: [28]UID=RN^WLQ6>:L\TJNE9!CL]M^P@[15]PUN=PRJ00000709[9]TUID=1118[12]PUID=5068023
- 391: [21/01/2015 22:43:38 (5161048)] / TEstes de Performance devem ser realizados já no ambiente do RAID 7 de produção. / [21/01/2015 22:43:38 (5161049)] / A Expectativa é que a OI entregue os arquivos em ambiente de produçao para execução dos testes. / Adicionar observações aqui: / Text3: [28]UID=RN>B>49#ZMMT*--RJ,F;ILL@[15]PUN=PRJ00000709[9]TUID=1119[12]PUID=5068023
- 392: Text3: [28]UID=RNW=@)A05(O4NKZG<]W#(9;0[15]PUN=PRJ00000709[9]TUID=1120[12]PUID=5068023
- 393: Text3: [28]UID=RN^@$RM(V$!4..E7W?8$C.J`[15]PUN=PRJ00000709[9]TUID=1121[12]PUID=5068023
- 394: Text3: [28]UID=RN%D(D)J&A5T^&'5[^4I?RDP[15]PUN=PRJ00000709[9]TUID=1122[12]PUID=5068023
- 395: Text3: [28]UID=RN!QN<-7):P$>H_8B6(%D+L0[15]PUN=PRJ00000709[9]TUID=1123[12]PUID=5068023
- 396: Text3: [28]UID=RN>E7$A:$K+DBW1''47AYP2P[15]PUN=PRJ00000709[9]TUID=1174[12]PUID=5068023
- 397: Text3: [28]UID=RN2A^N+ZT]ZT2:7A_3>SOP!0[15]PUN=PRJ00000709[9]TUID=1175[12]PUID=5068023
- 398: Text3: [28]UID=RN(D:4CT`^A$B?_*VCT`*Z<P[15]PUN=PRJ00000709[9]TUID=1176[12]PUID=5068023
- 399: Text3: [28]UID=RN[^TH$25OJD"Y;A:N)T6U.P[15]PUN=PRJ00000709[9]TUID=1177[12]PUID=5068023
- 400: Text3: [28]UID=RNKKM,,I&O(D>(Z*A172RC_`[15]PUN=PRJ00000709[9]TUID=1178[12]PUID=5068023
- 401: Text3: [28]UID=RN9TSS1(P!KTR:/_U\3F"'+P[15]PUN=PRJ00000709[9]TUID=1179[12]PUID=5068023
