# STI 84200 - Vanilla - Projeto Sinergia OI-PT RA-Infra - Ambiente Desenvolvimento

Schedule from MS Project, 2014-02-04 to 2014-05-07, A marks actual dates.

## Calendars

- Padrão: Mon-Fri 09:00-12:00, 13:00-18:00; Sat-Sun off. Exceptions (off unless hours are given): 2014-03-03 to 2014-03-05 (Carnaval), 2014-04-18 (Sexta-Feira da paixão), 2014-04-21 (Feriado Nacional - Tiradentes), 2014-04-23 (Feriado Regional RJ - São Jorge), 2014-05-01 to 2014-05-02 (Dia do Trabalhador e dia ponte).

## Resources

| Resource |
| --- |
| Integração de Infra |
| PCP Operação |
| Controle de Ativos |
| Suporte Unix |
| Suporte Windows |
| Suporte Storage |
| Suporte BD |
| Suporte Web |
| Suporte Mainframe |
| ITOC |
| Segurança da Informação |
| PCP Backup |
| Rede Corporativa |
| Planejamento de Capacidade |
| Planejamento de Disponibilidade |
| Suporte Intel (VMWARE) |
| Adm DC |
| Implantação |
| N/A |
| Integração CMDB |
| LÍder Integração |
| Integrador |
| Responsáveis Técnicos |
| PMO |
| Solicitante |
| Suporte Teradata |
| Identidade Digital |
| PCP Transmissão |
| PFTI |
| Parollo |
| Parolo |
| Lyra |
| Sinesio |
| Julio |
| Felippe Santos |
| Julio Silva |
| Dimas Andrade |
| Implantacao |
| CCO |
| Luciana |
| Integração |
| Augusto |
| Frossard |

## Schedule

| ID | WBS | Task | Type | Duration | Start | Finish | Predecessors | Complete | Remaining | Total slack | Resources | Work | Actual work |
| --- | --- | --- | --- | --- | --- | --- | --- | --- | --- | --- | --- | --- | --- |
| 1 | 1 | **Plano** |  | 5d | 2014-02-04 A | 2014-02-10 A |  | 100% |  |  |  | 80h | 80h |
| 2 | 1.1 | Validação da documentação |  | 2d | 2014-02-04 A | 2014-02-05 A |  | 100% |  |  | Parolo; Lyra | 32h | 32h |
| 3 | 1.2 | **Demanda Complexa** |  | 3d | 2014-02-06 A | 2014-02-10 A |  | 100% |  |  |  | 48h | 48h |
| 4 | 1.2.1 | Validação/ Qualificação Demanda Complexa |  | 0.5d | 2014-02-06 A | 2014-02-06 A | 2 | 100% |  |  | Parolo; Lyra | 8h | 8h |
| 5 | 1.2.2 | Planejamento do Estudo Demanda Complexa |  | 2.5d | 2014-02-06 A | 2014-02-10 A | 4 | 100% |  |  | Parolo; Lyra | 40h | 40h |
| 6 | 2 | **Desenho da Solução** |  | 9d | 2014-02-11 A | 2014-02-21 A |  | 100% |  |  |  | 136h | 136h |
| 7 | 2.1 | **Demanda Complexa** |  | 9d | 2014-02-11 A | 2014-02-21 A |  | 100% |  |  |  | 136h | 136h |
| 8 | 2.1.1 | Elaboração do Estudo Demanda Complexa |  | 2d | 2014-02-11 A | 2014-02-12 A | 1 | 100% |  |  | Parolo; Lyra | 32h | 32h |
| 9 | 2.1.2 | Solicitação de Sizing e/ou OG |  | 3d | 2014-02-14 A | 2014-02-18 A | 8SS+3d | 100% |  |  | Sinesio; Julio | 48h | 48h |
| 10 | 2.1.3 | Validação do Estudo DC - Responsáveis Técnicos |  | 3d | 2014-02-13 A | 2014-02-17 A | 8 | 100% |  |  | Responsáveis Técnicos | 24h | 24h |
| 11 | 2.1.4 | Validação do Estudo DC - Solicitante |  | 4d | 2014-02-18 A | 2014-02-21 A | 10 | 100% |  |  | Felippe Santos | 32h | 32h |
| 12 | 3 | **Aprovação Financeira** |  | 0d | 2014-02-21 A | 2014-02-21 A |  | 100% |  |  |  |  |  |
| 13 | 3.1 | Preenchimento e envio da ficha financeira | milestone | 0d | 2014-02-21 A | 2014-02-21 A | 6 | 100% |  |  | Julio; Augusto |  |  |
| 14 | 3.2 | Comitê de investimento - pegar esta data com o solicitante/PMO/PFTI | milestone | 0d | 2014-02-21 A | 2014-02-21 A | 13 | 100% |  |  |  |  |  |
| 15 | 4 | **Planejamento** |  | 12d | 2014-02-24 A | 2014-03-14 | 12 | 86% | 1.62d | 32.5d |  | 216h | 182h |
| 16 | 4.1 | Pré-Cadastramento dos ICs (Servidor Lógico, Banco de Dados, Instância BD, Application, URL) no CMDB |  | 1d | 2014-02-24 A | 2014-02-24 A |  | 100% |  |  | Julio | 8h | 8h |
| 17 | 4.2 | **ARS Filhos Obtenção de Recursos** |  | 2d | 2014-02-25 A | 2014-02-26 A | 16 | 100% |  |  |  | 112h | 112h |
| 18 | 4.2.1 | Solicitação p/ Reserva/alocação de Servidores Virtuais (VMWARE) |  | 2d | 2014-02-25 A | 2014-02-26 A |  | 100% |  |  | Suporte Windows | 16h | 16h |
| 19 | 4.2.2 | Solicitação p/ Reserva/alocação de espaço em disco - Storage (exceto Teradata) |  | 2d | 2014-02-25 A | 2014-02-26 A |  | 100% |  |  | Planejamento de Disponibilidade | 16h | 16h |
| 20 | 4.2.3 | Solicitação p/ Reserva/alocação de Servidor Compartilhado de Banco de Dados |  | 2d | 2014-02-25 A | 2014-02-26 A |  | 100% |  |  | Suporte BD | 16h | 16h |
| 21 | 4.2.4 | Solicitação p/ Reserva/alocação de Servidor Compartilhado para Application ou Web Server |  | 2d | 2014-02-25 A | 2014-02-26 A |  | 100% |  |  | Suporte Web | 16h | 16h |
| 22 | 4.2.5 | Solicitação p/ Reserva/alocação de IP - EXCETO para servidores a serem instalados no SCN |  | 2d | 2014-02-25 A | 2014-02-26 A |  | 100% |  |  | Rede Corporativa | 16h | 16h |
| 23 | 4.2.6 | Solicitação p/ Reserva/alocação de Portas SAN e/ou HBAs (R1) |  | 2d | 2014-02-25 A | 2014-02-26 A |  | 100% |  |  | Suporte Storage | 16h | 16h |
| 24 | 4.2.7 | Solicitação de licença de software |  | 2d | 2014-02-25 A | 2014-02-26 A |  | 100% |  |  | Controle de Ativos | 16h | 16h |

Notes:
- 2: Verificar todos os documentos anexados no STI para iniciar o entendimento da necessidade a ser atendida: / Check-list de envolvimento de Infra - obrigatório / Visão Gráfica da Solução - obrigatório / Macro estimativa da DIEO - opcional (somente para projetos que foram priorizados via comite e que tenha solicitado a M.E p/ nossa equipe) / Documento de Solicitação de Infraestrutura (core) - opcional
- 9: INFRA ESTRUTURA / PLANEJAMENTO DE CAPACIDADE / ORDEM DE GRANDEZA / INFRAESTRUTURA DE TI / NAO SE APLICA / NAO SE APLICA - Atividade Recorrente / Sev: 4 / OI_PLAN_CAPACIDADE
- 18: INFRA ESTRUTURA / SUPORTE SERVIDORES WINDOWS / SERVIDOR VMWARE ESX / DESIGNAR SERVIDOR FISICO / DATASTORE / DF SP AC RO MT TO GO MS PR RS / MS42 - Atividade Recorrente / Sev: 4 / INFRA ESTRUTURA / SUPORTE SERVIDORES WINDOWS / SERVIDOR VMWARE ESX / DESIGNAR SERVIDOR FISICO / DATASTORE / MG RJ ES AM RO AP PA MA CE PI BA SE AL PE PB / MS42 - Atividade Recorrente / Sev: 4 / INFRA_SUP_WINDOWS
- 19: INFRA ESTRUTURA / PLANEJAMENTO DE DISPONIBILIDADE / RESERVA DE RECURSOS / STORAGE / NAO SE APLICA / NAO SE APLICA - Atividade Recorrente / Sev: 4 / OI_PLAN_DISP_CONT
- 22: INFRA ESTRUTURA / REDE CORPORATIVA / SOLICITACAO DE IP FIXO / DATACENTER / DATACENTER / REG1 - Atividade Recorrente / Sev: 4 / INFRA_SUP_REDE / INFRA ESTRUTURA / REDE CORPORATIVA / SOLICITACAO DE IP FIXO / DATACENTER / DATACENTER / REG2 - Atividade Recorrente / Sev: 4 / INFRA_SUP_REDE_FABRICA
- 23: INFRA ESTRUTURA / STORAGE / SWITCH/DIRECTOR SAN / ALOCACAO / PORTA / MS51 / INFRA_SUP_STORAGE
- 24: INFRA ESTRUTURA / LIBERACAO DE LICENCA PARA SERVIDORES / ATIVACAO / SOFTWARE DE USO CONTROLADO / NAO SE APLICA / NAO SE APLICA - Atividade Implantação / Sev: 4 / CONTROLE_ATIVOS_NIVEL2

| ID | WBS | Task | Duration | Start | Finish | Predecessors | Complete | Remaining | Total slack | Free slack | Resources | Work | Actual work |
| --- | --- | --- | --- | --- | --- | --- | --- | --- | --- | --- | --- | --- | --- |
| 25 | 4.3 | **Cronograma** | 5d | 2014-02-27 A | 2014-03-10 A |  | 100% |  |  |  |  | 56h | 56h |
| 26 | 4.3.1 | **Demanda Complexa** | 5d | 2014-02-27 A | 2014-03-10 A |  | 100% |  |  |  |  | 56h | 56h |
| 27 | 4.3.1.1 | Elaboração do Cronograma | 3d | 2014-02-27 A | 2014-03-06 A | 18 | 100% |  |  |  | Julio Silva | 24h | 24h |
| 28 | 4.3.1.2 | Aprovar Cronograma Infra | 1d | 2014-03-07 A | 2014-03-07 A | 27 | 100% |  |  |  | Dimas Andrade; Julio Silva | 16h | 16h |
| 29 | 4.3.1.3 | Aprovar Cronograma Solicitante | 1d | 2014-03-10 A | 2014-03-10 A | 28 | 100% |  |  |  | Augusto; Frossard | 16h | 16h |
| 30 | 4.4 | **Especificação Técnica (ET)** | 4d | 2014-03-11 A | 2014-03-14 |  | 19% | 3.25d | 32.5d |  |  | 40h | 6h |
| 31 | 4.4.1 | **Demanda Complexa** | 4d | 2014-03-11 A | 2014-03-14 |  | 19% | 3.25d | 32.5d |  |  | 40h | 6h |
| 32 | 4.4.1.1 | Elaboração da ET | 1d | 2014-03-11 A | 2014-03-11 | 26 | 75% | 0.25d | 32.5d | 0d | Julio Silva | 8h | 6h |
| 33 | 4.4.1.2 | Aprovar ET Infra | 2d | 2014-03-12 | 2014-03-13 | 32 |  |  | 32.5d | 0d | Dimas Andrade | 16h |  |
| 34 | 4.4.1.3 | Aprovar ET Solicitante | 1d | 2014-03-14 | 2014-03-14 | 33 |  |  | 32.5d |  | Augusto; Frossard | 16h |  |
| 35 | 5 | **Acessos Usuários/ Regras de Firewall** | 12.5d | 2014-02-27 A | 2014-03-20 | 17 | 80% | 2.5d | 29d |  |  | 280h | 220h |
| 36 | 5.1 | Solicitar criação dos usuários para acesso aos servidores R2 | 10d | 2014-02-27 A | 2014-03-20 | 16 | 75% | 2.5d | 29d |  | Augusto; Frossard | 80h | 60h |
| 37 | 5.2 | Solicitar liberação de regras de firewall para aplicação | 5d | 2014-02-27 A | 2014-03-20 | 16 | 75% | 1.25d | 29d |  | Augusto; Frossard | 80h | 60h |
| 38 | 5.3 | Inclusão do Servidor Unix/ Linux no FANOUT | 5d | 2014-02-27 A | 2014-03-10 A | 16 | 100% |  |  |  | Identidade Digital | 40h | 40h |
| 39 | 5.4 | Solicitar liberação de regras de firewall necessárias paras os times de infraestrutura | 5d | 2014-02-27 A | 2014-03-20 | 16 | 75% | 1.25d | 29d |  | Augusto; Frossard | 80h | 60h |
| 40 | 6 | **Executar configuração (física/ lógica)** | 29d | 2014-02-27 A | 2014-04-11 |  | 47% | 15.32d | 1d |  |  | 632h | 260h |
| 41 | 6.1 | **ARS Filhos Instalação/ Configuração - Ambiente: DEV - Camada: APLICAÇÃO Servidor(es): RAPDX01 e RAUDX01** | 26d | 2014-02-27 A | 2014-04-08 | 17 | 50% | 13d | 4d |  |  | 288h | 128h |
| 42 | 6.1.1 | Abertura dos ARSs Filhos | 4d | 2014-02-27 A | 2014-03-07 A |  | 100% |  |  |  | Luciana | 32h | 32h |
| 43 | 6.1.2 | **Entrega Parcial** | 12d | 2014-03-10 A | 2014-03-25 | 42 | 75% | 3d | 4d | 0d |  | 128h | 96h |
| 44 | 6.1.2.1 | **Instalação de servidor virtual** | 4d | 2014-03-10 A | 2014-03-13 A | 42 | 100% |  |  |  |  | 32h | 32h |
| 45 | 6.1.2.1.1 | Criação de estrutura de maquina virtual diferente de Windows (R2) | 2d | 2014-03-10 A | 2014-03-11 A |  | 100% |  |  |  | Suporte Windows | 16h | 16h |
| 46 | 6.1.2.1.2 | Instalação do s.o. Linux (R2) | 2d | 2014-03-12 A | 2014-03-13 A | 45 | 100% |  |  |  | Suporte Unix | 16h | 16h |
| 47 | 6.1.2.2 | **Criação de partições/ filesystems e usuários** | 2d | 2014-03-14 A | 2014-03-17 A | 42 | 100% |  |  |  |  | 16h | 16h |
| 48 | 6.1.2.2.1 | Criação de filesystems e usuários Unix/Linux (R2) | 2d | 2014-03-14 A | 2014-03-17 A | 46 | 100% |  |  |  | Suporte Unix | 16h | 16h |

Notes:
- 38: INFRA ESTRUTURA / IDENTIDADE DIGITAL / IDENTITY MANAGER / SOLICITACAO / FANOUT / EXCLUSAO DE GRUPO - Atividade Recorrente / Sev: 4 / INFRA ESTRUTURA / IDENTIDADE DIGITAL / IDENTITY MANAGER / SOLICITACAO / FANOUT / EXCLUSAO DE PLATAFORMA - Atividade Recorrente / Sev: 4 / INFRA ESTRUTURA / IDENTIDADE DIGITAL / IDENTITY MANAGER / SOLICITACAO / FANOUT / INCLUSAO DE PLATAFORMA E GRUPO PADRAO - Atividade Recorrente / Sev: 4 / OPERACAO_SIS_ID_DIGITAL / É permitido o aprovisionamento de 10 maquinas por chamado.
- 45: INFRA ESTRUTURA / SUPORTE SERVIDORES WINDOWS / SISTEMA OPERACIONAL / CRIAR ESTRUTURA DE MAQUINA VIRTUAL LINUX /UNIX / DF SP AC RO MT TO GO MS PR RS / SI42 / INFRA_SUP_WINDOWS_FABRICA
- 46: INFRA ESTRUTURA / SUPORTE UNIX RII / PROJETO / SERVIDOR SISTEMA OPERACIONAL / INSTALAR / INFRA_SUP_UNIX_FABRICA
- 48: INFRA ESTRUTURA / SUPORTE UNIX RII / PROJETO / SERVIDOR FILESYSTEM / CRIAR / INFRA ESTRUTURA / SUPORTE UNIX RII / PROJETO / ACESSO USUARIO / CRIAR / INFRA ESTRUTRUA / SUPORTE UNIX RII / PROJETO / ACESSO GRUPO / CRIAR / INFRA_SUP_UNIX_FABRICA

| ID | WBS | Task | Duration | Start | Finish | Predecessors | Complete | Remaining | Total slack | Free slack | Resources | Work | Actual work |
| --- | --- | --- | --- | --- | --- | --- | --- | --- | --- | --- | --- | --- | --- |
| 49 | 6.1.2.3 | **Instalação/ Configuração de Oracle Client 11g** | 2d | 2014-03-18 A | 2014-03-19 A | 42 | 100% |  |  |  |  | 16h | 16h |
| 50 | 6.1.2.3.1 | Instalação de cliente Oracle Client 11g | 2d | 2014-03-18 A | 2014-03-19 A | 44, 47 | 100% |  |  |  | Suporte BD | 16h | 16h |
| 51 | 6.1.2.4 | **Implementação de Backup** | 4d | 2014-03-18 A | 2014-03-21 | 44, 47 | 50% | 2d | 6d |  |  | 32h | 16h |
| 52 | 6.1.2.4.1 | Implementação de Backup R2 | 4d | 2014-03-18 A | 2014-03-21 |  | 50% | 2d | 6d |  | PCP Backup | 32h | 16h |
| 53 | 6.1.2.5 | **Implementação de Monitoração** | 4d | 2014-03-20 A | 2014-03-25 | 44, 47, 49 | 50% | 2d | 4d |  |  | 32h | 16h |
| 54 | 6.1.2.5.1 | Implementação de Monitoração R2 | 4d | 2014-03-20 A | 2014-03-25 |  | 50% | 2d | 4d |  | CCO | 32h | 16h |
| 55 | 6.1.3 | **Validação/ Aceite da Entrega Parcial Ambiente: DEV - Camada: APLICAÇÃO Servidor(es): RAUPDX01 e RAUDX01** | 2d | 2014-03-26 | 2014-03-27 | 43 |  |  | 12d |  |  | 32h |  |
| 56 | 6.1.3.1 | Validação/ Aceite da Entrega Parcial Ambiente | 1d | 2014-03-26 | 2014-03-26 |  |  |  | 12d | 0d | Augusto; Frossard | 16h |  |
| 57 | 6.1.3.2 | Aceite da Entrega Parcial | 1d | 2014-03-27 | 2014-03-27 | 56 |  |  | 12d |  | Augusto; Frossard | 16h |  |
| 58 | 6.1.4 | **Entrega Final** | 8d | 2014-03-26 | 2014-04-04 | 43 |  |  | 4d | 0d |  | 64h |  |
| 59 | 6.1.4.1 | **Certificação da Implantação** | 8d | 2014-03-26 | 2014-04-04 |  |  |  | 4d |  |  | 64h |  |
| 60 | 6.1.4.1.1 | Certificação da Implantação R2 | 8d | 2014-03-26 | 2014-04-04 | 49 |  |  | 4d | 0d | Segurança da Informação | 64h |  |
| 61 | 6.1.5 | **Validação/Aceite da Entrega Final Ambiente: DEV - Camada: APLICAÇÃO Servidor(es): RADPDX01 e RAUDX01** | 2d | 2014-04-07 | 2014-04-08 | 58 |  |  | 4d |  |  | 32h |  |
| 62 | 6.1.5.1 | Validação/ Aceite da Entrega Final Ambiente | 1d | 2014-04-07 | 2014-04-07 | 60 |  |  | 4d | 0d | Augusto; Frossard | 16h |  |
| 63 | 6.1.5.2 | Aceite da Entrega Final | 1d | 2014-04-08 | 2014-04-08 | 62 |  |  | 4d |  | Augusto; Frossard | 16h |  |
| 64 | 6.2 | **ARS Filhos Instalação/ Configuração - Ambiente: DEV - Camada: BANCO DE DADOS Servidor(es): ORAHX02A, ORAHX02B - BD: RAPDEV01 e RAUDEV01** | 29d | 2014-02-27 A | 2014-04-11 |  | 45% | 15.99d | 1d |  |  | 344h | 132h |
| 65 | 6.2.1 | Abertura dos ARSs Filhos | 4d | 2014-02-27 A | 2014-03-07 A | 17 | 100% |  |  |  | Luciana | 32h | 32h |
| 66 | 6.2.2 | **Entrega Parcial** | 15d | 2014-03-10 A | 2014-03-28 | 65 | 61% | 5.8d | 0d |  |  | 168h | 100h |
| 67 | 6.2.2.1 | **Configurção em Servidor Físico** | 3d | 2014-03-10 A | 2014-03-12 A | 65 | 100% |  |  |  |  | 24h | 24h |
| 68 | 6.2.2.1.1 | Criação de estrutura de maquina virtual diferente de Windows (R2) | 1d | 2014-03-10 A | 2014-03-10 A |  | 100% |  |  |  | Suporte Windows | 8h | 8h |
| 69 | 6.2.2.1.2 | Instalação do s.o. Linux (R2) | 2d | 2014-03-11 A | 2014-03-12 A | 68 | 100% |  |  |  | Suporte Unix | 16h | 16h |
| 70 | 6.2.2.2 | **Criação de partições/ filesystems e usuários** | 2d | 2014-03-13 A | 2014-03-14 A | 65 | 100% |  |  |  |  | 16h | 16h |
| 71 | 6.2.2.2.1 | Criação de filesystems e usuários Unix/Linux (R2) | 2d | 2014-03-13 A | 2014-03-14 A | 69 | 100% |  |  |  | Suporte Unix | 16h | 16h |
| 72 | 6.2.2.3 | **Instalação/ Configuração de banco de dados** | 8d | 2014-03-13 A | 2014-03-24 | 65, 67 | 50% | 4d | 0d |  |  | 64h | 28h |
| 73 | 6.2.2.3.1 | Instalação de Oracle Clusterware (Oracle RAC) | 1d | 2014-03-13 A | 2014-03-13 A |  | 100% |  |  |  | Suporte BD | 8h | 8h |
| 74 | 6.2.2.3.2 | Instalação de binário | 2d | 2014-03-14 A | 2014-03-17 A | 73 | 100% |  |  |  | Suporte BD | 16h | 16h |
| 75 | 6.2.2.3.3 | Criação de instância / banco | 1d | 2014-03-18 A | 2014-03-18 | 74 | 50% | 0.5d | 0d |  | Suporte BD | 8h | 4h |
| 76 | 6.2.2.3.4 | Criação de schema (somente BD Oracle) | 1d | 2014-03-18 A | 2014-03-18 A | 74 | 100% |  |  |  |  |  |  |
| 77 | 6.2.2.3.5 | Implementação de Backup de Banco de Dados R2 | 4d | 2014-03-19 | 2014-03-24 | 73, 74, 75 |  |  | 0d |  | PCP Backup | 32h |  |

Notes:
- 50: INFRA ESTRUTURA / SUPORTE SYBASE / CLIENT / SYBASE / INSTALAR / PROJETO - Atividade Implantação / Sev: 4 / OI_FABRICA_3CON_SQLSERVER / INFRA ESTRUTURA / SUPORTE SQL SERVER / CLIENT / SQL / INSTALAR / PROJETO - Atividade Implantação / Sev: 4 / OI_FABRICA_3CON_SQLSERVER / INFRA ESTRUTURA / SUPORTE ORACLE / SOFTWARE CLIENT / INSTALAR/ATUALIZAR / NAO PRODUCAO / NAO SE APLICA - Atividade Recorrente / Sev: 4 / OI_FABRICA_3CON_ORACLE / INFRA ESTRUTURA / SUPORTE ORACLE / SOFTWARE CLIENT / INSTALAR/ATUALIZAR / PRODUCAO / NAO SE APLICA - Atividade Recorrente / Sev: 4 / OI_FABRICA_3CON_ORACLE / INFRA ESTRUTURA / SUPORTE MYSQL / CLIENT / MYSQL / INSTALAR / PROJETO - Atividade Implantação / Sev: 4 / OI_FABRICA_3CON_SQLSERVER / INFRA ESTRUTURA / TERADATA / BANCO DE DADOS / DW / INSTALACAO / CLIENT / TOOLS - Atividade Recorrente / Sev: 4 / INFRA_SUP_TERADATA
- 52: INFRA ESTRUTURA / BACKUP / IMPLANTACAO / NETBACKUP / CORPORATIVO / NAO SE APLICA - Atividade Implantação / Sev: 4 (OI_IMPLATACAO_BACKUP_FABRICA) / INFRA ESTRUTURA / BACKUP / IMPLANTACAO / TSM / CORPORATIVO / NAO SE APLICA - Atividade Implantação / Sev: 4 (OI_IMPLATACAO_BACKUP_FABRICA)
- 54: INFRA ESTRUTURA / MONITORACAO / IMPLANTACAO / ADICAO MONITORACAO UNIX/LINUX / NAO SE APLICA / NAO SE APLICA / INFRA ESTRUTURA / MONITORACAO / IMPLANTACAO / ADICAO MONITORACAO WINDOWS / NAO SE APLICA / NAO SE APLICA / - Atividade Recorrente / Sev: 4 / CONTROLE_ATIVOS_NIVEL2 (posteriormente será redesignado para o grupo executor da atividade)
- 60: A atividade de certificação da implantação ocorre da seguinte forma: / 1 - Coleta das informações ocorre sempre as segunda-feiras / 2 - Resultado da análise dos dados coletados que ocorre sempre as quinta-feiras / Desta forma o prazo de 8 dias reflete o pior cenário, isto é um ARS sendo aberto em uma terça-feira para ser concuído na quinta-feira da semana seguinte. / Este prazo deverá ser ajustado sempre que necessário, tanto o inicio da atividade, quando a duração da mesma. / SEGURANCA DA INFORMACAO / TECNOLOGIA / PROJETO PROTEUS / PARECER DE SEGURANCA / CERTIFICACAO / SERVIDORES TI BD - Atividade Recorrente / Sev: 4 / SEGURANCA DA INFORMACAO / TECNOLOGIA / PROJETO PROTEUS / PARECER DE SEGURANCA / CERTIFICACAO / SERVIDORES TI INFRAWEB - Atividade Recorrente / Sev: 4 / SEGURANCA DA INFORMACAO / TECNOLOGIA / PROJETO PROTEUS / PARECER DE SEGURANCA / CERTIFICACAO / SERVIDORES TI UNIX / LINUX - Atividade Recorrente / Sev: 4 / SEGURANCA DA INFORMACAO / TECNOLOGIA / PROJETO PROTEUS / PARECER DE SEGURANCA / CERTIFICACAO / SERVIDORES TI WINDOWS - Atividade Recorrente / Sev: 4 / SEGURANCA_PROTEUS
- 68: INFRA ESTRUTURA / SUPORTE SERVIDORES WINDOWS / SISTEMA OPERACIONAL / CRIAR ESTRUTURA DE MAQUINA VIRTUAL LINUX /UNIX / DF SP AC RO MT TO GO MS PR RS / SI42 / INFRA_SUP_WINDOWS_FABRICA
- 69: INFRA ESTRUTURA / SUPORTE UNIX RII / PROJETO / SERVIDOR SISTEMA OPERACIONAL / INSTALAR / INFRA_SUP_UNIX_FABRICA
- 71: INFRA ESTRUTURA / SUPORTE UNIX RII / PROJETO / SERVIDOR FILESYSTEM / CRIAR / INFRA ESTRUTURA / SUPORTE UNIX RII / PROJETO / ACESSO USUARIO / CRIAR / INFRA ESTRUTRUA / SUPORTE UNIX RII / PROJETO / ACESSO GRUPO / CRIAR / INFRA_SUP_UNIX_FABRICA
- 73: Usar template para criar no CMDB / INFRA ESTRUTURA / SUPORTE ORACLE / BANCO/INSTANCIA / CRIAR / NAO PRODUCAO / NAO SE APLICA - Atividade Recorrente / Sev: 4 / OI_FABRICA_3CON_ORACLE / INFRA ESTRUTURA / SUPORTE ORACLE / BANCO/INSTANCIA / CRIAR / PRODUCAO / NAO SE APLICA - Atividade Recorrente / Sev: 4 / OI_FABRICA_3CON_ORACLE
- 74: INFRA ESTRUTURA / SUPORTE ORACLE / BANCO/INSTANCIA / CRIAR / NAO PRODUCAO / NAO SE APLICA - Atividade Recorrente / Sev: 4 / OI_FABRICA_3CON_ORACLE / INFRA ESTRUTURA / SUPORTE ORACLE / BANCO/INSTANCIA / CRIAR / PRODUCAO / NAO SE APLICA - Atividade Recorrente / Sev: 4 / OI_FABRICA_3CON_ORACLE / INFRA ESTRUTURA / SUPORTE MYSQL / BANCO / CRIAR / PROJETO / NAO SE APLICA - Atividade Implantação / Sev: 3 / INFRA_SUP_MYSQL / INFRA ESTRUTURA / SUPORTE SYBASE / BANCO / CRIAR / PROJETO / NAO SE APLICA - Atividade Implantação / Sev: 3 / INFRA_SUP_SYBASE / INFRA ESTRUTURA / SUPORTE SQL SERVER / BANCO / CRIAR / PROJETO / NAO SE APLICA - Atividade Implantação / Sev: 3 / INFRA_SUP_SQLSERVER
- 75: INFRA ESTRUTURA / SUPORTE MYSQL / INSTANCIA / INSTALAR / PROJETO / NAO SE APLICA - Atividade Implantação / Sev: 4 / INFRA_SUP_MYSQL / INFRA ESTRUTURA / SUPORTE SYBASE / INSTANCIA / INSTALAR / PROJETO / NAO SE APLICA - Atividade Implantação / Sev: 4 / INFRA_SUP_SYBASE / INFRA ESTRUTURA / SUPORTE SQL SERVER / INSTANCIA / INSTALAR / PROJETO / NAO SE APLICA - Atividade Implantação / Sev: 4 / INFRA_SUP_SQLSERVER / INFRA ESTRUTURA / SUPORTE SQL SERVER / INTEGRATION SERVICES/ INSTANCIA / INSTALAR / PROJETO - Atividade Implantação / Sev: 4 / INFRA_SUP_SQLSERVER / INFRA ESTRUTURA / SUPORTE SQL SERVER / NOTIFICATION SERVICES/ INSTANCIA / INSTALAR / PROJETO - Atividade Implantação / Sev: 4 / INFRA_SUP_SQLSERVER / INFRA ESTRUTURA / SUPORTE SQL SERVER / REPORTING SERVICES/ INSTANCIA / INSTALAR / PROJETO - Atividade Implantação / Sev: 4 / INFRA_SUP_SQLSERVER
- 76: INFRA ESTRUTURA / SUPORTE ORACLE / USUARIO/SCHEMA / CRIAR / NAO PRODUCAO / NAO SE APLICA - Atividade Recorrente / Sev: 4 / INFRA ESTRUTURA / SUPORTE ORACLE / USUARIO/SCHEMA / CRIAR / PRODUCAO / NAO SE APLICA - Atividade Recorrente / Sev: 4 / INFRA_SUP_ORACLE_SERVICO
- 77: INFRA ESTRUTURA / BACKUP / IMPLANTACAO / NETBACKUP / CORPORATIVO / NAO SE APLICA - Atividade Implantação / Sev: 4 (OI_FABRICA_BACKUP_IMPLANTACAO) / INFRA ESTRUTURA / BACKUP / IMPLANTACAO / TSM / CORPORATIVO / NAO SE APLICA - Atividade Implantação / Sev: 4 (OI_FABRICA_BACKUP_IMPLANTACAO)

| ID | WBS | Task | Duration | Start | Finish | Predecessors | Complete | Remaining | Total slack | Free slack | Resources | Work | Actual work |
| --- | --- | --- | --- | --- | --- | --- | --- | --- | --- | --- | --- | --- | --- |
| 78 | 6.2.2.4 | **Implementação de Backup** | 4d | 2014-03-17 A | 2014-03-20 | 67, 70 | 50% | 2d | 6d |  |  | 32h | 16h |
| 79 | 6.2.2.4.1 | Implementação de Backup R2 | 4d | 2014-03-17 A | 2014-03-20 |  | 50% | 2d | 6d |  | PCP Backup | 32h | 16h |
| 80 | 6.2.2.5 | **Implementação de Monitoração** | 4d | 2014-03-25 A | 2014-03-28 | 67, 70, 72 | 50% | 2d | 0d |  |  | 32h | 16h |
| 81 | 6.2.2.5.1 | Implementação de Monitoração R2 | 4d | 2014-03-25 A | 2014-03-28 |  | 50% | 2d | 0d |  | CCO | 32h | 16h |
| 82 | 6.2.3 | **Validação/ Aceite da Entrega Parcial Ambiente: DEV - Camada: BANCO DE DADOS Servidor(es): ORAHX02 A/B; BD: RAPDEV01 e RAUDEV01** | 3d | 2014-03-31 | 2014-04-02 | 66 |  |  | 8d |  |  | 48h |  |
| 83 | 6.2.3.1 | Validação/ Aceite da Entrega Parcial Ambiente | 2d | 2014-03-31 | 2014-04-01 |  |  |  | 8d | 0d | Augusto; Frossard | 32h |  |
| 84 | 6.2.3.2 | Aceite da Entrega Parcial | 1d | 2014-04-02 | 2014-04-02 | 83 |  |  | 8d |  | Augusto; Frossard | 16h |  |
| 85 | 6.2.4 | **Entrega Final** | 8d | 2014-03-31 | 2014-04-09 | 66 |  |  | 0d |  |  | 64h |  |
| 86 | 6.2.4.1 | **Certificação da Implantação** | 8d | 2014-03-31 | 2014-04-09 |  |  |  | 0d |  |  | 64h |  |
| 87 | 6.2.4.1.1 | Certificação da Implantação R2 | 8d | 2014-03-31 | 2014-04-09 | 72 |  |  | 0d |  | Segurança da Informação | 64h |  |
| 88 | 6.2.5 | **Validação/Aceite da Entrega Final Ambiente: DEV - Camada: BANCO DE DADOS Servidor(es): BD: RAPDEV01 e RAUDEV01** | 2d | 2014-04-10 | 2014-04-11 | 85 |  |  | 0d |  |  | 32h |  |
| 89 | 6.2.5.1 | Validação/ Aceite da Entrega Final Ambiente | 1d | 2014-04-10 | 2014-04-10 | 87 |  |  | 0d |  | Augusto; Frossard | 16h |  |
| 90 | 6.2.5.2 | Aceite da Entrega Final | 1d | 2014-04-11 | 2014-04-11 | 89 |  |  | 0d |  | Augusto; Frossard | 16h |  |
| 91 | 7 | **Implementação de Backup de Negócio** | 1d | 2014-04-14 | 2014-04-14 |  |  |  | 0d |  |  |  |  |
| 92 | 7.1 | Implementação de Backup R1 | 1d | 2014-04-14 | 2014-04-14 | 90 |  |  | 0d |  |  |  |  |
| 93 | 8 | Colocar em Produção | 1d | 2014-04-15 | 2014-04-15 | 40, 91 |  |  | 0d |  | Julio Silva; PMO | 16h |  |
| 94 | 9 | **Acompanhamento Pós-Produção** | 10d | 2014-04-16 | 2014-05-06 | 93 |  |  | 0d |  |  | 160h |  |
| 95 | 9.1 | **Solicitação de Operação Assistida** | 10d | 2014-04-16 | 2014-05-06 |  |  |  | 0d |  |  | 160h |  |
| 96 | 9.1.1 | Realização de Operação Assistida | 10d | 2014-04-16 | 2014-05-06 |  |  |  | 0d |  | Julio Silva; Implantacao | 160h |  |
| 97 | 10 | Conclusão | 0.5d | 2014-05-07 | 2014-05-07 | 95 |  |  | 0d |  | PMO; Integração | 8h |  |

Notes:
- 79: INFRA ESTRUTURA / BACKUP / IMPLANTACAO / NETBACKUP / CORPORATIVO / NAO SE APLICA - Atividade Implantação / Sev: 4 (OI_IMPLATACAO_BACKUP_FABRICA) / INFRA ESTRUTURA / BACKUP / IMPLANTACAO / TSM / CORPORATIVO / NAO SE APLICA - Atividade Implantação / Sev: 4 (OI_IMPLATACAO_BACKUP_FABRICA)
- 81: INFRA ESTRUTURA / MONITORACAO / IMPLANTACAO / ADICAO MONITORACAO UNIX/LINUX / NAO SE APLICA / NAO SE APLICA / INFRA ESTRUTURA / MONITORACAO / IMPLANTACAO / ADICAO MONITORACAO WINDOWS / NAO SE APLICA / NAO SE APLICA / - Atividade Recorrente / Sev: 4 / CONTROLE_ATIVOS_NIVEL2 (posteriormente será redesignado para o grupo executor da atividade)
- 87: A atividade de certificação da implantação ocorre da seguinte forma: / 1 - Coleta das informações ocorre sempre as segunda-feiras / 2 - Resultado da análise dos dados coletados que ocorre sempre as quinta-feiras / Desta forma o prazo de 8 dias reflete o pior cenário, isto é um ARS sendo aberto em uma terça-feira para ser concuído na quinta-feira da semana seguinte. / Este prazo deverá ser ajustado sempre que necessário, tanto o inicio da atividade, quando a duração da mesma. / SEGURANCA DA INFORMACAO / TECNOLOGIA / PROJETO PROTEUS / PARECER DE SEGURANCA / CERTIFICACAO / SERVIDORES TI BD - Atividade Recorrente / Sev: 4 / SEGURANCA DA INFORMACAO / TECNOLOGIA / PROJETO PROTEUS / PARECER DE SEGURANCA / CERTIFICACAO / SERVIDORES TI INFRAWEB - Atividade Recorrente / Sev: 4 / SEGURANCA DA INFORMACAO / TECNOLOGIA / PROJETO PROTEUS / PARECER DE SEGURANCA / CERTIFICACAO / SERVIDORES TI UNIX / LINUX - Atividade Recorrente / Sev: 4 / SEGURANCA DA INFORMACAO / TECNOLOGIA / PROJETO PROTEUS / PARECER DE SEGURANCA / CERTIFICACAO / SERVIDORES TI WINDOWS - Atividade Recorrente / Sev: 4 / SEGURANCA_PROTEUS
- 96: INFRA ESTRUTURA/ OPERACOES E AMBIENTES/ PROJETO/ POS IMPLANTACAO/ OPERACAO ASSISTIDA/ QUALIDADE E PROCESSO
