# STI 84200 - Vanilla - Projeto Sinergia OI-PT RA-Infra

Schedule from MS Project, 2014-02-04 to 2015-04-16, A marks actual dates.

## Calendars

- Padrão: Mon-Fri 09:00-12:00, 13:00-18:00; Sat-Sun off. Exceptions (off unless hours are given): 2014-03-03 to 2014-03-05 (Carnaval), 2014-04-18 (Sexta-Feira da paixão), 2014-04-21 (Feriado Nacional - Tiradentes), 2014-04-23 (Feriado Regional RJ - São Jorge), 2014-05-01 to 2014-05-02 (Dia do Trabalhador e dia ponte), 2014-06-19 to 2014-06-20 (Corpus Christi e dia ponte), 2014-08-15 (Feriado Regional BH - Padroeira), 2014-11-20 to 2014-11-21 (Dia ponte e Feriado Regional RJ - Zumbi), 2014-12-22 to 2015-01-02 (Freezing 2014), 2015-01-19 to 2015-01-20 (Dia ponte e Feriado Regional RJ - São Sebastião), 2015-02-16 to 2015-02-18 (Carnaval), 2015-04-03 (Sexta-Feira da Paixão).

## Resources

| Resource |
| --- |
| Integração de Infra |
| PCP Operação |
| Controle de Ativos |
| Suporte Unix |
| Suporte Windows |
| Suporte Storage |
| Suporte BD |
| Suporte Web |
| Suporte Mainframe |
| ITOC |
| Segurança da Informação |
| PCP Backup |
| Rede Corporativa |
| Planejamento de Capacidade |
| Planejamento de Disponibilidade |
| Suporte Intel (VMWARE) |
| Adm DC |
| Implantação |
| N/A |
| Integração CMDB |
| LÍder Integração |
| Integrador |
| Responsáveis Técnicos |
| PMO |
| Solicitante |
| Suporte Teradata |
| Identidade Digital |
| PCP Transmissão |
| PFTI |
| Parollo |
| Parolo |
| Lyra |
| Sinesio |
| Julio |
| Felippe Santos |
| Julio Silva |
| Dimas Andrade |
| Implantacao |
| CCO |
| Luciana |
| Integração |
| Augusto |
| Frossard |
| Leandro Frossard |
| Thais |
| Vanessa |
| Pedro |
| Thasio |
| Vivian |
| DDSA |

## Schedule

| ID | WBS | Task | Duration | Start | Finish | Predecessors | Complete | Remaining | Total slack | Free slack | Resources | Work | Actual work |
| --- | --- | --- | --- | --- | --- | --- | --- | --- | --- | --- | --- | --- | --- |
| 1 | 1 | **Plano** | 5d | 2014-02-04 A | 2014-02-10 A |  | 100% |  |  |  |  | 80h | 80h |
| 2 | 1.1 | Validação da documentação | 2d | 2014-02-04 A | 2014-02-05 A |  | 100% |  |  |  | Parolo; Lyra | 32h | 32h |
| 3 | 1.2 | **Demanda Complexa** | 3d | 2014-02-06 A | 2014-02-10 A |  | 100% |  |  |  |  | 48h | 48h |
| 4 | 1.2.1 | Validação/ Qualificação Demanda Complexa | 0.5d | 2014-02-06 A | 2014-02-06 A | 2 | 100% |  |  |  | Parolo; Lyra | 8h | 8h |
| 5 | 1.2.2 | Planejamento do Estudo Demanda Complexa | 2.5d | 2014-02-06 A | 2014-02-10 A | 4 | 100% |  |  |  | Parolo; Lyra | 40h | 40h |
| 6 | 2 | **Desenho da Solução** | 73d | 2014-02-11 A | 2014-06-03 A |  | 100% |  |  |  |  | 1256h | 1256h |
| 7 | 2.1 | **Demanda Complexa** | 73d | 2014-02-11 A | 2014-06-03 A |  | 100% |  |  |  |  | 1256h | 1256h |
| 8 | 2.1.1 | Elaboração do Estudo Demanda Complexa | 60d | 2014-02-11 A | 2014-05-15 A | 1 | 100% |  |  |  | Parolo; Lyra | 960h | 960h |
| 9 | 2.1.2 | Solicitação de Sizing e Validação de CF | 6d | 2014-05-16 A | 2014-05-23 A | 8 | 100% |  |  |  | Sinesio; Julio; Vanessa; Pedro | 192h | 192h |
| 10 | 2.1.3 | Validação do Estudo DC - Responsáveis Técnicos | 8d | 2014-05-16 A | 2014-05-27 A | 8 | 100% |  |  |  | Responsáveis Técnicos | 64h | 64h |
| 11 | 2.1.4 | Validação do Estudo DC - Solicitante | 5d | 2014-05-28 A | 2014-06-03 A | 10 | 100% |  |  |  | Leandro Frossard | 40h | 40h |
| 12 | 3 | **Aprovação Financeira** | 26d | 2014-05-29 A | 2014-07-07 |  | 23% | 20d | 0d |  |  | 16h | 16h |
| 13 | 3.1 | Preenchimento e envio da ficha financeira | 1d | 2014-05-29 A | 2014-05-29 A | 9 | 100% |  |  |  | Leandro Frossard; Thais | 16h | 16h |
| 14 | 3.2 | Comitê de investimento - pegar esta data com o solicitante/PMO/PFTI | 10d | 2014-05-30 A | 2014-06-12 | 13 | 50% | 5d | 0d |  |  |  |  |
| 15 | 3.3 | Transferência de verba financeira para centro de custo do projeto | 15d | 2014-06-13 | 2014-07-07 | 14 |  |  | 0d |  |  |  |  |
| 16 | 4 | **Planejamento** | 76d | 2014-03-14 A | 2014-07-08 |  | 37% | 47.88d | 202d |  |  | 560h | 199.6h |
| 17 | 4.1 | Pré-Cadastramento dos ICs (Servidor Lógico, Banco de Dados, Instância BD, Application, URL) no CMDB | 2d | 2014-03-14 A | 2014-03-17 | 5FS+20d | 35% | 1.3d | 272.75d | 0d | Julio | 16h | 5.6h |
| 18 | 4.2 | **ARS Filhos Obtenção de Recursos** | 5d | 2014-03-18 A | 2014-03-24 | 17 | 35% | 3.25d | 271d |  |  | 280h | 98h |
| 19 | 4.2.1 | Solicitação p/ Reserva/alocação de Servidores Virtuais (VMWARE) | 5d | 2014-03-18 A | 2014-03-24 |  | 35% | 3.25d | 271d |  | Suporte Windows | 40h | 14h |
| 20 | 4.2.2 | Solicitação p/ Reserva/alocação de espaço em disco - Storage (exceto Teradata) | 5d | 2014-03-18 A | 2014-03-24 |  | 35% | 3.25d | 271d |  | Planejamento de Disponibilidade | 40h | 14h |
| 21 | 4.2.3 | Solicitação p/ Reserva/alocação de Servidor Compartilhado de Banco de Dados | 5d | 2014-03-18 A | 2014-03-24 |  | 35% | 3.25d | 271d |  | Suporte BD | 40h | 14h |
| 22 | 4.2.4 | Solicitação p/ Reserva/alocação de Servidor Compartilhado para Application ou Web Server | 5d | 2014-03-18 A | 2014-03-24 |  | 35% | 3.25d | 271d |  | Suporte Web | 40h | 14h |
| 23 | 4.2.5 | Solicitação p/ Reserva/alocação de IP - EXCETO para servidores a serem instalados no SCN | 5d | 2014-03-18 A | 2014-03-24 |  | 35% | 3.25d | 271d |  | Rede Corporativa | 40h | 14h |
| 24 | 4.2.6 | Solicitação p/ Reserva/alocação de Portas SAN e/ou HBAs (R2) | 5d | 2014-03-18 A | 2014-03-24 |  | 35% | 3.25d | 271d |  | Suporte Storage | 40h | 14h |
| 25 | 4.2.7 | Solicitação de licença de software | 5d | 2014-03-18 A | 2014-03-24 |  | 35% | 3.25d | 271d |  | Controle de Ativos | 40h | 14h |

Notes:
- 2: Verificar todos os documentos anexados no STI para iniciar o entendimento da necessidade a ser atendida: / Check-list de envolvimento de Infra - obrigatório / Visão Gráfica da Solução - obrigatório / Macro estimativa da DIEO - opcional (somente para projetos que foram priorizados via comite e que tenha solicitado a M.E p/ nossa equipe) / Documento de Solicitação de Infraestrutura (core) - opcional
- 9: INFRA ESTRUTURA / PLANEJAMENTO DE CAPACIDADE / ORDEM DE GRANDEZA / INFRAESTRUTURA DE TI / NAO SE APLICA / NAO SE APLICA - Atividade Recorrente / Sev: 4 / OI_PLAN_CAPACIDADE
- 19: INFRA ESTRUTURA / SUPORTE SERVIDORES WINDOWS / SERVIDOR VMWARE ESX / DESIGNAR SERVIDOR FISICO / DATASTORE / DF SP AC RO MT TO GO MS PR RS / MS42 - Atividade Recorrente / Sev: 4 / INFRA ESTRUTURA / SUPORTE SERVIDORES WINDOWS / SERVIDOR VMWARE ESX / DESIGNAR SERVIDOR FISICO / DATASTORE / MG RJ ES AM RO AP PA MA CE PI BA SE AL PE PB / MS42 - Atividade Recorrente / Sev: 4 / INFRA_SUP_WINDOWS
- 20: INFRA ESTRUTURA / PLANEJAMENTO DE DISPONIBILIDADE / RESERVA DE RECURSOS / STORAGE / NAO SE APLICA / NAO SE APLICA - Atividade Recorrente / Sev: 4 / OI_PLAN_DISP_CONT
- 23: INFRA ESTRUTURA / REDE CORPORATIVA / SOLICITACAO DE IP FIXO / DATACENTER / DATACENTER / REG1 - Atividade Recorrente / Sev: 4 / INFRA_SUP_REDE / INFRA ESTRUTURA / REDE CORPORATIVA / SOLICITACAO DE IP FIXO / DATACENTER / DATACENTER / REG2 - Atividade Recorrente / Sev: 4 / INFRA_SUP_REDE_FABRICA
- 24: INFRA ESTRUTURA / STORAGE / SWITCH/DIRECTOR SAN / ALOCACAO / PORTA / MS51 / INFRA_SUP_STORAGE
- 25: INFRA ESTRUTURA / LIBERACAO DE LICENCA PARA SERVIDORES / ATIVACAO / SOFTWARE DE USO CONTROLADO / NAO SE APLICA / NAO SE APLICA - Atividade Implantação / Sev: 4 / CONTROLE_ATIVOS_NIVEL2

| ID | WBS | Task | Duration | Start | Finish | Predecessors | Complete | Remaining | Total slack | Free slack | Resources | Work | Actual work |
| --- | --- | --- | --- | --- | --- | --- | --- | --- | --- | --- | --- | --- | --- |
| 26 | 4.3 | **Cronograma** | 8d | 2014-06-04 A | 2014-06-13 |  | 50% | 4d | 194.25d |  |  | 104h | 40h |
| 27 | 4.3.1 | **Demanda Complexa** | 8d | 2014-06-04 A | 2014-06-13 |  | 50% | 4d | 194.25d | 0d |  | 104h | 40h |
| 28 | 4.3.1.1 | Elaboração do Cronograma | 3d | 2014-06-04 A | 2014-06-06 A | 11 | 100% |  |  |  | Julio Silva | 24h | 24h |
| 29 | 4.3.1.2 | Aprovar Cronograma Infra | 1d | 2014-06-09 A | 2014-06-09 A | 28 | 100% |  |  |  | Dimas Andrade; Julio Silva | 16h | 16h |
| 30 | 4.3.1.3 | Aprovar Cronograma Solicitante | 4d | 2014-06-10 | 2014-06-13 | 29 |  |  | 203.25d |  | Augusto; Frossard | 64h |  |
| 31 | 4.4 | **Especificação Técnica (ET)** | 15d | 2014-06-16 A | 2014-07-08 |  | 35% | 9.75d | 189d |  |  | 160h | 56h |
| 32 | 4.4.1 | **Demanda Complexa** | 15d | 2014-06-16 A | 2014-07-08 |  | 35% | 9.75d | 189d |  |  | 160h | 56h |
| 33 | 4.4.1.1 | Elaboração da ET | 8d | 2014-06-16 A | 2014-06-27 | 27 | 35% | 5.2d | 191.45d | 0d | Julio Silva | 64h | 22.4h |
| 34 | 4.4.1.2 | Aprovar ET Infra | 2d | 2014-06-30 A | 2014-07-01 | 33 | 35% | 1.3d | 190.75d | 0d | Dimas Andrade | 16h | 5.6h |
| 35 | 4.4.1.3 | Aprovar ET Solicitante | 5d | 2014-07-02 A | 2014-07-08 | 34 | 35% | 3.25d | 189d | 0d | Augusto; Frossard | 80h | 28h |
| 36 | 5 | **Acessos Usuários/ Regras de Firewall** | 20d | 2014-07-09 A | 2014-08-05 |  | 35% | 13d | 182d |  |  | 760h | 266h |
| 37 | 5.1 | Solicitar criação dos usuários para acesso aos servidores R2 | 15d | 2014-07-09 A | 2014-07-29 | 35 | 35% | 9.75d | 187d |  | DDSA; Integração | 240h | 84h |
| 38 | 5.2 | Solicitar liberação de regras de firewall para aplicação | 20d | 2014-07-09 A | 2014-08-05 | 35 | 35% | 13d | 182d |  | DDSA; Integração | 320h | 112h |
| 39 | 5.3 | Inclusão do Servidor Unix/ Linux no FANOUT | 5d | 2014-07-09 A | 2014-07-15 | 35 | 35% | 3.25d | 190.5d | 0d | Identidade Digital | 40h | 14h |
| 40 | 5.4 | Solicitar liberação de regras de firewall necessárias paras os times de infraestrutura | 10d | 2014-07-16 A | 2014-07-29 | 39 | 35% | 6.5d | 187d |  | DDSA; Integração | 160h | 56h |
| 41 | 6 | **Processo de Aquisição** | 90d | 2014-07-08 | 2014-11-11 |  |  |  | 0d |  |  |  |  |
| 42 | 6.1 | Aquisição de Recursos de Hardware (Servidores/ Storage) | 90d | 2014-07-08 | 2014-11-11 | 15 |  |  | 0d |  |  |  |  |
| 43 | 7 | **Executar configuração (física/ lógica)** | 251d | 2014-03-25 A | 2015-04-15 |  | 16% | 211.8d | 1d |  |  | 4480h | 904h |
| 44 | 7.1 | **ARS Filhos Instalação/ Configuração - Ambiente: DEV - Camada: APLICAÇÃO Servidor(es): RAPDX01 e RAUDX01** | 23d | 2014-03-25 A | 2014-04-29 A | 18 | 100% |  |  |  |  | 264h | 264h |
| 45 | 7.1.1 | Abertura dos ARSs Filhos | 3d | 2014-03-25 A | 2014-03-27 A |  | 100% |  |  |  | Luciana | 24h | 24h |
| 46 | 7.1.2 | **Entrega Parcial** | 10d | 2014-03-28 A | 2014-04-10 A | 45 | 100% |  |  |  |  | 112h | 112h |
| 47 | 7.1.2.1 | **Instalação de servidor virtual** | 3d | 2014-03-28 A | 2014-04-01 A | 45 | 100% |  |  |  |  | 24h | 24h |
| 48 | 7.1.2.1.1 | Criação de estrutura de maquina virtual diferente de Windows (R2) | 1d | 2014-03-28 A | 2014-03-28 A |  | 100% |  |  |  | Suporte Windows | 8h | 8h |
| 49 | 7.1.2.1.2 | Instalação do s.o. Linux (R2) | 2d | 2014-03-31 A | 2014-04-01 A | 48 | 100% |  |  |  | Suporte Unix | 16h | 16h |

Notes:
- 39: INFRA ESTRUTURA / IDENTIDADE DIGITAL / IDENTITY MANAGER / SOLICITACAO / FANOUT / EXCLUSAO DE GRUPO - Atividade Recorrente / Sev: 4 / INFRA ESTRUTURA / IDENTIDADE DIGITAL / IDENTITY MANAGER / SOLICITACAO / FANOUT / EXCLUSAO DE PLATAFORMA - Atividade Recorrente / Sev: 4 / INFRA ESTRUTURA / IDENTIDADE DIGITAL / IDENTITY MANAGER / SOLICITACAO / FANOUT / INCLUSAO DE PLATAFORMA E GRUPO PADRAO - Atividade Recorrente / Sev: 4 / OPERACAO_SIS_ID_DIGITAL / É permitido o aprovisionamento de 10 maquinas por chamado.
- 48: INFRA ESTRUTURA / SUPORTE SERVIDORES WINDOWS / SISTEMA OPERACIONAL / CRIAR ESTRUTURA DE MAQUINA VIRTUAL LINUX /UNIX / DF SP AC RO MT TO GO MS PR RS / SI42 / INFRA_SUP_WINDOWS_FABRICA
- 49: INFRA ESTRUTURA / SUPORTE UNIX RII / PROJETO / SERVIDOR SISTEMA OPERACIONAL / INSTALAR / INFRA_SUP_UNIX_FABRICA

| ID | WBS | Task | Duration | Start | Finish | Predecessors | Complete | Resources | Work | Actual work |
| --- | --- | --- | --- | --- | --- | --- | --- | --- | --- | --- |
| 50 | 7.1.2.2 | **Criação de partições/ filesystems e usuários** | 2d | 2014-04-02 A | 2014-04-03 A | 45 | 100% |  | 16h | 16h |
| 51 | 7.1.2.2.1 | Criação de filesystems e usuários Unix/Linux (R2) | 2d | 2014-04-02 A | 2014-04-03 A | 49 | 100% | Suporte Unix | 16h | 16h |
| 52 | 7.1.2.3 | **Instalação/ Configuração de Oracle Client 11g** | 1d | 2014-04-04 A | 2014-04-04 A | 45 | 100% |  | 8h | 8h |
| 53 | 7.1.2.3.1 | Instalação de cliente Oracle Client 11g | 1d | 2014-04-04 A | 2014-04-04 A | 47, 50 | 100% | Suporte BD | 8h | 8h |
| 54 | 7.1.2.4 | **Implementação de Backup** | 4d | 2014-04-04 A | 2014-04-09 A | 47, 50 | 100% |  | 32h | 32h |
| 55 | 7.1.2.4.1 | Implementação de Backup R2 | 4d | 2014-04-04 A | 2014-04-09 A |  | 100% | PCP Backup | 32h | 32h |
| 56 | 7.1.2.5 | **Implementação de Monitoração** | 4d | 2014-04-07 A | 2014-04-10 A | 47, 50, 52 | 100% |  | 32h | 32h |
| 57 | 7.1.2.5.1 | Implementação de Monitoração R2 | 4d | 2014-04-07 A | 2014-04-10 A |  | 100% | CCO | 32h | 32h |
| 58 | 7.1.3 | **Validação/ Aceite da Entrega Parcial Ambiente: DEV - Camada: APLICAÇÃO Servidor(es): RAUPDX01 e RAUDX01** | 2d | 2014-04-11 A | 2014-04-14 A | 46 | 100% |  | 32h | 32h |
| 59 | 7.1.3.1 | Validação/ Aceite da Entrega Parcial Ambiente | 1d | 2014-04-11 A | 2014-04-11 A |  | 100% | Augusto; Frossard | 16h | 16h |
| 60 | 7.1.3.2 | Aceite da Entrega Parcial | 1d | 2014-04-14 A | 2014-04-14 A | 59 | 100% | Augusto; Frossard | 16h | 16h |
| 61 | 7.1.4 | **Entrega Final** | 8d | 2014-04-11 A | 2014-04-25 A | 46 | 100% |  | 64h | 64h |
| 62 | 7.1.4.1 | **Certificação da Implantação** | 8d | 2014-04-11 A | 2014-04-25 A |  | 100% |  | 64h | 64h |
| 63 | 7.1.4.1.1 | Certificação da Implantação R2 | 8d | 2014-04-11 A | 2014-04-25 A | 52 | 100% | Segurança da Informação | 64h | 64h |
| 64 | 7.1.5 | **Validação/Aceite da Entrega Final Ambiente: DEV - Camada: APLICAÇÃO Servidor(es): RADPDX01 e RAUDX01** | 2d | 2014-04-28 A | 2014-04-29 A | 61 | 100% |  | 32h | 32h |
| 65 | 7.1.5.1 | Validação/ Aceite da Entrega Final Ambiente | 1d | 2014-04-28 A | 2014-04-28 A | 63 | 100% | Augusto; Frossard | 16h | 16h |
| 66 | 7.1.5.2 | Aceite da Entrega Final | 1d | 2014-04-29 A | 2014-04-29 A | 65 | 100% | Augusto; Frossard | 16h | 16h |
| 67 | 7.2 | **ARS Filhos Instalação/ Configuração - Ambiente: DEV - Camada: BANCO DE DADOS Servidor(es): ORAHX02A, ORAHX02B - BD: RAPDEV01 e RAUDEV01** | 23d | 2014-03-25 A | 2014-04-29 A |  | 100% |  | 304h | 304h |
| 68 | 7.2.1 | Abertura dos ARSs Filhos | 3d | 2014-03-25 A | 2014-03-27 A | 18 | 100% | Luciana; Thasio | 48h | 48h |
| 69 | 7.2.2 | **Entrega Parcial** | 10d | 2014-03-28 A | 2014-04-10 A | 68 | 100% |  | 128h | 128h |
| 70 | 7.2.2.1 | **Configurção em Servidor Físico** | 3d | 2014-03-28 A | 2014-04-01 A | 68 | 100% |  | 24h | 24h |
| 71 | 7.2.2.1.1 | Criação de estrutura de maquina virtual diferente de Windows (R2) | 1d | 2014-03-28 A | 2014-03-28 A |  | 100% | Suporte Windows | 8h | 8h |
| 72 | 7.2.2.1.2 | Instalação do s.o. Linux (R2) | 2d | 2014-03-31 A | 2014-04-01 A | 71 | 100% | Suporte Unix | 16h | 16h |
| 73 | 7.2.2.2 | **Criação de partições/ filesystems e usuários** | 2d | 2014-04-02 A | 2014-04-03 A | 68 | 100% |  | 16h | 16h |
| 74 | 7.2.2.2.1 | Criação de filesystems e usuários Unix/Linux (R2) | 2d | 2014-04-02 A | 2014-04-03 A | 72 | 100% | Suporte Unix | 16h | 16h |

Notes:
- 51: INFRA ESTRUTURA / SUPORTE UNIX RII / PROJETO / SERVIDOR FILESYSTEM / CRIAR / INFRA ESTRUTURA / SUPORTE UNIX RII / PROJETO / ACESSO USUARIO / CRIAR / INFRA ESTRUTRUA / SUPORTE UNIX RII / PROJETO / ACESSO GRUPO / CRIAR / INFRA_SUP_UNIX_FABRICA
- 53: INFRA ESTRUTURA / SUPORTE SYBASE / CLIENT / SYBASE / INSTALAR / PROJETO - Atividade Implantação / Sev: 4 / OI_FABRICA_3CON_SQLSERVER / INFRA ESTRUTURA / SUPORTE SQL SERVER / CLIENT / SQL / INSTALAR / PROJETO - Atividade Implantação / Sev: 4 / OI_FABRICA_3CON_SQLSERVER / INFRA ESTRUTURA / SUPORTE ORACLE / SOFTWARE CLIENT / INSTALAR/ATUALIZAR / NAO PRODUCAO / NAO SE APLICA - Atividade Recorrente / Sev: 4 / OI_FABRICA_3CON_ORACLE / INFRA ESTRUTURA / SUPORTE ORACLE / SOFTWARE CLIENT / INSTALAR/ATUALIZAR / PRODUCAO / NAO SE APLICA - Atividade Recorrente / Sev: 4 / OI_FABRICA_3CON_ORACLE / INFRA ESTRUTURA / SUPORTE MYSQL / CLIENT / MYSQL / INSTALAR / PROJETO - Atividade Implantação / Sev: 4 / OI_FABRICA_3CON_SQLSERVER / INFRA ESTRUTURA / TERADATA / BANCO DE DADOS / DW / INSTALACAO / CLIENT / TOOLS - Atividade Recorrente / Sev: 4 / INFRA_SUP_TERADATA
- 55: INFRA ESTRUTURA / BACKUP / IMPLANTACAO / NETBACKUP / CORPORATIVO / NAO SE APLICA - Atividade Implantação / Sev: 4 (OI_IMPLATACAO_BACKUP_FABRICA) / INFRA ESTRUTURA / BACKUP / IMPLANTACAO / TSM / CORPORATIVO / NAO SE APLICA - Atividade Implantação / Sev: 4 (OI_IMPLATACAO_BACKUP_FABRICA)
- 57: INFRA ESTRUTURA / MONITORACAO / IMPLANTACAO / ADICAO MONITORACAO UNIX/LINUX / NAO SE APLICA / NAO SE APLICA / INFRA ESTRUTURA / MONITORACAO / IMPLANTACAO / ADICAO MONITORACAO WINDOWS / NAO SE APLICA / NAO SE APLICA / - Atividade Recorrente / Sev: 4 / CONTROLE_ATIVOS_NIVEL2 (posteriormente será redesignado para o grupo executor da atividade)
- 63: A atividade de certificação da implantação ocorre da seguinte forma: / 1 - Coleta das informações ocorre sempre as segunda-feiras / 2 - Resultado da análise dos dados coletados que ocorre sempre as quinta-feiras / Desta forma o prazo de 8 dias reflete o pior cenário, isto é um ARS sendo aberto em uma terça-feira para ser concuído na quinta-feira da semana seguinte. / Este prazo deverá ser ajustado sempre que necessário, tanto o inicio da atividade, quando a duração da mesma. / SEGURANCA DA INFORMACAO / TECNOLOGIA / PROJETO PROTEUS / PARECER DE SEGURANCA / CERTIFICACAO / SERVIDORES TI BD - Atividade Recorrente / Sev: 4 / SEGURANCA DA INFORMACAO / TECNOLOGIA / PROJETO PROTEUS / PARECER DE SEGURANCA / CERTIFICACAO / SERVIDORES TI INFRAWEB - Atividade Recorrente / Sev: 4 / SEGURANCA DA INFORMACAO / TECNOLOGIA / PROJETO PROTEUS / PARECER DE SEGURANCA / CERTIFICACAO / SERVIDORES TI UNIX / LINUX - Atividade Recorrente / Sev: 4 / SEGURANCA DA INFORMACAO / TECNOLOGIA / PROJETO PROTEUS / PARECER DE SEGURANCA / CERTIFICACAO / SERVIDORES TI WINDOWS - Atividade Recorrente / Sev: 4 / SEGURANCA_PROTEUS
- 71: INFRA ESTRUTURA / SUPORTE SERVIDORES WINDOWS / SISTEMA OPERACIONAL / CRIAR ESTRUTURA DE MAQUINA VIRTUAL LINUX /UNIX / DF SP AC RO MT TO GO MS PR RS / SI42 / INFRA_SUP_WINDOWS_FABRICA
- 72: INFRA ESTRUTURA / SUPORTE UNIX RII / PROJETO / SERVIDOR SISTEMA OPERACIONAL / INSTALAR / INFRA_SUP_UNIX_FABRICA
- 74: INFRA ESTRUTURA / SUPORTE UNIX RII / PROJETO / SERVIDOR FILESYSTEM / CRIAR / INFRA ESTRUTURA / SUPORTE UNIX RII / PROJETO / ACESSO USUARIO / CRIAR / INFRA ESTRUTRUA / SUPORTE UNIX RII / PROJETO / ACESSO GRUPO / CRIAR / INFRA_SUP_UNIX_FABRICA

| ID | WBS | Task | Duration | Start | Finish | Predecessors | Complete | Total slack | Free slack | Resources | Work | Actual work |
| --- | --- | --- | --- | --- | --- | --- | --- | --- | --- | --- | --- | --- |
| 75 | 7.2.2.3 | **Instalação/ Configuração de banco de dados** | 3d | 2014-04-02 A | 2014-04-04 A | 68, 70 | 100% |  |  |  | 24h | 24h |
| 76 | 7.2.2.3.1 | Instalação de Oracle Clusterware (Oracle RAC) | 1d | 2014-04-02 A | 2014-04-02 A |  | 100% |  |  | Suporte BD | 8h | 8h |
| 77 | 7.2.2.3.2 | Instalação de binário | 1d | 2014-04-03 A | 2014-04-03 A | 76 | 100% |  |  | Suporte BD | 8h | 8h |
| 78 | 7.2.2.3.3 | Criação de instância / banco | 1d | 2014-04-04 A | 2014-04-04 A | 77 | 100% |  |  | Suporte BD | 8h | 8h |
| 79 | 7.2.2.3.4 | Criação de schema (somente BD Oracle) | 1d | 2014-04-04 A | 2014-04-04 A | 77 | 100% |  |  |  |  |  |
| 80 | 7.2.2.4 | **Implementação de Backup** | 4d | 2014-04-04 A | 2014-04-09 A | 70, 73 | 100% |  |  |  | 32h | 32h |
| 81 | 7.2.2.4.1 | Implementação de Backup R2 | 4d | 2014-04-04 A | 2014-04-09 A |  | 100% |  |  | PCP Backup | 32h | 32h |
| 82 | 7.2.2.5 | **Implementação de Monitoração** | 4d | 2014-04-07 A | 2014-04-10 A | 70, 73, 75 | 100% |  |  |  | 32h | 32h |
| 83 | 7.2.2.5.1 | Implementação de Monitoração R2 | 4d | 2014-04-07 A | 2014-04-10 A |  | 100% |  |  | CCO | 32h | 32h |
| 84 | 7.2.3 | **Validação/ Aceite da Entrega Parcial Ambiente: DEV - Camada: BANCO DE DADOS Servidor(es): ORAHX02 A/B; BD: RAPDEV01 e RAUDEV01** | 2d | 2014-04-11 A | 2014-04-14 A | 69 | 100% |  |  |  | 32h | 32h |
| 85 | 7.2.3.1 | Validação/ Aceite da Entrega Parcial Ambiente | 1d | 2014-04-11 A | 2014-04-11 A |  | 100% |  |  | Augusto; Frossard | 16h | 16h |
| 86 | 7.2.3.2 | Aceite da Entrega Parcial | 1d | 2014-04-14 A | 2014-04-14 A | 85 | 100% |  |  | Augusto; Frossard | 16h | 16h |
| 87 | 7.2.4 | **Entrega Final** | 8d | 2014-04-11 A | 2014-04-25 A | 69 | 100% |  |  |  | 64h | 64h |
| 88 | 7.2.4.1 | **Certificação da Implantação** | 8d | 2014-04-11 A | 2014-04-25 A |  | 100% |  |  |  | 64h | 64h |
| 89 | 7.2.4.1.1 | Certificação da Implantação R2 | 8d | 2014-04-11 A | 2014-04-25 A | 79 | 100% |  |  | Segurança da Informação | 64h | 64h |
| 90 | 7.2.5 | **Validação/ Aceite da Entrega Final Ambiente: DEV - Camada: BANCO DE DADOS Servidor(es): BD: RAPDEV01 e RAUDEV01** | 2d | 2014-04-28 A | 2014-04-29 A | 87 | 100% |  |  |  | 32h | 32h |
| 91 | 7.2.5.1 | Validação/ Aceite da Entrega Final Ambiente | 1d | 2014-04-28 A | 2014-04-28 A | 89 | 100% |  |  | Augusto; Frossard | 16h | 16h |
| 92 | 7.2.5.2 | Aceite da Entrega Final | 1d | 2014-04-29 A | 2014-04-29 A | 91 | 100% |  |  | Augusto; Frossard | 16h | 16h |
| 93 | 7.3 | **Entrega do Ambiente de Desenvolvimento** | 1d | 2014-04-30 A | 2014-04-30 A |  | 100% |  |  | Julio Silva; PMO | 16h | 16h |
| 94 | 7.3.1 | Entrega do Amiente de Desenvolvimento | 1d | 2014-04-30 A | 2014-04-30 A | 66, 92 | 100% |  |  |  |  |  |
| 95 | 7.4 | **Acompanhamento Pós-Entrega de Desenvolvimento** | 20d | 2014-05-05 A | 2014-05-30 A |  | 100% |  |  |  | 320h | 320h |
| 96 | 7.4.1 | **Solicitação de Operação Assistida** | 20d | 2014-05-05 A | 2014-05-30 A |  | 100% |  |  |  | 320h | 320h |
| 97 | 7.4.1.1 | Realização de Operação Assistida | 20d | 2014-05-05 A | 2014-05-30 A | 94 | 100% |  |  | Julio Silva; Implantacao | 320h | 320h |
| 98 | 7.5 | **ARS Filhos Instalação/ Configuração - Ambiente: HOM - Camada: APLICAÇÃO Servidor(es): RAPHX02 e RAUHX02** | 25d | 2014-11-12 | 2014-12-18 |  |  | 3d |  |  | 336h |  |
| 99 | 7.5.1 | Abertura dos ARSs Filhos | 2d | 2014-11-12 | 2014-11-13 | 42, 36FS+15d |  | 3d | 0d | Thasio | 16h |  |

Notes:
- 76: Usar template para criar no CMDB / INFRA ESTRUTURA / SUPORTE ORACLE / BANCO/INSTANCIA / CRIAR / NAO PRODUCAO / NAO SE APLICA - Atividade Recorrente / Sev: 4 / OI_FABRICA_3CON_ORACLE / INFRA ESTRUTURA / SUPORTE ORACLE / BANCO/INSTANCIA / CRIAR / PRODUCAO / NAO SE APLICA - Atividade Recorrente / Sev: 4 / OI_FABRICA_3CON_ORACLE
- 77: INFRA ESTRUTURA / SUPORTE ORACLE / BANCO/INSTANCIA / CRIAR / NAO PRODUCAO / NAO SE APLICA - Atividade Recorrente / Sev: 4 / OI_FABRICA_3CON_ORACLE / INFRA ESTRUTURA / SUPORTE ORACLE / BANCO/INSTANCIA / CRIAR / PRODUCAO / NAO SE APLICA - Atividade Recorrente / Sev: 4 / OI_FABRICA_3CON_ORACLE / INFRA ESTRUTURA / SUPORTE MYSQL / BANCO / CRIAR / PROJETO / NAO SE APLICA - Atividade Implantação / Sev: 3 / INFRA_SUP_MYSQL / INFRA ESTRUTURA / SUPORTE SYBASE / BANCO / CRIAR / PROJETO / NAO SE APLICA - Atividade Implantação / Sev: 3 / INFRA_SUP_SYBASE / INFRA ESTRUTURA / SUPORTE SQL SERVER / BANCO / CRIAR / PROJETO / NAO SE APLICA - Atividade Implantação / Sev: 3 / INFRA_SUP_SQLSERVER
- 78: INFRA ESTRUTURA / SUPORTE MYSQL / INSTANCIA / INSTALAR / PROJETO / NAO SE APLICA - Atividade Implantação / Sev: 4 / INFRA_SUP_MYSQL / INFRA ESTRUTURA / SUPORTE SYBASE / INSTANCIA / INSTALAR / PROJETO / NAO SE APLICA - Atividade Implantação / Sev: 4 / INFRA_SUP_SYBASE / INFRA ESTRUTURA / SUPORTE SQL SERVER / INSTANCIA / INSTALAR / PROJETO / NAO SE APLICA - Atividade Implantação / Sev: 4 / INFRA_SUP_SQLSERVER / INFRA ESTRUTURA / SUPORTE SQL SERVER / INTEGRATION SERVICES/ INSTANCIA / INSTALAR / PROJETO - Atividade Implantação / Sev: 4 / INFRA_SUP_SQLSERVER / INFRA ESTRUTURA / SUPORTE SQL SERVER / NOTIFICATION SERVICES/ INSTANCIA / INSTALAR / PROJETO - Atividade Implantação / Sev: 4 / INFRA_SUP_SQLSERVER / INFRA ESTRUTURA / SUPORTE SQL SERVER / REPORTING SERVICES/ INSTANCIA / INSTALAR / PROJETO - Atividade Implantação / Sev: 4 / INFRA_SUP_SQLSERVER
- 79: INFRA ESTRUTURA / SUPORTE ORACLE / USUARIO/SCHEMA / CRIAR / NAO PRODUCAO / NAO SE APLICA - Atividade Recorrente / Sev: 4 / INFRA ESTRUTURA / SUPORTE ORACLE / USUARIO/SCHEMA / CRIAR / PRODUCAO / NAO SE APLICA - Atividade Recorrente / Sev: 4 / INFRA_SUP_ORACLE_SERVICO
- 81: INFRA ESTRUTURA / BACKUP / IMPLANTACAO / NETBACKUP / CORPORATIVO / NAO SE APLICA - Atividade Implantação / Sev: 4 (OI_IMPLATACAO_BACKUP_FABRICA) / INFRA ESTRUTURA / BACKUP / IMPLANTACAO / TSM / CORPORATIVO / NAO SE APLICA - Atividade Implantação / Sev: 4 (OI_IMPLATACAO_BACKUP_FABRICA)
- 83: INFRA ESTRUTURA / MONITORACAO / IMPLANTACAO / ADICAO MONITORACAO UNIX/LINUX / NAO SE APLICA / NAO SE APLICA / INFRA ESTRUTURA / MONITORACAO / IMPLANTACAO / ADICAO MONITORACAO WINDOWS / NAO SE APLICA / NAO SE APLICA / - Atividade Recorrente / Sev: 4 / CONTROLE_ATIVOS_NIVEL2 (posteriormente será redesignado para o grupo executor da atividade)
- 89: A atividade de certificação da implantação ocorre da seguinte forma: / 1 - Coleta das informações ocorre sempre as segunda-feiras / 2 - Resultado da análise dos dados coletados que ocorre sempre as quinta-feiras / Desta forma o prazo de 8 dias reflete o pior cenário, isto é um ARS sendo aberto em uma terça-feira para ser concuído na quinta-feira da semana seguinte. / Este prazo deverá ser ajustado sempre que necessário, tanto o inicio da atividade, quando a duração da mesma. / SEGURANCA DA INFORMACAO / TECNOLOGIA / PROJETO PROTEUS / PARECER DE SEGURANCA / CERTIFICACAO / SERVIDORES TI BD - Atividade Recorrente / Sev: 4 / SEGURANCA DA INFORMACAO / TECNOLOGIA / PROJETO PROTEUS / PARECER DE SEGURANCA / CERTIFICACAO / SERVIDORES TI INFRAWEB - Atividade Recorrente / Sev: 4 / SEGURANCA DA INFORMACAO / TECNOLOGIA / PROJETO PROTEUS / PARECER DE SEGURANCA / CERTIFICACAO / SERVIDORES TI UNIX / LINUX - Atividade Recorrente / Sev: 4 / SEGURANCA DA INFORMACAO / TECNOLOGIA / PROJETO PROTEUS / PARECER DE SEGURANCA / CERTIFICACAO / SERVIDORES TI WINDOWS - Atividade Recorrente / Sev: 4 / SEGURANCA_PROTEUS
- 97: INFRA ESTRUTURA/ OPERACOES E AMBIENTES/ PROJETO/ POS IMPLANTACAO/ OPERACAO ASSISTIDA/ QUALIDADE E PROCESSO

| ID | WBS | Task | Duration | Start | Finish | Predecessors | Total slack | Free slack | Resources | Work |
| --- | --- | --- | --- | --- | --- | --- | --- | --- | --- | --- |
| 100 | 7.5.2 | **Entrega Parcial** | 13d | 2014-11-14 | 2014-12-04 | 99 | 3d | 0d |  | 208h |
| 101 | 7.5.2.1 | **Instalação de servidor físico** | 4d | 2014-11-14 | 2014-11-19 | 99 | 3d | 2d |  | 32h |
| 102 | 7.5.2.1.1 | Criação de estrutura de servidor físico Linux (R2) | 2d | 2014-11-14 | 2014-11-17 |  | 3d | 0d | Suporte Windows | 16h |
| 103 | 7.5.2.1.2 | Instalação do s.o. Linux (R2) | 2d | 2014-11-18 | 2014-11-19 | 102 | 3d | 0d | Suporte Unix | 16h |
| 104 | 7.5.2.2 | **Criação de partições/ filesystems e usuários** | 2d | 2014-11-24 | 2014-11-25 | 99 | 3d | 0d |  | 16h |
| 105 | 7.5.2.2.1 | Criação de filesystems e usuários Unix/Linux (R2) | 2d | 2014-11-24 | 2014-11-25 | 103 | 3d |  | Suporte Unix | 16h |
| 106 | 7.5.2.3 | **Instalação/ Configuração de Oracle Client 11g** | 2d | 2014-11-26 | 2014-11-27 | 99 | 3d | 0d |  | 16h |
| 107 | 7.5.2.3.1 | Instalação de cliente Oracle Client 11g | 2d | 2014-11-26 | 2014-11-27 | 101, 104 | 3d | 0d | Suporte BD | 16h |
| 108 | 7.5.2.4 | **Implementação/ Validação de Conectividade** | 5d | 2014-11-28 | 2014-12-04 |  | 3d |  |  | 40h |
| 109 | 7.5.2.4.1 | Implementação/ Validação de Conectividade | 5d | 2014-11-28 | 2014-12-04 | 107 | 3d |  | Integração | 40h |
| 110 | 7.5.2.5 | **Implementação de Backup** | 4d | 2014-11-26 | 2014-12-01 | 101, 104 | 6d |  |  | 32h |
| 111 | 7.5.2.5.1 | Implementação de Backup R2 | 4d | 2014-11-26 | 2014-12-01 |  | 6d |  | PCP Backup | 32h |
| 112 | 7.5.2.6 | **Implementação de Monitoração** | 4d | 2014-11-28 | 2014-12-03 | 101, 104, 106 | 4d |  |  | 32h |
| 113 | 7.5.2.6.1 | Implementação de Monitoração R2 | 4d | 2014-11-28 | 2014-12-03 |  | 4d |  | CCO | 32h |
| 114 | 7.5.2.7 | **Implementação de GA** | 5d | 2014-11-28 | 2014-12-04 |  | 3d |  |  | 40h |
| 115 | 7.5.2.7.1 | Implementação de GA | 5d | 2014-11-28 | 2014-12-04 | 107 | 3d |  | Leandro Frossard | 40h |
| 116 | 7.5.3 | **Validação/ Aceite da Entrega Parcial Ambiente: HOM - Camada: APLICAÇÃO Servidor(es): RAPHX02 e RAUHX02** | 2d | 2014-12-05 | 2014-12-08 | 100 | 77d |  |  | 16h |
| 117 | 7.5.3.1 | Validação/ Aceite da Entrega Parcial Ambiente | 1d | 2014-12-05 | 2014-12-05 |  | 77d | 0d | Leandro Frossard | 8h |
| 118 | 7.5.3.2 | Aceite da Entrega Parcial | 1d | 2014-12-08 | 2014-12-08 | 117 | 77d |  | Leandro Frossard | 8h |
| 119 | 7.5.4 | **Entrega Final** | 8d | 2014-12-05 | 2014-12-16 | 100 | 3d | 0d |  | 64h |
| 120 | 7.5.4.1 | **Certificação da Implantação** | 8d | 2014-12-05 | 2014-12-16 |  | 3d |  |  | 64h |
| 121 | 7.5.4.1.1 | Certificação da Implantação R2 | 8d | 2014-12-05 | 2014-12-16 | 106 | 3d | 0d | Segurança da Informação | 64h |
| 122 | 7.5.5 | **Validação/Aceite da Entrega Final Ambiente: HOM - Camada: APLICAÇÃO Servidor(es): RAPHX02 e RAUHX02** | 2d | 2014-12-17 | 2014-12-18 | 119 | 3d |  |  | 32h |
| 123 | 7.5.5.1 | Validação/ Aceite da Entrega Final Ambiente | 1d | 2014-12-17 | 2014-12-17 | 121 | 3d | 0d | Augusto; Frossard | 16h |
| 124 | 7.5.5.2 | Aceite da Entrega Final | 1d | 2014-12-18 | 2014-12-18 | 123 | 3d |  | Augusto; Frossard | 16h |

Notes:
- 102: INFRA ESTRUTURA / SUPORTE SERVIDORES WINDOWS / SISTEMA OPERACIONAL / CRIAR ESTRUTURA DE MAQUINA VIRTUAL LINUX /UNIX / DF SP AC RO MT TO GO MS PR RS / SI42 / INFRA_SUP_WINDOWS_FABRICA
- 103: INFRA ESTRUTURA / SUPORTE UNIX RII / PROJETO / SERVIDOR SISTEMA OPERACIONAL / INSTALAR / INFRA_SUP_UNIX_FABRICA
- 105: INFRA ESTRUTURA / SUPORTE UNIX RII / PROJETO / SERVIDOR FILESYSTEM / CRIAR / INFRA ESTRUTURA / SUPORTE UNIX RII / PROJETO / ACESSO USUARIO / CRIAR / INFRA ESTRUTRUA / SUPORTE UNIX RII / PROJETO / ACESSO GRUPO / CRIAR / INFRA_SUP_UNIX_FABRICA
- 107: INFRA ESTRUTURA / SUPORTE SYBASE / CLIENT / SYBASE / INSTALAR / PROJETO - Atividade Implantação / Sev: 4 / OI_FABRICA_3CON_SQLSERVER / INFRA ESTRUTURA / SUPORTE SQL SERVER / CLIENT / SQL / INSTALAR / PROJETO - Atividade Implantação / Sev: 4 / OI_FABRICA_3CON_SQLSERVER / INFRA ESTRUTURA / SUPORTE ORACLE / SOFTWARE CLIENT / INSTALAR/ATUALIZAR / NAO PRODUCAO / NAO SE APLICA - Atividade Recorrente / Sev: 4 / OI_FABRICA_3CON_ORACLE / INFRA ESTRUTURA / SUPORTE ORACLE / SOFTWARE CLIENT / INSTALAR/ATUALIZAR / PRODUCAO / NAO SE APLICA - Atividade Recorrente / Sev: 4 / OI_FABRICA_3CON_ORACLE / INFRA ESTRUTURA / SUPORTE MYSQL / CLIENT / MYSQL / INSTALAR / PROJETO - Atividade Implantação / Sev: 4 / OI_FABRICA_3CON_SQLSERVER / INFRA ESTRUTURA / TERADATA / BANCO DE DADOS / DW / INSTALACAO / CLIENT / TOOLS - Atividade Recorrente / Sev: 4 / INFRA_SUP_TERADATA
- 111: INFRA ESTRUTURA / BACKUP / IMPLANTACAO / NETBACKUP / CORPORATIVO / NAO SE APLICA - Atividade Implantação / Sev: 4 (OI_IMPLATACAO_BACKUP_FABRICA) / INFRA ESTRUTURA / BACKUP / IMPLANTACAO / TSM / CORPORATIVO / NAO SE APLICA - Atividade Implantação / Sev: 4 (OI_IMPLATACAO_BACKUP_FABRICA)
- 113: INFRA ESTRUTURA / MONITORACAO / IMPLANTACAO / ADICAO MONITORACAO UNIX/LINUX / NAO SE APLICA / NAO SE APLICA / INFRA ESTRUTURA / MONITORACAO / IMPLANTACAO / ADICAO MONITORACAO WINDOWS / NAO SE APLICA / NAO SE APLICA / - Atividade Recorrente / Sev: 4 / CONTROLE_ATIVOS_NIVEL2 (posteriormente será redesignado para o grupo executor da atividade)
- 121: A atividade de certificação da implantação ocorre da seguinte forma: / 1 - Coleta das informações ocorre sempre as segunda-feiras / 2 - Resultado da análise dos dados coletados que ocorre sempre as quinta-feiras / Desta forma o prazo de 8 dias reflete o pior cenário, isto é um ARS sendo aberto em uma terça-feira para ser concuído na quinta-feira da semana seguinte. / Este prazo deverá ser ajustado sempre que necessário, tanto o inicio da atividade, quando a duração da mesma. / SEGURANCA DA INFORMACAO / TECNOLOGIA / PROJETO PROTEUS / PARECER DE SEGURANCA / CERTIFICACAO / SERVIDORES TI BD - Atividade Recorrente / Sev: 4 / SEGURANCA DA INFORMACAO / TECNOLOGIA / PROJETO PROTEUS / PARECER DE SEGURANCA / CERTIFICACAO / SERVIDORES TI INFRAWEB - Atividade Recorrente / Sev: 4 / SEGURANCA DA INFORMACAO / TECNOLOGIA / PROJETO PROTEUS / PARECER DE SEGURANCA / CERTIFICACAO / SERVIDORES TI UNIX / LINUX - Atividade Recorrente / Sev: 4 / SEGURANCA DA INFORMACAO / TECNOLOGIA / PROJETO PROTEUS / PARECER DE SEGURANCA / CERTIFICACAO / SERVIDORES TI WINDOWS - Atividade Recorrente / Sev: 4 / SEGURANCA_PROTEUS

| ID | WBS | Task | Duration | Start | Finish | Predecessors | Total slack | Free slack | Resources | Work |
| --- | --- | --- | --- | --- | --- | --- | --- | --- | --- | --- |
| 125 | 7.6 | **ARS Filhos Instalação/ Configuração - Ambiente: HOM - Camada: BANCO DE DADOS Servidor(es): RAPHX03A/B (Cluster)** | 25d | 2014-11-12 | 2014-12-18 |  | 5d |  |  | 496h |
| 126 | 7.6.1 | Abertura dos ARSs Filhos | 3d | 2014-11-12 | 2014-11-14 | 42, 36FS+15d | 5d | 0d | Thasio | 24h |
| 127 | 7.6.2 | **Entrega Parcial** | 21d | 2014-11-17 | 2014-12-17 | 126 | 5d |  |  | 344h |
| 128 | 7.6.2.1 | **Configurção em Servidor Físico** | 5d | 2014-11-17 | 2014-11-25 | 126 | 5d | 0d |  | 40h |
| 129 | 7.6.2.1.1 | Criação de estrutura de maquina física Linux (R2) | 2d | 2014-11-17 | 2014-11-18 |  | 5d | 0d | Suporte Windows | 16h |
| 130 | 7.6.2.1.2 | Instalação do s.o. Linux (R2) | 3d | 2014-11-19 | 2014-11-25 | 129 | 5d | 0d | Suporte Unix | 24h |
| 131 | 7.6.2.2 | **Criação de partições/ filesystems e usuários** | 2d | 2014-11-26 | 2014-11-27 | 126 | 77d | 0d |  | 16h |
| 132 | 7.6.2.2.1 | Criação de filesystems e usuários Unix/Linux (R2) | 2d | 2014-11-26 | 2014-11-27 | 130 | 77d |  | Suporte Unix | 16h |
| 133 | 7.6.2.3 | **Instalação/ Configuração de banco de dados** | 7d | 2014-11-26 | 2014-12-04 | 126, 128 | 5d | 0d |  | 56h |
| 134 | 7.6.2.3.1 | Instalação de Oracle Clusterware (Oracle RAC) | 2d | 2014-11-26 | 2014-11-27 |  | 5d | 0d | Suporte BD | 16h |
| 135 | 7.6.2.3.2 | Instalação de binário | 2d | 2014-11-28 | 2014-12-01 | 134 | 5d | 0d | Suporte BD | 16h |
| 136 | 7.6.2.3.3 | Criação de instância / banco | 3d | 2014-12-02 | 2014-12-04 | 135 | 5d |  | Suporte BD | 24h |
| 137 | 7.6.2.3.4 | Criação de schema (somente BD Oracle) | 2d | 2014-12-02 | 2014-12-03 | 135 | 6d | 0d |  |  |
| 138 | 7.6.2.4 | **Implementação/ Validação de Conectividade** | 10d | 2014-12-04 | 2014-12-17 |  | 70d |  |  | 80h |
| 139 | 7.6.2.4.1 | Implementação/ Validação de Conectividade | 10d | 2014-12-04 | 2014-12-17 | 137 | 70d |  | Integração | 80h |
| 140 | 7.6.2.5 | **Implementação de Backup** | 5d | 2014-11-28 | 2014-12-04 | 128, 131 | 77d |  |  | 40h |
| 141 | 7.6.2.5.1 | Implementação de Backup R2 | 5d | 2014-11-28 | 2014-12-04 |  | 77d | 0d | PCP Backup | 40h |
| 142 | 7.6.2.6 | **Implementação de Monitoração** | 4d | 2014-12-05 | 2014-12-10 | 128, 131, 133 | 75d |  |  | 32h |
| 143 | 7.6.2.6.1 | Implementação de Monitoração R2 | 4d | 2014-12-05 | 2014-12-10 |  | 75d |  | CCO | 32h |
| 144 | 7.6.2.7 | **Implementação de GA** | 10d | 2014-12-04 | 2014-12-17 |  | 70d |  |  | 80h |
| 145 | 7.6.2.7.1 | Implementação de GA | 10d | 2014-12-04 | 2014-12-17 | 137 | 70d |  | Leandro Frossard | 80h |
| 146 | 7.6.3 | **Validação/ Aceite da Entrega Parcial Ambiente: HOM - Camada: BANCO DE DADOS Servidor(es): RAPHX03A/B (Cluster)** | 2d | 2014-12-05 | 2014-12-08 |  | 77d |  |  | 32h |
| 147 | 7.6.3.1 | Validação/ Aceite da Entrega Parcial Ambiente | 1d | 2014-12-05 | 2014-12-05 | 141 | 77d | 0d | Augusto; Frossard | 16h |
| 148 | 7.6.3.2 | Aceite da Entrega Parcial | 1d | 2014-12-08 | 2014-12-08 | 147 | 77d |  | Augusto; Frossard | 16h |

Notes:
- 129: INFRA ESTRUTURA / SUPORTE SERVIDORES WINDOWS / SISTEMA OPERACIONAL / CRIAR ESTRUTURA DE MAQUINA VIRTUAL LINUX /UNIX / DF SP AC RO MT TO GO MS PR RS / SI42 / INFRA_SUP_WINDOWS_FABRICA
- 130: INFRA ESTRUTURA / SUPORTE UNIX RII / PROJETO / SERVIDOR SISTEMA OPERACIONAL / INSTALAR / INFRA_SUP_UNIX_FABRICA
- 132: INFRA ESTRUTURA / SUPORTE UNIX RII / PROJETO / SERVIDOR FILESYSTEM / CRIAR / INFRA ESTRUTURA / SUPORTE UNIX RII / PROJETO / ACESSO USUARIO / CRIAR / INFRA ESTRUTRUA / SUPORTE UNIX RII / PROJETO / ACESSO GRUPO / CRIAR / INFRA_SUP_UNIX_FABRICA
- 134: Usar template para criar no CMDB / INFRA ESTRUTURA / SUPORTE ORACLE / BANCO/INSTANCIA / CRIAR / NAO PRODUCAO / NAO SE APLICA - Atividade Recorrente / Sev: 4 / OI_FABRICA_3CON_ORACLE / INFRA ESTRUTURA / SUPORTE ORACLE / BANCO/INSTANCIA / CRIAR / PRODUCAO / NAO SE APLICA - Atividade Recorrente / Sev: 4 / OI_FABRICA_3CON_ORACLE
- 135: INFRA ESTRUTURA / SUPORTE ORACLE / BANCO/INSTANCIA / CRIAR / NAO PRODUCAO / NAO SE APLICA - Atividade Recorrente / Sev: 4 / OI_FABRICA_3CON_ORACLE / INFRA ESTRUTURA / SUPORTE ORACLE / BANCO/INSTANCIA / CRIAR / PRODUCAO / NAO SE APLICA - Atividade Recorrente / Sev: 4 / OI_FABRICA_3CON_ORACLE / INFRA ESTRUTURA / SUPORTE MYSQL / BANCO / CRIAR / PROJETO / NAO SE APLICA - Atividade Implantação / Sev: 3 / INFRA_SUP_MYSQL / INFRA ESTRUTURA / SUPORTE SYBASE / BANCO / CRIAR / PROJETO / NAO SE APLICA - Atividade Implantação / Sev: 3 / INFRA_SUP_SYBASE / INFRA ESTRUTURA / SUPORTE SQL SERVER / BANCO / CRIAR / PROJETO / NAO SE APLICA - Atividade Implantação / Sev: 3 / INFRA_SUP_SQLSERVER
- 136: INFRA ESTRUTURA / SUPORTE MYSQL / INSTANCIA / INSTALAR / PROJETO / NAO SE APLICA - Atividade Implantação / Sev: 4 / INFRA_SUP_MYSQL / INFRA ESTRUTURA / SUPORTE SYBASE / INSTANCIA / INSTALAR / PROJETO / NAO SE APLICA - Atividade Implantação / Sev: 4 / INFRA_SUP_SYBASE / INFRA ESTRUTURA / SUPORTE SQL SERVER / INSTANCIA / INSTALAR / PROJETO / NAO SE APLICA - Atividade Implantação / Sev: 4 / INFRA_SUP_SQLSERVER / INFRA ESTRUTURA / SUPORTE SQL SERVER / INTEGRATION SERVICES/ INSTANCIA / INSTALAR / PROJETO - Atividade Implantação / Sev: 4 / INFRA_SUP_SQLSERVER / INFRA ESTRUTURA / SUPORTE SQL SERVER / NOTIFICATION SERVICES/ INSTANCIA / INSTALAR / PROJETO - Atividade Implantação / Sev: 4 / INFRA_SUP_SQLSERVER / INFRA ESTRUTURA / SUPORTE SQL SERVER / REPORTING SERVICES/ INSTANCIA / INSTALAR / PROJETO - Atividade Implantação / Sev: 4 / INFRA_SUP_SQLSERVER
- 137: INFRA ESTRUTURA / SUPORTE ORACLE / USUARIO/SCHEMA / CRIAR / NAO PRODUCAO / NAO SE APLICA - Atividade Recorrente / Sev: 4 / INFRA ESTRUTURA / SUPORTE ORACLE / USUARIO/SCHEMA / CRIAR / PRODUCAO / NAO SE APLICA - Atividade Recorrente / Sev: 4 / INFRA_SUP_ORACLE_SERVICO
- 141: INFRA ESTRUTURA / BACKUP / IMPLANTACAO / NETBACKUP / CORPORATIVO / NAO SE APLICA - Atividade Implantação / Sev: 4 (OI_IMPLATACAO_BACKUP_FABRICA) / INFRA ESTRUTURA / BACKUP / IMPLANTACAO / TSM / CORPORATIVO / NAO SE APLICA - Atividade Implantação / Sev: 4 (OI_IMPLATACAO_BACKUP_FABRICA)
- 143: INFRA ESTRUTURA / MONITORACAO / IMPLANTACAO / ADICAO MONITORACAO UNIX/LINUX / NAO SE APLICA / NAO SE APLICA / INFRA ESTRUTURA / MONITORACAO / IMPLANTACAO / ADICAO MONITORACAO WINDOWS / NAO SE APLICA / NAO SE APLICA / - Atividade Recorrente / Sev: 4 / CONTROLE_ATIVOS_NIVEL2 (posteriormente será redesignado para o grupo executor da atividade)

| ID | WBS | Task | Duration | Start | Finish | Predecessors | Total slack | Free slack | Resources | Work |
| --- | --- | --- | --- | --- | --- | --- | --- | --- | --- | --- |
| 149 | 7.6.4 | **Entrega Final** | 8d | 2014-12-05 | 2014-12-16 |  | 5d | 0d |  | 64h |
| 150 | 7.6.4.1 | **Certificação da Implantação** | 8d | 2014-12-05 | 2014-12-16 |  | 5d |  |  | 64h |
| 151 | 7.6.4.1.1 | Certificação da Implantação R2 | 8d | 2014-12-05 | 2014-12-16 | 133 | 5d | 0d | Segurança da Informação | 64h |
| 152 | 7.6.5 | **Validação/Aceite da Entrega Final Ambiente: HOM - Camada: BANCO DE DADOS Servidor(es): RAPHX03A/B (Cluster)** | 2d | 2014-12-17 | 2014-12-18 | 149 | 5d |  |  | 32h |
| 153 | 7.6.5.1 | Validação/ Aceite da Entrega Final Ambiente | 1d | 2014-12-17 | 2014-12-17 | 151 | 5d | 0d | Augusto; Frossard | 16h |
| 154 | 7.6.5.2 | Aceite da Entrega Final | 1d | 2014-12-18 | 2014-12-18 | 153 | 5d | 0d | Augusto; Frossard | 16h |
| 155 | 7.7 | **ARS Filhos Instalação/ Configuração - Ambiente: HOM - Camada: WEB Servidor(es): RAPHX01 e RAUHX01 (NLB); Ambiente: DEV Servidores RAPDX02 e RAUDX02** | 43d | 2014-11-12 | 2015-01-29 |  | 0d |  |  | 496h |
| 156 | 7.7.1 | Abertura dos ARSs Filhos | 2d | 2014-11-12 | 2014-11-13 | 42, 36FS+15d | 0d |  | Thasio | 16h |
| 157 | 7.7.2 | **Entrega Parcial** | 40d | 2014-11-14 | 2015-01-28 |  | 0d |  |  | 464h |
| 158 | 7.7.2.1 | **Instalação de servidor virtual** | 6d | 2014-11-14 | 2014-11-25 |  | 0d |  |  | 48h |
| 159 | 7.7.2.1.1 | Instalação do s.o. (Linux/Unix) R2 (BSB:SIG) | 4d | 2014-11-14 | 2014-11-19 | 156 | 0d |  | Suporte Unix | 32h |
| 160 | 7.7.2.1.2 | Instalação e configuração de área de disco e configurações de servidor virtual (BSB:SIG) | 2d | 2014-11-24 | 2014-11-25 | 159 | 0d |  | Suporte Storage | 16h |
| 161 | 7.7.2.2 | **Criação de partições/ filesystems e usuários** | 4d | 2014-11-26 | 2014-12-01 |  | 0d |  |  | 32h |
| 162 | 7.7.2.2.1 | Criação de filesystems e usuários Unix/Linux R2 (BSB:SIG) | 4d | 2014-11-26 | 2014-12-01 | 158 | 0d |  | Suporte Unix | 32h |
| 163 | 7.7.2.3 | **Cadastro do IP de backup no media server** | 2d | 2014-12-02 | 2014-12-03 |  | 0d |  |  | 16h |
| 164 | 7.7.2.3.1 | Cadastro do IP de backup no media server R2 (BSB:SIG) | 2d | 2014-12-02 | 2014-12-03 | 162 | 0d |  | Suporte Unix | 16h |
| 165 | 7.7.2.4 | **Instalação/ Configuração de serviços Web e Integração** | 16d | 2014-12-04 | 2015-01-08 |  | 0d |  |  | 128h |
| 166 | 7.7.2.4.1 | Validação do ambiente (Infra Core) | 2d | 2014-12-04 | 2014-12-05 | 164 | 0d |  | Suporte Web | 16h |
| 167 | 7.7.2.4.2 | Criação de entrada no DNS *** somente em caso de site externo *** | 2d | 2014-12-08 | 2014-12-09 | 166 | 0d |  | Rede Corporativa | 16h |
| 168 | 7.7.2.4.3 | **Web Servers - UNIX - Apache e IBMIHS** | 7d | 2014-12-10 | 2014-12-18 | 162, 166 | 0d |  |  | 56h |
| 169 | 7.7.2.4.3.1 | Criação de Site em Apache (com ou sem PHP) e IBMIHS | 2d | 2014-12-10 | 2014-12-11 | 167 | 0d |  | Suporte Web | 16h |
| 170 | 7.7.2.4.3.2 | Instalação de Web Server - Apache (com ou sem PHP) ou IBMIHS | 5d | 2014-12-12 | 2014-12-18 | 169 | 0d |  | Suporte Web | 40h |
| 171 | 7.7.2.4.4 | **Implementação/ Validação de Conectividade** | 5d | 2014-12-19 | 2015-01-08 |  | 64d |  |  | 40h |
| 172 | 7.7.2.4.4.1 | Implementação/ Validaão de Conectividade | 5d | 2014-12-19 | 2015-01-08 | 170 | 64d |  | Integração | 40h |

Notes:
- 151: A atividade de certificação da implantação ocorre da seguinte forma: / 1 - Coleta das informações ocorre sempre as segunda-feiras / 2 - Resultado da análise dos dados coletados que ocorre sempre as quinta-feiras / Desta forma o prazo de 8 dias reflete o pior cenário, isto é um ARS sendo aberto em uma terça-feira para ser concuído na quinta-feira da semana seguinte. / Este prazo deverá ser ajustado sempre que necessário, tanto o inicio da atividade, quando a duração da mesma. / SEGURANCA DA INFORMACAO / TECNOLOGIA / PROJETO PROTEUS / PARECER DE SEGURANCA / CERTIFICACAO / SERVIDORES TI BD - Atividade Recorrente / Sev: 4 / SEGURANCA DA INFORMACAO / TECNOLOGIA / PROJETO PROTEUS / PARECER DE SEGURANCA / CERTIFICACAO / SERVIDORES TI INFRAWEB - Atividade Recorrente / Sev: 4 / SEGURANCA DA INFORMACAO / TECNOLOGIA / PROJETO PROTEUS / PARECER DE SEGURANCA / CERTIFICACAO / SERVIDORES TI UNIX / LINUX - Atividade Recorrente / Sev: 4 / SEGURANCA DA INFORMACAO / TECNOLOGIA / PROJETO PROTEUS / PARECER DE SEGURANCA / CERTIFICACAO / SERVIDORES TI WINDOWS - Atividade Recorrente / Sev: 4 / SEGURANCA_PROTEUS
- 159: INFRA ESTRUTURA / SUPORTE UNIX RII / PROJETO / SERVIDOR SISTEMA OPERACIONAL / INSTALAR / INFRA_SUP_UNIX_FABRICA
- 160: Quando solicitarem criação de instância em cluster Oracle RAC, além dos discos compartilhados do database é necessário também 2 discos de 48GB, 1 para cada servidor, para os binários. / INFRA ESTRUTURA II / STORAGE / SERVIDOR / ALOCACAO / PLATAFORMA DISTRIBUIDA / IMPLANTACAO / INFRA_SUP_STORAGE_FABRICA
- 162: INFRA ESTRUTURA / SUPORTE UNIX RI / PROJETO / SERVIDOR FILESYSTEM / CRIAR / INFRA ESTRUTURA / SUPORTE UNIX RI / PROJETO / ACESSO GRUPO / CRIAR / INFRA ESTRUTURA / SUPORTE UNIX RI / PROJETO / ACESSO USUARIO / CRIAR / INFRA_SUP_UNIX
- 164: INFRA ESTRUTURA / SUPORTE UNIX RII / PROJETO / AGENTES NETBACKUP / CADASTRAR MEDIA SERVER / INFRA_SUP_UNIX_FABRICA
- 166: Atividade incluída a pedido do time de Gestão de Ambientes para que eles possam certificar que todos os pré-requisitos necessários para eles efetuarem uma instalação foram devidamente atendidos. / * Não remover esta atividade sem antes alinhar com o ponto focal desta equipe que estiver responsavel pelo projeto/demanda *
- 167: Utilizar o padrão de nomenclatura abaixo: / site interno = dominio ".intranet" / Site externo - Corporativo = dominio ".oi.net.br" (ex: sisjur) / Site externo - Institucional = dominio ".oi.com.br" (ex: Portal Oi) / - DMZ (Acesso proveniente de Internet) / Deve ser alinhado com o solicitante, redes e GA WEB, pois existem outros fatores envolvidos: / - Se o dominio nao existir necessidade de aquisição / - Localização dos web servers / - Restrições de nomes / Caso exista alteon na solução o DNS deverá apontar para o VIP do alteon. Verificar no desenho da solução. / INFRA ESTRUTURA / REDE CORPORATIVA / DNS / CONFIGURACAO / NOME / INCLUSAO - Atividade Recorrente / Sev: 4 / INFRA_SUP_REDE
- 169: Desenho da solução / Nome do site (entrada no DNS) / Acesso o check-list de instalação e o modelo de formulário de detalhamento para esta atividade no link abaixo: / http://sharepoint2007/tecnologia/0002/supweb/Padres%20da%20rea/Forms/AllItems.aspx?RootFolder=%2ftecnologia%2f0002%2fsupweb%2fPadres%20da%20rea%2fChecklist%20de%20instala%c3%a7%c3%a3o&FolderCTID=&View=%7b48BAAFB9%2dB297%2d465E%2dBE3E%2d99E893143504%7d / INFRA ESTRUTURA / GESTAO DE AMBIENTE WEB / CONFIGURACAO / APACHE / CRIACAO DE VIRTUAL HOST / HOMOLOGACAO DESENVOLVIMENTO - Atividade Recorrente / Sev: 4 / INFRA ESTRUTURA / GESTAO DE AMBIENTE WEB / CONFIGURACAO / APACHE / CRIACAO DE VIRTUAL HOST / PRODUCAO - Atividade Recorrente / Sev: 4 / SUPORTE_GA_WEB
- 170: Acesso o check-list de instalação e o modelo de formulário de detalhamento para esta atividade no link abaixo: / http://sharepoint2007/tecnologia/0002/supweb/Padres%20da%20rea/Forms/AllItems.aspx?RootFolder=%2ftecnologia%2f0002%2fsupweb%2fPadres%20da%20rea%2fChecklist%20de%20instala%c3%a7%c3%a3o&FolderCTID=&View=%7b48BAAFB9%2dB297%2d465E%2dBE3E%2d99E893143504%7d / INFRA ESTRUTURA / GESTAO DE AMBIENTE WEB / INSTALACAO / APACHE / PRODUTO / HOMOLOGACAO DESENVOLVIMENTO - Atividade Implantação / Sev: 4 / INFRA ESTRUTURA / GESTAO DE AMBIENTE WEB / INSTALACAO / APACHE / PRODUTO / PRODUCAO - Atividade Implantação / Sev: 4 / OI_AMBIENTES_SERVICOS

| ID | WBS | Task | Duration | Start | Finish | Predecessors | Total slack | Free slack | Resources | Work |
| --- | --- | --- | --- | --- | --- | --- | --- | --- | --- | --- |
| 173 | 7.7.2.5 | **Implementação de Backup** | 5d | 2014-12-19 | 2015-01-08 |  | 56d |  |  | 40h |
| 174 | 7.7.2.5.1 | Implementação de Backup R2 (BSB:SIG) | 5d | 2014-12-19 | 2015-01-08 | 170 | 56d | 0d | PCP Backup | 40h |
| 175 | 7.7.2.6 | **Certificação da Implantação** | 8d | 2015-01-09 | 2015-01-22 |  | 56d |  |  | 64h |
| 176 | 7.7.2.6.1 | Certificação da Implantação R2 (BSB:SIG) | 8d | 2015-01-09 | 2015-01-22 | 174 | 56d |  | Segurança da Informação | 64h |
| 177 | 7.7.2.7 | **Implementação de Monitoração** | 7d | 2014-12-19 | 2015-01-12 |  | 32d |  |  | 56h |
| 178 | 7.7.2.7.1 | Implementação de Monitoração R2 (BSB:SIG) | 7d | 2014-12-19 | 2015-01-12 | 170 | 32d | 0d | CCO | 56h |
| 179 | 7.7.2.8 | **Implementação de GA** | 10d | 2015-01-13 | 2015-01-28 | 178 | 32d |  |  | 80h |
| 180 | 7.7.2.8.1 | Implementação de GA | 10d | 2015-01-13 | 2015-01-28 |  | 32d | 0d | Leandro Frossard | 80h |
| 181 | 7.7.3 | **Validação/ Aceite da Entrega Parcial Ambiente: HOM - Camada: WEB Servidor(es): RAPHX01; RAUHX01** | 1d | 2015-01-09 | 2015-01-09 |  | 63d |  |  | 8h |
| 182 | 7.7.3.1 | Validação/ Aceite da Entrega Parcial Ambiente: HOM - Camada: WEB Servidor(es): RAPHX01; RAUHX01 | 1d | 2015-01-09 | 2015-01-09 | 174 | 63d |  | Vivian | 8h |
| 183 | 7.7.4 | **Entrega Final - Certificação de Implantação e Monitoramento** | 1d | 2015-01-29 | 2015-01-29 |  | 32d |  |  | 8h |
| 184 | 7.7.4.1 | **Validação/ Aceite da Entrega Final Ambiente: HOM - Camada: WEB Servidor(es): RAPHX01; RAUHX01** | 1d | 2015-01-29 | 2015-01-29 |  | 32d |  |  | 8h |
| 185 | 7.7.4.1.1 | Validação/ Aceite da Entrega Final Ambiente: HOM - Camada: WEB Servidor(es): RAPHX01; RAUHX01 | 1d | 2015-01-29 | 2015-01-29 | 180 | 32d | 0d | Vivian | 8h |
| 186 | 7.8 | **Entrega do Ambiente de Homologação** | 2d | 2015-01-29 | 2015-01-30 |  | 50d |  |  |  |
| 187 | 7.8.1 | Entrega do Ambiente de Homologação | 2d | 2015-01-29 | 2015-01-30 | 180, 154, 124 | 50d |  |  |  |
| 188 | 7.9 | **Acompanhamento Pós-Entrega de Homologação** | 19d | 2015-01-30 | 2015-03-02 |  | 32d |  |  | 152h |
| 189 | 7.9.1 | **Solicitação de Operação Assistida** | 19d | 2015-01-30 | 2015-03-02 |  | 32d |  |  | 152h |
| 190 | 7.9.1.1 | Realização de Operação Assistida | 19d | 2015-01-30 | 2015-03-02 | 185 | 32d |  | Integração | 152h |
| 191 | 7.10 | **ARS Filhos Instalação/ Configuração - Ambiente: PRD - Camada: APLICAÇÃO Servidor(es): RAPPX02A/B/C e RAUPX02A/B/C (Cluster)** | 42d | 2014-12-19 | 2015-03-09 |  | 3d |  |  | 608h |
| 192 | 7.10.1 | Abertura dos ARSs Filhos | 2d | 2014-12-19 | 2015-01-05 | 124, 186 | 3d | 0d | Thasio | 16h |
| 193 | 7.10.2 | **Entrega Parcial** | 30d | 2015-01-06 | 2015-02-23 | 192 | 3d | 0d |  | 480h |
| 194 | 7.10.2.1 | **Instalação de servidor físico** | 12d | 2015-01-06 | 2015-01-23 | 192 | 3d |  |  | 96h |
| 195 | 7.10.2.1.1 | Criação de estrutura de servidor físico Linux (R2) | 2d | 2015-01-06 | 2015-01-07 |  | 3d | 0d | Suporte Windows | 16h |
| 196 | 7.10.2.1.2 | Instalação do s.o. Linux (R2) | 10d | 2015-01-08 | 2015-01-23 | 195 | 3d | 0d | Suporte Unix | 80h |

Notes:
- 174: INFRA ESTRUTURA / BACKUP / IMPLANTACAO / NETBACKUP / CORPORATIVO / NAO SE APLICA - Atividade Implantação / Sev: 4 (OI_IMPLATACAO_BACKUP_FABRICA)
- 176: A atividade de certificação da implantação ocorre da seguinte forma: / 1 - Coleta das informações ocorre sempre as segunda-feiras / 2 - Resultado da análise dos dados coletados que ocorre sempre as quinta-feiras / Desta forma o prazo de 8 dias reflete o pior cenário, isto é um ARS sendo aberto em uma terça-feira para ser concuído na quinta-feira da semana seguinte. / Este prazo deverá ser ajustado sempre que necessário, tanto o inicio da atividade, quando a duração da mesma. / SEGURANCA DA INFORMACAO / TECNOLOGIA / PROJETO PROTEUS / PARECER DE SEGURANCA / CERTIFICACAO / SERVIDORES TI BD - Atividade Recorrente / Sev: 4 / SEGURANCA DA INFORMACAO / TECNOLOGIA / PROJETO PROTEUS / PARECER DE SEGURANCA / CERTIFICACAO / SERVIDORES TI INFRAWEB - Atividade Recorrente / Sev: 4 / SEGURANCA DA INFORMACAO / TECNOLOGIA / PROJETO PROTEUS / PARECER DE SEGURANCA / CERTIFICACAO / SERVIDORES TI UNIX / LINUX - Atividade Recorrente / Sev: 4 / SEGURANCA DA INFORMACAO / TECNOLOGIA / PROJETO PROTEUS / PARECER DE SEGURANCA / CERTIFICACAO / SERVIDORES TI WINDOWS - Atividade Recorrente / Sev: 4 / SEGURANCA_PROTEUS
- 178: INFRA ESTRUTURA / MONITORACAO / IMPLANTACAO / ADICAO MONITORACAO UNIX/LINUX / NAO SE APLICA / NAO SE APLICA / INFRA ESTRUTURA / MONITORACAO / IMPLANTACAO / ADICAO MONITORACAO WINDOWS / NAO SE APLICA / NAO SE APLICA / - Atividade Recorrente / Sev: 4 / CONTROLE_ATIVOS_NIVEL2 (posteriormente será redesignado para o grupo executor da atividade)
- 190: INFRA ESTRUTURA/ OPERACOES E AMBIENTES/ PROJETO/ POS IMPLANTACAO/ OPERACAO ASSISTIDA/ QUALIDADE E PROCESSO
- 195: INFRA ESTRUTURA / SUPORTE SERVIDORES WINDOWS / SISTEMA OPERACIONAL / CRIAR ESTRUTURA DE MAQUINA VIRTUAL LINUX /UNIX / DF SP AC RO MT TO GO MS PR RS / SI42 / INFRA_SUP_WINDOWS_FABRICA
- 196: INFRA ESTRUTURA / SUPORTE UNIX RII / PROJETO / SERVIDOR SISTEMA OPERACIONAL / INSTALAR / INFRA_SUP_UNIX_FABRICA

| ID | WBS | Task | Duration | Start | Finish | Predecessors | Total slack | Free slack | Resources | Work |
| --- | --- | --- | --- | --- | --- | --- | --- | --- | --- | --- |
| 197 | 7.10.2.2 | **Criação de partições/ filesystems e usuários** | 5d | 2015-01-26 | 2015-01-30 | 192 | 3d | 0d |  | 40h |
| 198 | 7.10.2.2.1 | Criação de filesystems e usuários Unix/Linux (R2) | 5d | 2015-01-26 | 2015-01-30 | 196 | 3d |  | Suporte Unix | 40h |
| 199 | 7.10.2.3 | **Instalação/ Configuração de Oracle Client 11g** | 3d | 2015-02-02 | 2015-02-04 | 192 | 3d | 0d |  | 24h |
| 200 | 7.10.2.3.1 | Instalação de cliente Oracle Client 11g | 3d | 2015-02-02 | 2015-02-04 | 194, 197 | 3d | 0d | Suporte BD | 24h |
| 201 | 7.10.2.4 | **Implementação/ Validação de Conectividade** | 10d | 2015-02-05 | 2015-02-23 |  | 3d |  |  | 80h |
| 202 | 7.10.2.4.1 | Implementação/ Validação de Conectividade | 10d | 2015-02-05 | 2015-02-23 | 200 | 3d |  | Integração | 80h |
| 203 | 7.10.2.5 | **Implementação de Backup** | 10d | 2015-02-02 | 2015-02-13 | 194, 197 | 6d |  |  | 80h |
| 204 | 7.10.2.5.1 | Implementação de Backup R2 | 10d | 2015-02-02 | 2015-02-13 |  | 6d |  | PCP Backup | 80h |
| 205 | 7.10.2.6 | **Implementação de Monitoração** | 10d | 2015-02-05 | 2015-02-23 | 194, 197, 199 | 3d |  |  | 80h |
| 206 | 7.10.2.6.1 | Implementação de Monitoração R2 | 10d | 2015-02-05 | 2015-02-23 |  | 3d |  | CCO | 80h |
| 207 | 7.10.2.7 | **Implementação de GA** | 10d | 2015-02-05 | 2015-02-23 |  | 3d |  |  | 80h |
| 208 | 7.10.2.7.1 | Implementação de GA | 10d | 2015-02-05 | 2015-02-23 | 200 | 3d |  | Leandro Frossard | 80h |
| 209 | 7.10.3 | **Validação/ Aceite da Entrega Parcial Ambiente: HOM - Camada: APLICAÇÃO Servidor(es): RAPHX02 e RAUHX02** | 2d | 2015-02-24 | 2015-02-25 | 193 | 35d |  |  | 16h |
| 210 | 7.10.3.1 | Validação/ Aceite da Entrega Parcial Ambiente | 1d | 2015-02-24 | 2015-02-24 |  | 35d | 0d | Leandro Frossard | 8h |
| 211 | 7.10.3.2 | Aceite da Entrega Parcial | 1d | 2015-02-25 | 2015-02-25 | 210 | 35d |  | Leandro Frossard | 8h |
| 212 | 7.10.4 | **Entrega Final** | 8d | 2015-02-24 | 2015-03-05 | 193 | 3d | 0d |  | 64h |
| 213 | 7.10.4.1 | **Certificação da Implantação** | 8d | 2015-02-24 | 2015-03-05 |  | 3d |  |  | 64h |
| 214 | 7.10.4.1.1 | Certificação da Implantação R2 | 8d | 2015-02-24 | 2015-03-05 | 199 | 3d | 0d | Segurança da Informação | 64h |
| 215 | 7.10.5 | **Validação/Aceite da Entrega Final Ambiente: HOM - Camada: APLICAÇÃO Servidor(es): RAPHX02 e RAUHX02** | 2d | 2015-03-06 | 2015-03-09 | 212 | 3d |  |  | 32h |
| 216 | 7.10.5.1 | Validação/ Aceite da Entrega Final Ambiente | 1d | 2015-03-06 | 2015-03-06 | 214 | 3d | 0d | Augusto; Frossard | 16h |
| 217 | 7.10.5.2 | Aceite da Entrega Final | 1d | 2015-03-09 | 2015-03-09 | 216 | 3d |  | Augusto; Frossard | 16h |
| 218 | 7.11 | **ARS Filhos Instalação/ Configuração - Ambiente: PRD - Camada: BANCO DE DADOS Servidor(es): RAPPX03A/B/C e RAUPX03A/B/C (Cluster)** | 42d | 2014-12-19 | 2015-03-09 |  | 5d |  |  | 768h |
| 219 | 7.11.1 | Abertura dos ARSs Filhos | 3d | 2014-12-19 | 2015-01-06 | 154, 186 | 5d | 0d | Thasio | 24h |
| 220 | 7.11.2 | **Entrega Parcial** | 39d | 2015-01-07 | 2015-03-09 | 219 | 5d |  |  | 616h |
| 221 | 7.11.2.1 | **Configurção em Servidor Físico** | 15d | 2015-01-07 | 2015-01-29 | 219 | 5d | 0d |  | 120h |
| 222 | 7.11.2.1.1 | Criação de estrutura de maquina física Linux (R2) | 5d | 2015-01-07 | 2015-01-13 |  | 5d | 0d | Suporte Windows | 40h |
| 223 | 7.11.2.1.2 | Instalação do s.o. Linux (R2) | 10d | 2015-01-14 | 2015-01-29 | 222 | 5d | 0d | Suporte Unix | 80h |

Notes:
- 198: INFRA ESTRUTURA / SUPORTE UNIX RII / PROJETO / SERVIDOR FILESYSTEM / CRIAR / INFRA ESTRUTURA / SUPORTE UNIX RII / PROJETO / ACESSO USUARIO / CRIAR / INFRA ESTRUTRUA / SUPORTE UNIX RII / PROJETO / ACESSO GRUPO / CRIAR / INFRA_SUP_UNIX_FABRICA
- 200: INFRA ESTRUTURA / SUPORTE SYBASE / CLIENT / SYBASE / INSTALAR / PROJETO - Atividade Implantação / Sev: 4 / OI_FABRICA_3CON_SQLSERVER / INFRA ESTRUTURA / SUPORTE SQL SERVER / CLIENT / SQL / INSTALAR / PROJETO - Atividade Implantação / Sev: 4 / OI_FABRICA_3CON_SQLSERVER / INFRA ESTRUTURA / SUPORTE ORACLE / SOFTWARE CLIENT / INSTALAR/ATUALIZAR / NAO PRODUCAO / NAO SE APLICA - Atividade Recorrente / Sev: 4 / OI_FABRICA_3CON_ORACLE / INFRA ESTRUTURA / SUPORTE ORACLE / SOFTWARE CLIENT / INSTALAR/ATUALIZAR / PRODUCAO / NAO SE APLICA - Atividade Recorrente / Sev: 4 / OI_FABRICA_3CON_ORACLE / INFRA ESTRUTURA / SUPORTE MYSQL / CLIENT / MYSQL / INSTALAR / PROJETO - Atividade Implantação / Sev: 4 / OI_FABRICA_3CON_SQLSERVER / INFRA ESTRUTURA / TERADATA / BANCO DE DADOS / DW / INSTALACAO / CLIENT / TOOLS - Atividade Recorrente / Sev: 4 / INFRA_SUP_TERADATA
- 204: INFRA ESTRUTURA / BACKUP / IMPLANTACAO / NETBACKUP / CORPORATIVO / NAO SE APLICA - Atividade Implantação / Sev: 4 (OI_IMPLATACAO_BACKUP_FABRICA) / INFRA ESTRUTURA / BACKUP / IMPLANTACAO / TSM / CORPORATIVO / NAO SE APLICA - Atividade Implantação / Sev: 4 (OI_IMPLATACAO_BACKUP_FABRICA)
- 206: INFRA ESTRUTURA / MONITORACAO / IMPLANTACAO / ADICAO MONITORACAO UNIX/LINUX / NAO SE APLICA / NAO SE APLICA / INFRA ESTRUTURA / MONITORACAO / IMPLANTACAO / ADICAO MONITORACAO WINDOWS / NAO SE APLICA / NAO SE APLICA / - Atividade Recorrente / Sev: 4 / CONTROLE_ATIVOS_NIVEL2 (posteriormente será redesignado para o grupo executor da atividade)
- 214: A atividade de certificação da implantação ocorre da seguinte forma: / 1 - Coleta das informações ocorre sempre as segunda-feiras / 2 - Resultado da análise dos dados coletados que ocorre sempre as quinta-feiras / Desta forma o prazo de 8 dias reflete o pior cenário, isto é um ARS sendo aberto em uma terça-feira para ser concuído na quinta-feira da semana seguinte. / Este prazo deverá ser ajustado sempre que necessário, tanto o inicio da atividade, quando a duração da mesma. / SEGURANCA DA INFORMACAO / TECNOLOGIA / PROJETO PROTEUS / PARECER DE SEGURANCA / CERTIFICACAO / SERVIDORES TI BD - Atividade Recorrente / Sev: 4 / SEGURANCA DA INFORMACAO / TECNOLOGIA / PROJETO PROTEUS / PARECER DE SEGURANCA / CERTIFICACAO / SERVIDORES TI INFRAWEB - Atividade Recorrente / Sev: 4 / SEGURANCA DA INFORMACAO / TECNOLOGIA / PROJETO PROTEUS / PARECER DE SEGURANCA / CERTIFICACAO / SERVIDORES TI UNIX / LINUX - Atividade Recorrente / Sev: 4 / SEGURANCA DA INFORMACAO / TECNOLOGIA / PROJETO PROTEUS / PARECER DE SEGURANCA / CERTIFICACAO / SERVIDORES TI WINDOWS - Atividade Recorrente / Sev: 4 / SEGURANCA_PROTEUS
- 222: INFRA ESTRUTURA / SUPORTE SERVIDORES WINDOWS / SISTEMA OPERACIONAL / CRIAR ESTRUTURA DE MAQUINA VIRTUAL LINUX /UNIX / DF SP AC RO MT TO GO MS PR RS / SI42 / INFRA_SUP_WINDOWS_FABRICA
- 223: INFRA ESTRUTURA / SUPORTE UNIX RII / PROJETO / SERVIDOR SISTEMA OPERACIONAL / INSTALAR / INFRA_SUP_UNIX_FABRICA

| ID | WBS | Task | Duration | Start | Finish | Predecessors | Total slack | Free slack | Resources | Work |
| --- | --- | --- | --- | --- | --- | --- | --- | --- | --- | --- |
| 224 | 7.11.2.2 | **Criação de partições/ filesystems e usuários** | 5d | 2015-01-30 | 2015-02-05 | 219 | 34d | 0d |  | 40h |
| 225 | 7.11.2.2.1 | Criação de filesystems e usuários Unix/Linux (R2) | 5d | 2015-01-30 | 2015-02-05 | 223 | 34d |  | Suporte Unix | 40h |
| 226 | 7.11.2.3 | **Instalação/ Configuração de banco de dados** | 12d | 2015-01-30 | 2015-02-19 | 219, 221 | 5d | 0d |  | 96h |
| 227 | 7.11.2.3.1 | Instalação de Oracle Clusterware (Oracle RAC) | 5d | 2015-01-30 | 2015-02-05 |  | 5d | 0d | Suporte BD | 40h |
| 228 | 7.11.2.3.2 | Instalação de binário | 2d | 2015-02-06 | 2015-02-09 | 227 | 5d | 0d | Suporte BD | 16h |
| 229 | 7.11.2.3.3 | Criação de instância / banco | 5d | 2015-02-10 | 2015-02-19 | 228 | 5d |  | Suporte BD | 40h |
| 230 | 7.11.2.3.4 | Criação de schema (somente BD Oracle) | 2d | 2015-02-10 | 2015-02-11 | 228 | 8d | 0d |  |  |
| 231 | 7.11.2.4 | **Implementação/ Validação de Conectividade** | 10d | 2015-02-12 | 2015-03-02 |  | 32d |  |  | 80h |
| 232 | 7.11.2.4.1 | Implementação/ Validação de Conectividade | 10d | 2015-02-12 | 2015-03-02 | 230 | 32d |  | Integração | 80h |
| 233 | 7.11.2.5 | **Implementação de Backup** | 10d | 2015-02-06 | 2015-02-24 | 221, 224 | 34d |  |  | 80h |
| 234 | 7.11.2.5.1 | Implementação de Backup R2 | 10d | 2015-02-06 | 2015-02-24 |  | 34d | 0d | PCP Backup | 80h |
| 235 | 7.11.2.6 | **Implementação de Monitoração** | 10d | 2015-02-20 | 2015-03-05 | 221, 224, 226 | 29d |  |  | 80h |
| 236 | 7.11.2.6.1 | Implementação de Monitoração R2 | 10d | 2015-02-20 | 2015-03-05 |  | 29d |  | CCO | 80h |
| 237 | 7.11.2.7 | **Implementação de GA** | 15d | 2015-02-12 | 2015-03-09 |  | 27d |  |  | 120h |
| 238 | 7.11.2.7.1 | Implementação de GA | 15d | 2015-02-12 | 2015-03-09 | 230 | 27d |  | Leandro Frossard | 120h |
| 239 | 7.11.3 | **Validação/ Aceite da Entrega Parcial Ambiente: HOM - Camada: BANCO DE DADOS Servidor(es): RAPHX03A/B (Cluster)** | 2d | 2015-02-25 | 2015-02-26 |  | 34d |  |  | 32h |
| 240 | 7.11.3.1 | Validação/ Aceite da Entrega Parcial Ambiente | 1d | 2015-02-25 | 2015-02-25 | 234 | 34d | 0d | Augusto; Frossard | 16h |
| 241 | 7.11.3.2 | Aceite da Entrega Parcial | 1d | 2015-02-26 | 2015-02-26 | 240 | 34d |  | Augusto; Frossard | 16h |
| 242 | 7.11.4 | **Entrega Final** | 8d | 2015-02-20 | 2015-03-03 |  | 5d | 0d |  | 64h |
| 243 | 7.11.4.1 | **Certificação da Implantação** | 8d | 2015-02-20 | 2015-03-03 |  | 5d |  |  | 64h |
| 244 | 7.11.4.1.1 | Certificação da Implantação R2 | 8d | 2015-02-20 | 2015-03-03 | 226 | 5d | 0d | Segurança da Informação | 64h |
| 245 | 7.11.5 | **Validação/Aceite da Entrega Final Ambiente: HOM - Camada: BANCO DE DADOS Servidor(es): RAPHX03A/B (Cluster)** | 2d | 2015-03-04 | 2015-03-05 | 242 | 5d |  |  | 32h |
| 246 | 7.11.5.1 | Validação/ Aceite da Entrega Final Ambiente | 1d | 2015-03-04 | 2015-03-04 | 244 | 5d | 0d | Augusto; Frossard | 16h |
| 247 | 7.11.5.2 | Aceite da Entrega Final | 1d | 2015-03-05 | 2015-03-05 | 246 | 5d |  | Augusto; Frossard | 16h |

Notes:
- 225: INFRA ESTRUTURA / SUPORTE UNIX RII / PROJETO / SERVIDOR FILESYSTEM / CRIAR / INFRA ESTRUTURA / SUPORTE UNIX RII / PROJETO / ACESSO USUARIO / CRIAR / INFRA ESTRUTRUA / SUPORTE UNIX RII / PROJETO / ACESSO GRUPO / CRIAR / INFRA_SUP_UNIX_FABRICA
- 227: Usar template para criar no CMDB / INFRA ESTRUTURA / SUPORTE ORACLE / BANCO/INSTANCIA / CRIAR / NAO PRODUCAO / NAO SE APLICA - Atividade Recorrente / Sev: 4 / OI_FABRICA_3CON_ORACLE / INFRA ESTRUTURA / SUPORTE ORACLE / BANCO/INSTANCIA / CRIAR / PRODUCAO / NAO SE APLICA - Atividade Recorrente / Sev: 4 / OI_FABRICA_3CON_ORACLE
- 228: INFRA ESTRUTURA / SUPORTE ORACLE / BANCO/INSTANCIA / CRIAR / NAO PRODUCAO / NAO SE APLICA - Atividade Recorrente / Sev: 4 / OI_FABRICA_3CON_ORACLE / INFRA ESTRUTURA / SUPORTE ORACLE / BANCO/INSTANCIA / CRIAR / PRODUCAO / NAO SE APLICA - Atividade Recorrente / Sev: 4 / OI_FABRICA_3CON_ORACLE / INFRA ESTRUTURA / SUPORTE MYSQL / BANCO / CRIAR / PROJETO / NAO SE APLICA - Atividade Implantação / Sev: 3 / INFRA_SUP_MYSQL / INFRA ESTRUTURA / SUPORTE SYBASE / BANCO / CRIAR / PROJETO / NAO SE APLICA - Atividade Implantação / Sev: 3 / INFRA_SUP_SYBASE / INFRA ESTRUTURA / SUPORTE SQL SERVER / BANCO / CRIAR / PROJETO / NAO SE APLICA - Atividade Implantação / Sev: 3 / INFRA_SUP_SQLSERVER
- 229: INFRA ESTRUTURA / SUPORTE MYSQL / INSTANCIA / INSTALAR / PROJETO / NAO SE APLICA - Atividade Implantação / Sev: 4 / INFRA_SUP_MYSQL / INFRA ESTRUTURA / SUPORTE SYBASE / INSTANCIA / INSTALAR / PROJETO / NAO SE APLICA - Atividade Implantação / Sev: 4 / INFRA_SUP_SYBASE / INFRA ESTRUTURA / SUPORTE SQL SERVER / INSTANCIA / INSTALAR / PROJETO / NAO SE APLICA - Atividade Implantação / Sev: 4 / INFRA_SUP_SQLSERVER / INFRA ESTRUTURA / SUPORTE SQL SERVER / INTEGRATION SERVICES/ INSTANCIA / INSTALAR / PROJETO - Atividade Implantação / Sev: 4 / INFRA_SUP_SQLSERVER / INFRA ESTRUTURA / SUPORTE SQL SERVER / NOTIFICATION SERVICES/ INSTANCIA / INSTALAR / PROJETO - Atividade Implantação / Sev: 4 / INFRA_SUP_SQLSERVER / INFRA ESTRUTURA / SUPORTE SQL SERVER / REPORTING SERVICES/ INSTANCIA / INSTALAR / PROJETO - Atividade Implantação / Sev: 4 / INFRA_SUP_SQLSERVER
- 230: INFRA ESTRUTURA / SUPORTE ORACLE / USUARIO/SCHEMA / CRIAR / NAO PRODUCAO / NAO SE APLICA - Atividade Recorrente / Sev: 4 / INFRA ESTRUTURA / SUPORTE ORACLE / USUARIO/SCHEMA / CRIAR / PRODUCAO / NAO SE APLICA - Atividade Recorrente / Sev: 4 / INFRA_SUP_ORACLE_SERVICO
- 234: INFRA ESTRUTURA / BACKUP / IMPLANTACAO / NETBACKUP / CORPORATIVO / NAO SE APLICA - Atividade Implantação / Sev: 4 (OI_IMPLATACAO_BACKUP_FABRICA) / INFRA ESTRUTURA / BACKUP / IMPLANTACAO / TSM / CORPORATIVO / NAO SE APLICA - Atividade Implantação / Sev: 4 (OI_IMPLATACAO_BACKUP_FABRICA)
- 236: INFRA ESTRUTURA / MONITORACAO / IMPLANTACAO / ADICAO MONITORACAO UNIX/LINUX / NAO SE APLICA / NAO SE APLICA / INFRA ESTRUTURA / MONITORACAO / IMPLANTACAO / ADICAO MONITORACAO WINDOWS / NAO SE APLICA / NAO SE APLICA / - Atividade Recorrente / Sev: 4 / CONTROLE_ATIVOS_NIVEL2 (posteriormente será redesignado para o grupo executor da atividade)
- 244: A atividade de certificação da implantação ocorre da seguinte forma: / 1 - Coleta das informações ocorre sempre as segunda-feiras / 2 - Resultado da análise dos dados coletados que ocorre sempre as quinta-feiras / Desta forma o prazo de 8 dias reflete o pior cenário, isto é um ARS sendo aberto em uma terça-feira para ser concuído na quinta-feira da semana seguinte. / Este prazo deverá ser ajustado sempre que necessário, tanto o inicio da atividade, quando a duração da mesma. / SEGURANCA DA INFORMACAO / TECNOLOGIA / PROJETO PROTEUS / PARECER DE SEGURANCA / CERTIFICACAO / SERVIDORES TI BD - Atividade Recorrente / Sev: 4 / SEGURANCA DA INFORMACAO / TECNOLOGIA / PROJETO PROTEUS / PARECER DE SEGURANCA / CERTIFICACAO / SERVIDORES TI INFRAWEB - Atividade Recorrente / Sev: 4 / SEGURANCA DA INFORMACAO / TECNOLOGIA / PROJETO PROTEUS / PARECER DE SEGURANCA / CERTIFICACAO / SERVIDORES TI UNIX / LINUX - Atividade Recorrente / Sev: 4 / SEGURANCA DA INFORMACAO / TECNOLOGIA / PROJETO PROTEUS / PARECER DE SEGURANCA / CERTIFICACAO / SERVIDORES TI WINDOWS - Atividade Recorrente / Sev: 4 / SEGURANCA_PROTEUS

| ID | WBS | Task | Duration | Start | Finish | Predecessors | Total slack | Free slack | Resources | Work |
| --- | --- | --- | --- | --- | --- | --- | --- | --- | --- | --- |
| 248 | 7.12 | **ARS Filhos Instalação/ Configuração - Ambiente: PRD - Camada: WEB Servidor(es): RAPPX01A/B/C** | 45d | 2014-12-19 | 2015-03-12 |  | 0d |  |  | 552h |
| 249 | 7.12.1 | Abertura dos ARSs Filhos | 3d | 2014-12-19 | 2015-01-06 | 170, 186 | 0d |  | Thasio | 24h |
| 250 | 7.12.2 | **Entrega Parcial** | 41d | 2015-01-07 | 2015-03-11 |  | 0d |  |  | 512h |
| 251 | 7.12.2.1 | **Instalação de servidor virtual** | 5d | 2015-01-07 | 2015-01-13 |  | 0d |  |  | 40h |
| 252 | 7.12.2.1.1 | Instalação do s.o. (Linux/Unix) R2 (BSB:SIG) | 3d | 2015-01-07 | 2015-01-09 | 249 | 0d |  | Suporte Unix | 24h |
| 253 | 7.12.2.1.2 | Instalação e configuração de área de disco e configurações de servidor virtual (BSB:SIG) | 2d | 2015-01-12 | 2015-01-13 | 252 | 0d |  | Suporte Storage | 16h |
| 254 | 7.12.2.2 | **Criação de partições/ filesystems e usuários** | 2d | 2015-01-14 | 2015-01-15 |  | 0d |  |  | 16h |
| 255 | 7.12.2.2.1 | Criação de filesystems e usuários Unix/Linux R2 (BSB:SIG) | 2d | 2015-01-14 | 2015-01-15 | 251 | 0d |  | Suporte Unix | 16h |
| 256 | 7.12.2.3 | **Cadastro do IP de backup no media server** | 2d | 2015-01-16 | 2015-01-21 |  | 0d |  |  | 16h |
| 257 | 7.12.2.3.1 | Cadastro do IP de backup no media server R2 (BSB:SIG) | 2d | 2015-01-16 | 2015-01-21 | 255 | 0d |  | Suporte Unix | 16h |
| 258 | 7.12.2.4 | **Instalação/ Configuração de serviços Web e Integração** | 22d | 2015-01-22 | 2015-02-25 |  | 0d |  |  | 176h |
| 259 | 7.12.2.4.1 | Validação do ambiente (Infra Core) | 2d | 2015-01-22 | 2015-01-23 | 257 | 0d |  | Suporte Web | 16h |
| 260 | 7.12.2.4.2 | Criação de entrada no DNS *** somente em caso de site externo *** | 2d | 2015-01-26 | 2015-01-27 | 259 | 0d |  | Rede Corporativa | 16h |
| 261 | 7.12.2.4.3 | **Web Servers - UNIX - Apache e IBMIHS** | 8d | 2015-01-28 | 2015-02-06 | 255, 259 | 0d |  |  | 64h |
| 262 | 7.12.2.4.3.1 | Criação de Site em Apache (com ou sem PHP) e IBMIHS | 3d | 2015-01-28 | 2015-01-30 | 260 | 0d |  | Suporte Web | 24h |
| 263 | 7.12.2.4.3.2 | Instalação de Web Server - Apache (com ou sem PHP) ou IBMIHS | 5d | 2015-02-02 | 2015-02-06 | 262 | 0d |  | Suporte Web | 40h |
| 264 | 7.12.2.4.4 | **Implementação/ Validação de Conectividade** | 10d | 2015-02-09 | 2015-02-25 |  | 35d |  |  | 80h |
| 265 | 7.12.2.4.4.1 | Implementação/ Validaão de Conectividade | 10d | 2015-02-09 | 2015-02-25 | 263 | 35d |  | Integração | 80h |
| 266 | 7.12.2.5 | **Implementação de Backup** | 5d | 2015-02-09 | 2015-02-13 |  | 32d |  |  | 40h |
| 267 | 7.12.2.5.1 | Implementação de Backup R2 (BSB:SIG) | 5d | 2015-02-09 | 2015-02-13 | 263 | 32d | 0d | PCP Backup | 40h |
| 268 | 7.12.2.6 | **Certificação da Implantação** | 8d | 2015-02-19 | 2015-03-02 |  | 32d |  |  | 64h |
| 269 | 7.12.2.6.1 | Certificação da Implantação R2 (BSB:SIG) | 8d | 2015-02-19 | 2015-03-02 | 267 | 32d |  | Segurança da Informação | 64h |
| 270 | 7.12.2.7 | **Implementação de Monitoração** | 5d | 2015-02-09 | 2015-02-13 |  | 0d |  |  | 40h |
| 271 | 7.12.2.7.1 | Implementação de Monitoração R2 (BSB:SIG) | 5d | 2015-02-09 | 2015-02-13 | 263 | 0d |  | CCO | 40h |

Notes:
- 252: INFRA ESTRUTURA / SUPORTE UNIX RII / PROJETO / SERVIDOR SISTEMA OPERACIONAL / INSTALAR / INFRA_SUP_UNIX_FABRICA
- 253: Quando solicitarem criação de instância em cluster Oracle RAC, além dos discos compartilhados do database é necessário também 2 discos de 48GB, 1 para cada servidor, para os binários. / INFRA ESTRUTURA II / STORAGE / SERVIDOR / ALOCACAO / PLATAFORMA DISTRIBUIDA / IMPLANTACAO / INFRA_SUP_STORAGE_FABRICA
- 255: INFRA ESTRUTURA / SUPORTE UNIX RI / PROJETO / SERVIDOR FILESYSTEM / CRIAR / INFRA ESTRUTURA / SUPORTE UNIX RI / PROJETO / ACESSO GRUPO / CRIAR / INFRA ESTRUTURA / SUPORTE UNIX RI / PROJETO / ACESSO USUARIO / CRIAR / INFRA_SUP_UNIX
- 257: INFRA ESTRUTURA / SUPORTE UNIX RII / PROJETO / AGENTES NETBACKUP / CADASTRAR MEDIA SERVER / INFRA_SUP_UNIX_FABRICA
- 259: Atividade incluída a pedido do time de Gestão de Ambientes para que eles possam certificar que todos os pré-requisitos necessários para eles efetuarem uma instalação foram devidamente atendidos. / * Não remover esta atividade sem antes alinhar com o ponto focal desta equipe que estiver responsavel pelo projeto/demanda *
- 260: Utilizar o padrão de nomenclatura abaixo: / site interno = dominio ".intranet" / Site externo - Corporativo = dominio ".oi.net.br" (ex: sisjur) / Site externo - Institucional = dominio ".oi.com.br" (ex: Portal Oi) / - DMZ (Acesso proveniente de Internet) / Deve ser alinhado com o solicitante, redes e GA WEB, pois existem outros fatores envolvidos: / - Se o dominio nao existir necessidade de aquisição / - Localização dos web servers / - Restrições de nomes / Caso exista alteon na solução o DNS deverá apontar para o VIP do alteon. Verificar no desenho da solução. / INFRA ESTRUTURA / REDE CORPORATIVA / DNS / CONFIGURACAO / NOME / INCLUSAO - Atividade Recorrente / Sev: 4 / INFRA_SUP_REDE
- 262: Desenho da solução / Nome do site (entrada no DNS) / Acesso o check-list de instalação e o modelo de formulário de detalhamento para esta atividade no link abaixo: / http://sharepoint2007/tecnologia/0002/supweb/Padres%20da%20rea/Forms/AllItems.aspx?RootFolder=%2ftecnologia%2f0002%2fsupweb%2fPadres%20da%20rea%2fChecklist%20de%20instala%c3%a7%c3%a3o&FolderCTID=&View=%7b48BAAFB9%2dB297%2d465E%2dBE3E%2d99E893143504%7d / INFRA ESTRUTURA / GESTAO DE AMBIENTE WEB / CONFIGURACAO / APACHE / CRIACAO DE VIRTUAL HOST / HOMOLOGACAO DESENVOLVIMENTO - Atividade Recorrente / Sev: 4 / INFRA ESTRUTURA / GESTAO DE AMBIENTE WEB / CONFIGURACAO / APACHE / CRIACAO DE VIRTUAL HOST / PRODUCAO - Atividade Recorrente / Sev: 4 / SUPORTE_GA_WEB
- 263: Acesso o check-list de instalação e o modelo de formulário de detalhamento para esta atividade no link abaixo: / http://sharepoint2007/tecnologia/0002/supweb/Padres%20da%20rea/Forms/AllItems.aspx?RootFolder=%2ftecnologia%2f0002%2fsupweb%2fPadres%20da%20rea%2fChecklist%20de%20instala%c3%a7%c3%a3o&FolderCTID=&View=%7b48BAAFB9%2dB297%2d465E%2dBE3E%2d99E893143504%7d / INFRA ESTRUTURA / GESTAO DE AMBIENTE WEB / INSTALACAO / APACHE / PRODUTO / HOMOLOGACAO DESENVOLVIMENTO - Atividade Implantação / Sev: 4 / INFRA ESTRUTURA / GESTAO DE AMBIENTE WEB / INSTALACAO / APACHE / PRODUTO / PRODUCAO - Atividade Implantação / Sev: 4 / OI_AMBIENTES_SERVICOS
- 267: INFRA ESTRUTURA / BACKUP / IMPLANTACAO / NETBACKUP / CORPORATIVO / NAO SE APLICA - Atividade Implantação / Sev: 4 (OI_IMPLATACAO_BACKUP_FABRICA)
- 269: A atividade de certificação da implantação ocorre da seguinte forma: / 1 - Coleta das informações ocorre sempre as segunda-feiras / 2 - Resultado da análise dos dados coletados que ocorre sempre as quinta-feiras / Desta forma o prazo de 8 dias reflete o pior cenário, isto é um ARS sendo aberto em uma terça-feira para ser concuído na quinta-feira da semana seguinte. / Este prazo deverá ser ajustado sempre que necessário, tanto o inicio da atividade, quando a duração da mesma. / SEGURANCA DA INFORMACAO / TECNOLOGIA / PROJETO PROTEUS / PARECER DE SEGURANCA / CERTIFICACAO / SERVIDORES TI BD - Atividade Recorrente / Sev: 4 / SEGURANCA DA INFORMACAO / TECNOLOGIA / PROJETO PROTEUS / PARECER DE SEGURANCA / CERTIFICACAO / SERVIDORES TI INFRAWEB - Atividade Recorrente / Sev: 4 / SEGURANCA DA INFORMACAO / TECNOLOGIA / PROJETO PROTEUS / PARECER DE SEGURANCA / CERTIFICACAO / SERVIDORES TI UNIX / LINUX - Atividade Recorrente / Sev: 4 / SEGURANCA DA INFORMACAO / TECNOLOGIA / PROJETO PROTEUS / PARECER DE SEGURANCA / CERTIFICACAO / SERVIDORES TI WINDOWS - Atividade Recorrente / Sev: 4 / SEGURANCA_PROTEUS
- 271: INFRA ESTRUTURA / MONITORACAO / IMPLANTACAO / ADICAO MONITORACAO UNIX/LINUX / NAO SE APLICA / NAO SE APLICA / INFRA ESTRUTURA / MONITORACAO / IMPLANTACAO / ADICAO MONITORACAO WINDOWS / NAO SE APLICA / NAO SE APLICA / - Atividade Recorrente / Sev: 4 / CONTROLE_ATIVOS_NIVEL2 (posteriormente será redesignado para o grupo executor da atividade)

| ID | WBS | Task | Duration | Start | Finish | Predecessors | Total slack | Resources | Work |
| --- | --- | --- | --- | --- | --- | --- | --- | --- | --- |
| 272 | 7.12.2.8 | **Implementação de GA** | 15d | 2015-02-19 | 2015-03-11 | 271 | 0d |  | 120h |
| 273 | 7.12.2.8.1 | Implementação de GA | 15d | 2015-02-19 | 2015-03-11 |  | 0d | Leandro Frossard | 120h |
| 274 | 7.12.3 | **Validação/ Aceite da Entrega Parcial Ambiente: HOM - Camada: WEB Servidor(es): RAPHX01; RAUHX01** | 1d | 2015-02-19 | 2015-02-19 |  | 39d |  | 8h |
| 275 | 7.12.3.1 | Validação/ Aceite da Entrega Parcial Ambiente: HOM - Camada: WEB Servidor(es): RAPHX01; RAUHX01 | 1d | 2015-02-19 | 2015-02-19 | 267 | 39d | Vivian | 8h |
| 276 | 7.12.4 | **Entrega Final - Certificação de Implantação e Monitoramento** | 1d | 2015-03-12 | 2015-03-12 |  | 0d |  | 8h |
| 277 | 7.12.4.1 | **Validação/ Aceite da Entrega Final Ambiente: HOM - Camada: WEB Servidor(es): RAPHX01; RAUHX01** | 1d | 2015-03-12 | 2015-03-12 |  | 0d |  | 8h |
| 278 | 7.12.4.1.1 | Validação/ Aceite da Entrega Final Ambiente: HOM - Camada: WEB Servidor(es): RAPHX01; RAUHX01 | 1d | 2015-03-12 | 2015-03-12 | 273 | 0d | Vivian | 8h |
| 279 | 7.13 | **Colocar em Produção** | 2d | 2015-03-13 | 2015-03-16 |  | 0d |  |  |
| 280 | 7.13.1 | Colocar em Produção | 2d | 2015-03-13 | 2015-03-16 | 278, 217, 247 | 0d |  |  |
| 281 | 7.14 | **Acompanhamento Pós-Produção** | 21d | 2015-03-17 | 2015-04-15 |  | 0d |  | 168h |
| 282 | 7.14.1 | **Solicitação de Operação Assistida** | 21d | 2015-03-17 | 2015-04-15 |  | 0d |  | 168h |
| 283 | 7.14.1.1 | Realização de Operação Assistida | 21d | 2015-03-17 | 2015-04-15 | 280 | 0d | Integração | 168h |
| 294 | 8 | Conclusão | 0.5d | 2014-06-02 | 2014-06-02 | 96 | 245.5d | PMO; Integração | 8h |
| 285 | 9 | Encerrameno do Projeto | 1d | 2015-04-16 | 2015-04-16 | 283 | 0d |  |  |

Notes:
- 283: INFRA ESTRUTURA/ OPERACOES E AMBIENTES/ PROJETO/ POS IMPLANTACAO/ OPERACAO ASSISTIDA/ QUALIDADE E PROCESSO
