# PLN_STI - 83909 - Upgrade Arbor_10072014_V2007

Schedule from MS Project, 2014-09-18 to 2015-09-24, A marks actual dates.
WeDo Technologies

## Calendars

- Standard: Mon-Fri 08:00-12:00, 13:00-17:00; Sat-Sun off. Exceptions (off unless hours are given): 2014-11-20 (Dia da consciencia Negra), 2014-12-24 to 2014-12-25 (Feriado Natal), 2014-12-31 to 2015-01-01 (Feriado Ano Novo), 2015-02-16 to 2015-02-18 (Feriado Carnaval), 2015-04-03 (Sexta feira Santa), 2015-04-21 (Tiradentes), 2015-05-01 (Dia do Trabalhador), 2015-09-07 (Independencia do Brasil).

## Resources

| Resource |
| --- |
| Wedo |
| oi |
| weod |
| Csol |
| Usuário |
| 35 |

## Schedule

| ID | WBS | Task | Type | Duration | Start | Finish | Predecessors | Complete | Remaining | Baseline start | Baseline finish | Baseline duration | Baseline 1 start | Baseline 1 finish | Total slack | Free slack | Constraint | Resources | Work | Actual work |
| --- | --- | --- | --- | --- | --- | --- | --- | --- | --- | --- | --- | --- | --- | --- | --- | --- | --- | --- | --- | --- |
| 1 | 1 | **Upgrade RAID - Frente PI - Grupo 1 e 2 - 84710** |  | 254d | 2014-09-18 A | 2015-09-24 |  | 17% | 210.66d | 2014-09-18 | 2015-09-07 | 242d | 2014-05-26 | 2015-03-20 | 0d |  |  |  | 2784h | 445.04h |
| 2 | 1.1 | **Desenho Funcional** |  | 0d | 2014-09-18 A | 2014-09-18 A |  | 100% |  | 2014-09-18 | 2014-09-18 | 0d | 2014-05-26 | 2014-05-26 |  |  |  |  |  |  |
| 3 | 1.1.1 | Desenho Funcional Aprovado | milestone | 0d | 2014-09-18 A | 2014-09-18 A |  | 100% |  | 2014-09-18 | 2014-09-18 | 0d | 2014-05-26 | 2014-05-26 |  |  | start no earlier than 2014-09-18 |  |  |  |
| 4 | 1.2 | **Plano de Desenvolvimento do Projeto** |  | 10d | 2014-11-17 | 2014-12-01 |  |  |  | 2014-11-17 | 2014-12-01 | 10d | 2014-08-18 | 2014-08-29 | 202d |  |  |  | 80h |  |
| 5 | 1.2.1 | Elaborar PDP |  | 5d | 2014-11-17 | 2014-11-24 |  |  |  | 2014-11-17 | 2014-11-24 | 5d | 2014-08-18 | 2014-08-22 | 202d | 0d | start no earlier than 2014-11-17 | Wedo | 40h |  |
| 6 | 1.2.2 | Validar PDP |  | 5d | 2014-11-25 | 2014-12-01 | 5 |  |  | 2014-11-25 | 2014-12-01 | 5d | 2014-08-25 | 2014-08-29 | 202d | 0d |  | oi | 40h |  |
| 7 | 1.2.3 | Plano de Desenvolvimento do Projeto Aprovado | milestone | 0d | 2014-12-01 | 2014-12-01 | 6 |  |  | 2014-12-01 | 2014-12-01 | 0d | 2014-08-29 | 2014-08-29 | 202d |  |  |  |  |  |
| 8 | 1.3 | **Desenho Técnico** |  | 62d | 2014-12-01 A | 2015-03-06 |  | 70% | 18.3d | 2014-12-01 | 2015-01-23 | 36d | 2014-08-11 | 2014-09-29 | 141d |  |  |  | 328h | 231.2h |
| 9 | 1.3.1 | Elaborar Desenho Técnico |  | 30d | 2014-12-01 A | 2015-01-15 |  | 80% | 6d | 2014-12-01 | 2015-01-15 | 30d | 2014-08-11 | 2014-09-19 | 167.9d | 0d | start no earlier than 2014-12-01 | Wedo | 240h | 192h |
| 10 | 1.3.2 | Elaborar Modelo da Dados |  | 5d | 2015-01-09 A | 2015-01-15 | 9FF | 80% | 1d | 2015-01-09 | 2015-01-15 | 5d | 2014-09-15 | 2014-09-19 | 173d |  |  | Wedo | 40h | 32h |
| 11 | 1.3.3 | Validar Desenho Técnico |  | 5d | 2015-01-16 A | 2015-01-22 | 9 | 15% | 4.25d | 2015-01-16 | 2015-01-22 | 5d | 2014-09-22 | 2014-09-26 | 167.15d | 0d |  | oi | 40h | 6h |
| 12 | 1.3.4 | Aprovar Desenho Técnico |  | 1d | 2015-01-23 A | 2015-01-23 | 11 | 15% | 0.85d | 2015-01-23 | 2015-01-23 | 1d | 2014-09-29 | 2014-09-29 | 167d | 0d |  | oi | 8h | 1.2h |
| 13 | 1.3.5 | Desenho Técnico Finalizado | milestone | 0d | 2015-01-23 | 2015-01-23 | 12 |  |  | 2015-01-23 | 2015-01-23 | 0d | 2014-09-29 | 2014-09-29 | 167d |  |  |  |  |  |
| 14 | 1.3.6 | Aprovação Final do Desenho Técnico | milestone | 0d | 2015-03-06 | 2015-03-06 |  |  |  |  |  |  |  |  | 141d |  | start no earlier than 2015-03-06 | oi |  |  |
| 15 | 1.4 | **Plano de Testes** |  | 36d | 2015-01-26 A | 2015-03-19 |  | 42% | 21d | 2015-01-26 | 2015-03-19 | 36d | 2014-09-30 | 2014-10-20 | 131d |  |  |  | 280h | 120h |
| 16 | 1.4.1 | **Testes de Sistema** |  | 15d | 2015-01-26 A | 2015-02-13 A |  | 100% |  | 2015-01-26 | 2015-02-13 | 15d |  |  |  |  |  |  | 120h | 120h |
| 17 | 1.4.1.1 | Elaborar Plano/Cenários de Testes Sistema |  | 10d | 2015-01-26 A | 2015-02-06 A | 13 | 100% |  | 2015-01-26 | 2015-02-06 | 10d | 2014-09-30 | 2014-10-13 |  |  | start no earlier than 2014-11-04 | Wedo | 80h | 80h |
| 18 | 1.4.1.2 | Validar Plano/Cenários de Testes de sistema |  | 4d | 2015-02-09 A | 2015-02-12 A | 17 | 100% |  | 2015-02-09 | 2015-02-12 | 4d | 2014-10-14 | 2014-10-17 |  |  |  | Wedo | 32h | 32h |
| 19 | 1.4.1.3 | Aprovar Plano/Cenários de Testes de Sistema |  | 1d | 2015-02-13 A | 2015-02-13 A | 18 | 100% |  | 2015-02-13 | 2015-02-13 | 1d | 2014-10-20 | 2014-10-20 |  |  |  | Wedo | 8h | 8h |
| 20 | 1.4.1.4 | Plano de Testes Finalizado | milestone | 0d | 2015-02-13 A | 2015-02-13 A | 19 | 100% |  | 2015-02-13 | 2015-02-13 | 0d | 2014-10-20 | 2014-10-20 |  |  |  |  |  |  |
| 21 | 1.4.2 | **Testes Integrados e UAT** |  | 21d | 2015-02-19 | 2015-03-19 |  |  |  | 2015-02-19 | 2015-03-19 | 21d |  |  | 131d |  |  |  | 160h |  |
| 22 | 1.4.2.1 | Elaborar e Cadastrar (Quality Center) Plano/Cenários de Testes Integrados e UAT |  | 10d | 2015-02-19 | 2015-03-04 | 20 |  |  | 2015-02-19 | 2015-03-04 | 10d |  |  | 131d | 0d |  | Wedo | 80h |  |
| 23 | 1.4.2.2 | Validar Plano/Cenários de Testes Integrados e UAT |  | 5d | 2015-03-05 | 2015-03-11 | 22 |  |  | 2015-03-05 | 2015-03-11 | 5d |  |  | 131d | 0d |  | Csol | 40h |  |
| 24 | 1.4.2.3 | Validar Plano/Cenários de Testes Integrados e UAT |  | 5d | 2015-03-12 | 2015-03-18 | 23 |  |  | 2015-03-12 | 2015-03-18 | 5d |  |  | 131d | 0d |  | Usuário | 40h |  |
| 25 | 1.4.2.4 | Aprovar Plano/Cenários de Testes de Sistema |  | 1d | 2015-03-19 | 2015-03-19 | 24 |  |  | 2015-03-19 | 2015-03-19 | 1d |  |  | 131d | 0d |  |  |  |  |
| 26 | 1.4.2.5 | Plano de Testes Finalizado | milestone | 0d | 2015-03-19 | 2015-03-19 | 25 |  |  | 2015-03-19 | 2015-03-19 | 0d |  |  | 131d |  |  |  |  |  |

| ID | WBS | Task | Type | Duration | Start | Finish | Predecessors | Complete | Remaining | Baseline start | Baseline finish | Baseline duration | Baseline 1 start | Baseline 1 finish | Total slack | Free slack | Constraint | Resources | Work | Actual work |
| --- | --- | --- | --- | --- | --- | --- | --- | --- | --- | --- | --- | --- | --- | --- | --- | --- | --- | --- | --- | --- |
| 27 | 1.5 | **Construção/Configuração e Testes de Sistema RAID 7** |  | 94d | 2015-02-02 A | 2015-06-19 |  | 12% | 82.86d | 2015-01-26 | 2015-06-01 | 85d | 2014-07-11 | 2015-01-05 | 0d |  |  |  | 792h | 93.84h |
| 28 | 1.5.1 | Realizar Construção e TU |  | 69d | 2015-02-02 A | 2015-05-15 |  | 17% | 57.27d | 2015-01-26 | 2015-04-24 | 60d | 2014-09-30 | 2014-12-09 | 0d |  | must start on 2015-02-02 | Wedo | 552h | 93.84h |
| 29 | 1.5.2 | Realizar Testes de sistema |  | 30d | 2015-05-11 | 2015-06-19 | 28FS-5d |  |  | 2015-04-17 | 2015-06-01 | 30d | 2014-12-03 | 2015-01-05 | 0d |  |  | Wedo | 240h |  |
| 30 | 1.5.3 | Construção Finalizada | milestone | 0d | 2015-06-19 | 2015-06-19 | 29 |  |  | 2015-06-01 | 2015-06-01 | 0d | 2015-01-05 | 2015-01-05 | 0d |  |  |  |  |  |
| 31 | 1.6 | **Treinamento** |  | 10d | 2015-06-22 | 2015-07-03 |  |  |  | 2015-06-02 | 2015-06-15 | 10d | 2014-12-17 | 2015-01-08 | 58d |  |  |  | 80h |  |
| 32 | 1.6.1 | Preparar Treinamento (Material e ambiente) |  | 5d | 2015-06-22 | 2015-06-26 | 30 |  |  | 2015-06-02 | 2015-06-08 | 5d | 2014-12-17 | 2014-12-29 | 58d | 0d |  | Wedo | 40h |  |
| 33 | 1.6.2 | Realizar Treinamento |  | 5d | 2015-06-29 | 2015-07-03 | 32, 29 |  |  | 2015-06-09 | 2015-06-15 | 5d | 2015-01-06 | 2015-01-08 | 58d | 0d |  | Wedo | 40h |  |
| 34 | 1.6.3 | Treinamento Finalizado | milestone | 0d | 2015-07-03 | 2015-07-03 | 33 |  |  | 2015-06-15 | 2015-06-15 | 0d | 2015-01-08 | 2015-01-08 | 58d |  |  |  |  |  |
| 35 | 1.7 | **Testes Integrados** |  | 22d | 2015-06-18 | 2015-07-17 |  |  |  | 2015-06-02 | 2015-07-01 | 22d | 2014-10-21 | 2015-01-19 | 2d |  |  |  | 232h |  |
| 36 | 1.7.1 | Preparação estrutura diretorios RAID |  | 2d | 2015-06-18 | 2015-06-19 |  |  |  |  |  |  |  |  | 3d | 0d | start no earlier than 2015-06-18 | Wedo | 16h |  |
| 37 | 1.7.2 | Preparar Ambiente de Homologação para inicio dos TI (Migrar Funcionalidades) |  | 5d | 2015-06-22 | 2015-06-26 | 30 |  |  | 2015-06-02 | 2015-06-08 | 5d |  |  | 0d |  |  | Wedo | 40h |  |
| 38 | 1.7.3 | Receber massa para Testes Integrados |  | 2d | 2015-06-22 | 2015-06-23 | 36 |  |  | 2015-06-09 | 2015-06-10 | 2d |  |  | 3d |  |  | oi | 16h |  |
| 39 | 1.7.4 | Executar Testes Integrados |  | 10d | 2015-06-29 | 2015-07-10 | 38, 37 |  |  | 2015-06-11 | 2015-06-24 | 10d | 2014-10-21 | 2014-10-21 | 0d |  | start no earlier than 2014-10-21 | Wedo | 80h |  |
| 40 | 1.7.5 | Validação dos testes de carga (massa UAT Legados) |  | 5d | 2015-06-29 | 2015-07-03 | 39SS |  |  |  |  |  |  |  | 58d |  |  | oi | 40h |  |
| 41 | 1.7.6 | Validar Evidencias Testes Integrados |  | 5d | 2015-07-13 | 2015-07-17 | 39 |  |  | 2015-06-25 | 2015-07-01 | 5d | 2014-10-21 | 2014-10-21 | 0d |  |  | oi | 40h |  |
| 42 | 1.7.7 | Testes integrados Aprovados | milestone | 0d | 2015-07-17 | 2015-07-17 | 41 |  |  | 2015-07-01 | 2015-07-01 | 0d | 2014-10-21 | 2014-10-21 | 48d |  | start no earlier than 2014-08-25 | oi |  |  |
| 43 | 1.7.8 | Testes Integrados Finalizados | milestone | 0d | 2015-07-17 | 2015-07-17 | 41 |  |  | 2015-07-01 | 2015-07-01 | 0d | 2015-01-19 | 2015-01-19 | 0d |  |  |  |  |  |
| 44 | 1.8 | **UAT** |  | 21d | 2015-07-20 | 2015-08-17 |  |  |  | 2015-07-02 | 2015-07-30 | 21d | 2015-01-09 | 2015-01-30 | 27d |  |  |  | 328h |  |
| 45 | 1.8.1 | Validar Evidencias Testes de UAT |  | 20d | 2015-07-20 | 2015-08-14 | 43 |  |  | 2015-07-02 | 2015-07-29 | 20d | 2015-01-09 | 2015-01-29 | 27d | 0d |  | oi; Wedo | 320h |  |
| 46 | 1.8.2 | Aprovar UAT |  | 1d | 2015-08-17 | 2015-08-17 | 45 |  |  | 2015-07-30 | 2015-07-30 | 1d | 2015-01-30 | 2015-01-30 | 27d | 0d |  | oi | 8h |  |
| 47 | 1.8.3 | Testes de UAT Finalizados e Aprovados | milestone | 0d | 2015-08-17 | 2015-08-17 | 46 |  |  | 2015-07-30 | 2015-07-30 | 0d | 2015-01-30 | 2015-01-30 | 27d |  |  |  |  |  |
| 48 | 1.9 | **Testes de Performance** |  | 12d | 2015-08-25 | 2015-09-10 |  |  |  | 2015-07-02 | 2015-07-17 | 12d | 2015-01-20 | 2015-01-29 | 10d |  |  |  | 112h |  |
| 49 | 1.9.1 | Migrar Fluxos para ambiente de Produção |  | 5d | 2015-08-25 | 2015-08-31 | 68 |  |  | 2015-07-02 | 2015-07-08 | 5d |  |  | 10d | 0d |  | Wedo | 40h |  |
| 50 | 1.9.2 | Realizar Testes de Performance |  | 5d | 2015-09-01 | 2015-09-08 | 49 |  |  | 2015-07-09 | 2015-07-15 | 5d | 2015-01-20 | 2015-01-26 | 10d | 0d |  | Wedo | 40h |  |
| 51 | 1.9.3 | Gerar relatório de Performance |  | 1d | 2015-09-08 | 2015-09-08 | 50FF |  |  | 2015-07-15 | 2015-07-15 | 1d | 2015-01-27 | 2015-01-27 | 10d | 0d |  | Wedo | 8h |  |
| 52 | 1.9.4 | Validar Evidencias Testes Performance |  | 2d | 2015-09-09 | 2015-09-10 | 51 |  |  | 2015-07-16 | 2015-07-17 | 2d | 2015-01-28 | 2015-01-29 | 10d | 0d |  | oi | 16h |  |
| 53 | 1.9.5 | Aprovar Testes de Perfomance |  | 1d | 2015-09-10 | 2015-09-10 | 52FF |  |  | 2015-07-17 | 2015-07-17 | 1d | 2015-01-29 | 2015-01-29 | 10d | 0d |  | oi | 8h |  |
| 54 | 1.9.6 | Testes de Performance Finalizado | milestone | 0d | 2015-09-10 | 2015-09-10 | 53 |  |  | 2015-07-17 | 2015-07-17 | 0d | 2015-01-29 | 2015-01-29 | 10d |  |  | oi |  |  |

Notes:
- 29: Neste ambito serão carregdos arquivos de produção para a máquina de DEV ou homologação (a definir) de forma a executar os testes com massa real. / O resultado dos TS serão utilizados como evidencia para o UAT;
- 32: A ser realizado em ambiente de DEsenvolvimento, de forma que possas ser paralelizados com os TI
- 33: Expectativa 5 dias (part time , separado em : / 4 dias = user ; / 1 dia = operação.
- 35: Os testes integrados deverão ser executados em ambiente de homologação. / A expectativa é que a massa ( referente a novas interfaces e as já existentes) sejam entregues pela OI na máquina e homologação, nos diretórios esperados. / Deverá ser usado a ferramenta quality center para registrar os cenários.
- 42: Data planejada no cronograma da Frente Vanilla. Frente Vanilla em produçào
- 44: Deve ser realizado no ambiente de homologação. Tendo em atenção que será feito com base nas evidencias dos TI realizados.
- 50: TEstes de Performance devem ser realizados já no ambiente do RAID 7 de produção. / A Expectativa é que a OI entregue os arquivos em ambiente de produçao para execução dos testes.

| ID | WBS | Task | Type | Duration | Start | Finish | Predecessors | Baseline start | Baseline finish | Baseline duration | Baseline 1 start | Baseline 1 finish | Total slack | Free slack | Constraint | Resources | Work |
| --- | --- | --- | --- | --- | --- | --- | --- | --- | --- | --- | --- | --- | --- | --- | --- | --- | --- |
| 55 | 1.10 | **Implantação** |  | 26d | 2015-07-20 | 2015-08-24 |  | 2015-07-02 | 2015-08-06 | 26d | 2015-01-09 | 2015-02-13 | 0d |  |  |  | 312h |
| 56 | 1.10.1 | Definir estratégia de Implantação e Preparar Plano de Implantação |  | 3d | 2015-07-20 | 2015-07-22 | 43 | 2015-07-02 | 2015-07-06 | 3d |  |  | 0d |  |  | Wedo | 24h |
| 57 | 1.10.2 | Preparar Runbook e Manual da Operação RAID |  | 5d | 2015-07-23 | 2015-07-29 | 56 | 2015-07-07 | 2015-07-13 | 5d | 2015-01-09 | 2015-01-15 | 0d |  | start no earlier than 2014-10-24 | Wedo | 40h |
| 58 | 1.10.3 | Validar e Aprovar Runbook |  | 3d | 2015-07-30 | 2015-08-03 | 57 | 2015-07-14 | 2015-07-16 | 3d | 2015-01-16 | 2015-01-20 | 0d |  | start no earlier than 2014-10-31 | oi | 24h |
| 59 | 1.10.4 | Elaborar Runbook PI - Grupo 1 e 2 |  | 5d | 2015-07-23 | 2015-07-29 | 57SS | 2015-07-07 | 2015-07-13 | 5d | 2015-01-09 | 2015-01-15 | 0d |  |  | oi | 40h |
| 60 | 1.10.5 | Validar Runbook - Grupo 1 e 2 |  | 3d | 2015-07-30 | 2015-08-03 | 59 | 2015-07-14 | 2015-07-16 | 3d | 2015-01-16 | 2015-01-20 | 0d |  |  | oi | 24h |
| 61 | 1.10.6 | Criação de CRQ |  | 2d | 2015-08-04 | 2015-08-05 | 60 | 2015-07-17 | 2015-07-20 | 2d | 2015-01-21 | 2015-01-22 | 33d | 0d |  | oi | 16h |
| 62 | 1.10.7 | Validação de CRQ |  | 2d | 2015-08-06 | 2015-08-07 | 61 | 2015-07-21 | 2015-07-22 | 2d | 2015-01-23 | 2015-01-26 | 33d |  |  | oi | 16h |
| 63 | 1.10.8 | Preparar cadeias ControlM e scripts |  | 10d | 2015-08-04 | 2015-08-17 | 58, 60 | 2015-07-17 | 2015-07-30 | 10d | 2015-01-21 | 2015-02-03 | 0d |  | start no earlier than 2014-11-05 | oi | 80h |
| 64 | 1.10.9 | Abertura GMUD STI 84710 |  | 2d | 2015-08-18 | 2015-08-19 | 63, 56 | 2015-07-31 | 2015-08-03 | 2d | 2015-01-27 | 2015-01-28 | 0d |  |  | oi | 16h |
| 65 | 1.10.10 | Candidatar Demanda para produção |  | 1d | 2015-08-18 | 2015-08-18 | 63, 56 | 2015-07-31 | 2015-07-31 | 1d | 2015-02-04 | 2015-02-04 | 1d |  |  | oi | 8h |
| 66 | 1.10.11 | Execução GMUD 84710 |  | 3d | 2015-08-20 | 2015-08-24 | 64, 65 | 2015-08-04 | 2015-08-06 | 3d | 2015-02-11 | 2015-02-13 | 0d |  |  | oi | 24h |
| 67 | 1.11 | **Produção** |  | 3d | 2015-08-20 | 2015-08-24 |  | 2015-08-04 | 2015-08-06 | 3d | 2015-02-11 | 2015-02-13 | 0d |  |  |  | 48h |
| 68 | 1.11.1 | Implantar RAID |  | 3d | 2015-08-20 | 2015-08-24 | 66SS | 2015-08-04 | 2015-08-06 | 3d | 2015-02-11 | 2015-02-13 | 0d |  | start no earlier than 2015-01-05 | Wedo; oi | 48h |
| 69 | 1.12 | Demanda 84710 - Upgrade PI - Grupo 1 e 2 Implantada | milestone | 0d | 2015-08-24 | 2015-08-24 | 68 | 2015-08-06 | 2015-08-06 | 0d | 2015-02-13 | 2015-02-13 | 0d |  |  |  |  |
| 70 | 1.13 | **Rollout** |  | 20d | 2015-08-25 | 2015-09-22 |  | 2015-08-07 | 2015-09-03 | 20d | 2015-02-19 | 2015-03-18 | 0d |  |  |  | 160h |
| 71 | 1.13.1 | Acompanhar Produção |  | 20d | 2015-08-25 | 2015-09-22 | 69 | 2015-08-07 | 2015-09-03 | 20d | 2015-02-19 | 2015-03-18 | 0d |  |  | Wedo | 160h |
| 72 | 1.14 | **Fecho do Projeto** |  | 2d | 2015-09-23 | 2015-09-24 |  | 2015-09-04 | 2015-09-07 | 2d | 2015-03-19 | 2015-03-20 | 0d |  |  |  | 32h |
| 73 | 1.14.1 | Gerar termo de Aceitação final do Projeto |  | 1d | 2015-09-23 | 2015-09-23 | 71 | 2015-09-04 | 2015-09-04 | 1d | 2015-03-19 | 2015-03-19 | 0d |  |  | Wedo | 8h |
| 74 | 1.14.2 | Gerar Inquerito Satisfação do projeto |  | 1d | 2015-09-23 | 2015-09-23 | 73FF | 2015-09-04 | 2015-09-04 | 1d | 2015-03-19 | 2015-03-19 | 0d |  |  | Wedo | 8h |
| 75 | 1.14.3 | Assinar Termo de Aceitação Final do Projeto |  | 1d | 2015-09-24 | 2015-09-24 | 73 | 2015-09-07 | 2015-09-07 | 1d | 2015-03-20 | 2015-03-20 | 0d |  |  | oi | 8h |
| 76 | 1.14.4 | Preencher Inquerito de Satisfaçãp do projetos |  | 1d | 2015-09-24 | 2015-09-24 | 74 | 2015-09-04 | 2015-09-04 | 1d | 2015-03-19 | 2015-03-19 | 0d |  |  | oi | 8h |
| 77 | 1.14.5 | Projeto Finalizado | milestone | 0d | 2015-09-24 | 2015-09-24 | 76 | 2015-09-04 | 2015-09-04 | 0d | 2015-03-19 | 2015-03-19 | 0d |  |  |  |  |
