# PLN_Upgrade_Raid 7 Frente Vanilla-

Schedule from MS Project, 2014-04-16 to 2014-07-10, A marks actual dates.
WeDo Technologies

## Calendars

- Standard: Mon-Fri 08:00-12:00, 13:00-17:00; Sat-Sun off. Exceptions (off unless hours are given): 2014-06-12 08:00-12:00 (Feriado Copa), 2014-06-17 to 2014-06-18 08:00-12:00 (Feriado Copa), 2014-06-23 08:00-12:00 (Feriado Copa), 2014-06-25 08:00-12:00 (Feriado Copa), 2014-07-04 (Feriado Copa).

## Resources

| Resource |
| --- |
| oi |
| Jorge Macedo |
| Leonardo MEdeiros |
| Wedo |
| Wedo-PT |
| Infra Oi |

## Schedule

| ID | WBS | Task | Type | Duration | Start | Finish | Predecessors | Complete | Remaining | Total slack | Free slack | Constraint | Resources | Work |
| --- | --- | --- | --- | --- | --- | --- | --- | --- | --- | --- | --- | --- | --- | --- |
| 1 | 1 | **Implantação RAID-FMS - Vanilla** |  | 57.88d | 2014-04-16 A | 2014-07-10 |  |  | 57.88d | 0d |  |  |  | 296h |
| 2 | 1.1 | **Desenho Funcional** |  | 0d | 2014-04-16 A | 2014-04-16 A |  | 100% |  |  |  |  |  |  |
| 3 | 1.1.1 | Desenho Funcional Aprovado | milestone | 0d | 2014-04-16 A | 2014-04-16 A |  | 100% |  |  |  | start no earlier than 2014-04-16 | Infra Oi |  |
| 4 | 1.2 | **Desenho Técnico** |  | 13d | 2014-06-09 | 2014-06-30 |  |  |  | 0d |  |  |  | 128h |
| 5 | 1.2.1 | Elaborar Desenho Técnico |  | 7d | 2014-06-09 | 2014-06-19 |  |  |  | 0d |  |  | Wedo | 56h |
| 6 | 1.2.2 | Elaborar Cenários de Testes |  | 3d | 2014-06-13 | 2014-06-19 | 5FF |  |  | 0d |  |  | Wedo | 24h |
| 7 | 1.2.3 | Validar Desenho Técnico |  | 5d | 2014-06-19 | 2014-06-27 | 6 |  |  | 0d |  |  | oi | 40h |
| 8 | 1.2.4 | Aprovar Desenho Técnico |  | 1d | 2014-06-27 | 2014-06-30 | 7 |  |  | 0d |  |  | oi | 8h |
| 9 | 1.2.5 | Desenho Técnico Finalizado | milestone | 0d | 2014-06-30 | 2014-06-30 | 8 |  |  | 0d |  |  |  |  |
| 10 | 1.3 | **InfraEstrutura RAID Desenvolvimento** |  | 29d | 2014-05-06 A | 2014-06-16 |  |  | 29d | 4.88d |  |  |  | 40h |
| 11 | 1.3.1 | Disponibilizar Ambiente de Desenvolvimento para Instalar Vanilla | milestone | 0d | 2014-05-06 A | 2014-05-06 A |  | 100% |  |  |  | start no earlier than 2014-04-15 | oi |  |
| 12 | 1.3.2 | Disponibilizar Acesso VPN para Wedo |  | 5d | 2014-06-09 | 2014-06-16 | 4SS |  |  | 4.88d | 0d | start no earlier than 2014-06-09 | oi | 40h |
| 13 | 1.4 | **Instalação e Configuração do Ambiente Vanilla Desenvolvimento** |  | 10.88d | 2014-06-16 | 2014-07-03 |  |  |  | 0d |  |  |  | 72h |
| 14 | 1.4.1 | Validar ambiente desenvolvimento UC e PI | manual | 3d | 2014-06-16 | 2014-06-20 | 12 |  |  |  |  |  | Wedo | 24h |
| 15 | 1.4.2 | Instalar e Configurar RAID UC |  | 3d | 2014-06-30 | 2014-07-03 | 11, 9, 14 |  |  | 0d |  |  | Wedo | 24h |
| 16 | 1.4.3 | Instalar e Configurar RAID PI |  | 3d | 2014-06-30 | 2014-07-03 | 15FF |  |  | 0d |  |  | Wedo | 24h |
| 17 | 1.4.4 | RAID 7 Instalado e Configurado em DEV | milestone | 0d | 2014-07-03 | 2014-07-03 | 16, 15 |  |  | 0d |  |  |  |  |
| 18 | 1.5 | **Manuais** |  | 3d | 2014-06-09 | 2014-06-11 |  |  |  | 17d |  |  |  | 24h |
| 19 | 1.5.1 | Desenvolver manual de Operação |  | 3d | 2014-06-09 | 2014-06-11 | 4SS |  |  | 17d |  |  | Wedo | 24h |
| 20 | 1.6 | **Testes de Aplicação** |  | 4d | 2014-07-03 | 2014-07-10 |  |  |  | 0d |  |  |  | 32h |
| 21 | 1.6.1 | Realizar Testes de UAT |  | 2d | 2014-07-03 | 2014-07-08 | 13 |  |  | 0d |  |  | Wedo | 16h |
| 22 | 1.6.2 | Validar Testes de UAT |  | 1d | 2014-07-08 | 2014-07-09 | 21 |  |  | 0d |  |  | oi | 8h |
| 23 | 1.6.3 | Aprovar Testes de UAT |  | 1d | 2014-07-09 | 2014-07-10 | 22 |  |  | 0d |  |  | oi | 8h |
| 24 | 1.6.4 | Testes de UAT Finalizado | milestone | 0d | 2014-07-10 | 2014-07-10 | 23 |  |  | 0d |  |  |  |  |
| 25 | 1.7 | Disponibilização RAID 7 em ambiente de desenvolvimento | milestone | 0d | 2014-07-10 | 2014-07-10 | 20 |  |  | 0d |  |  |  |  |
