# RAID - Cronograma consolidado

Schedule from MS Project, 2014-05-16 to 2017-11-27, A marks actual dates.
Microsoft

## Calendars

- Padrão: Mon-Fri 09:00-12:00, 13:00-18:00; Sat-Sun off.

## Resources

| Resource |
| --- |
| Relacionamento de TI |
| Leandro Frossard |
| Kleyton Nogueira Soares |
| Antonio Carlos da Silva Gomes |
| Christiano Bianchini Maia |
| WEDO |
| Fabian Maravalha Santos |
| Fernando Machado |
| Alexandre Nascimento |
| Rodrigo Cesar de Freitas |
| Expectativa |
| draft |

## Schedule

| ID | WBS | Task | Type | Duration | Start | Finish | Predecessors | Complete | Remaining | Total slack | Free slack | Constraint | Resources | Work | Actual work |
| --- | --- | --- | --- | --- | --- | --- | --- | --- | --- | --- | --- | --- | --- | --- | --- |
| 1 | 1 | **Onda 0 :: [ PRJ24506 - Aquisição Infra Novo Antifraude RAID-FMS]** |  | 10d | 2017-08-16 A | 2017-08-29 |  | 17% | 8.34d |  |  |  |  | 1189.6h | 499.2h |
| 2 | 1.1 | Aprovação de requisitos de infra no CA |  | 10d | 2017-08-16 A | 2017-08-29 A |  | 100% |  |  |  | start no earlier than 2017-08-16 | Christiano Bianchini Maia; Kleyton Nogueira Soares; Antonio Carlos da Silva Gomes; Fernando Machado; Leandro Frossard | 400h | 400h |
| 3 | 1.2 | **Frente Planejamento e Capacidade de Infra** |  | 19d | 2017-08-16 A | 2017-09-11 |  | 21% | 14.98d | 5d |  |  |  | 229.6h | 99.2h |
| 4 | 1.2.1 | **Ambiente de Desenvolvimento** |  | 13d | 2017-08-24 A | 2017-09-11 |  | 41% | 7.7d | 0d |  |  |  | 160h | 82.4h |
| 5 | 1.2.1.1 | Confirmação de sizing e disponibilidade no parque |  | 5d | 2017-08-24 A | 2017-08-30 A |  | 100% |  |  |  | start no earlier than 2017-08-24 | Leandro Frossard; WEDO | 80h | 80h |
| 6 | 1.2.1.2 | Elaboração de DSOL/Cronograma de Infra |  | 3d | 2017-08-31 A | 2017-09-04 | 5 | 10% | 2.7d | 0d |  |  | Fabian Maravalha Santos | 24h | 2.4h |
| 7 | 1.2.1.3 | Validação de DSOL/Cronograma |  | 1d | 2017-09-05 | 2017-09-05 | 6 |  |  | 0d |  |  | Antonio Carlos da Silva Gomes; Leandro Frossard; WEDO | 24h |  |
| 8 | 1.2.1.4 | Encaminhamento custo final Plancap | milestone | 0d | 2017-09-05 | 2017-09-05 | 7FF |  |  | 0d |  |  | Fabian Maravalha Santos |  |  |
| 9 | 1.2.1.5 | Handover Operações |  | 4d | 2017-09-06 | 2017-09-11 | 8 |  |  | 0d |  |  | Fabian Maravalha Santos | 32h |  |
| 10 | 1.2.2 | **Ambiente de Homologação e Produção** |  | 19d | 2017-08-16 A | 2017-09-11 |  | 10% | 17.19d | 5d |  |  |  | 69.6h | 16.8h |
| 11 | 1.2.2.1 | Elaboração de DSOL/Cronograma de Infra consolidado |  | 16d | 2017-08-16 | 2017-09-06 |  |  |  | 5d | 0d |  | Fabian Maravalha Santos | 5.6h |  |
| 12 | 1.2.2.2 | Confirmação de sizing e disponibilidade no parque |  | 3d | 2017-09-04 A | 2017-09-06 | 11FF | 70% | 0.9d | 5d | 0d |  | Fabian Maravalha Santos | 24h | 16.8h |
| 13 | 1.2.2.3 | Validação de DSOL/Cronograma |  | 1d | 2017-09-07 | 2017-09-07 | 11, 12 |  |  | 5d | 0d |  | Antonio Carlos da Silva Gomes; Leandro Frossard; WEDO | 24h |  |
| 14 | 1.2.2.4 | Encaminhamento custo final Plancap | milestone | 0d | 2017-09-07 | 2017-09-07 | 13 |  |  | 5d | 0d |  | Fabian Maravalha Santos |  |  |
| 15 | 1.2.2.5 | Handover Operações |  | 2d | 2017-09-08 | 2017-09-11 | 14, 13 |  |  | 5d |  |  | Fabian Maravalha Santos | 16h |  |
| 16 | 1.3 | **Frente de Operações e Implantação de Infra** |  | 55d | 2017-09-12 | 2017-11-27 |  |  |  | 0d |  |  |  | 560h |  |
| 17 | 1.3.1 | **Ambiente Desenvolvimento** |  | 5d | 2017-09-12 | 2017-09-18 | 2 |  |  | 0d |  |  |  | 40h |  |
| 18 | 1.3.1.1 | Instalação HW + SW Base + GA |  | 3d | 2017-09-12 | 2017-09-14 | 9 |  |  | 0d |  |  | Alexandre Nascimento | 24h |  |
| 19 | 1.3.1.2 | Liberação de ambiente para TI/Fábrica |  | 2d | 2017-09-15 | 2017-09-18 | 18 |  |  | 0d |  |  | Alexandre Nascimento | 16h |  |
| 20 | 1.3.2 | **Ambiente de Homologação** |  | 27d | 2017-09-19 | 2017-10-25 | 19 |  |  | 0d |  |  |  | 216h |  |
| 21 | 1.3.2.1 | Instalação HW + SW Base + GA |  | 15d | 2017-09-19 | 2017-10-09 | 15 |  |  | 0d |  |  | Alexandre Nascimento | 120h |  |
| 22 | 1.3.2.2 | Liberação de ambiente para TI/Fábrica |  | 5d | 2017-10-10 | 2017-10-16 | 21 |  |  | 0d |  |  | Alexandre Nascimento | 40h |  |
| 23 | 1.3.2.3 | Validação de ambientes |  | 7d | 2017-10-17 | 2017-10-25 | 22 |  |  | 0d |  |  | WEDO | 56h |  |
| 24 | 1.3.3 | **Ambiente de Produção** |  | 23d | 2017-10-26 | 2017-11-27 | 23 |  |  | 0d |  |  |  | 184h |  |
| 25 | 1.3.3.1 | Instalação HW + SW Base + GA |  | 16d | 2017-10-26 | 2017-11-16 | 15 |  |  | 0d |  |  | Alexandre Nascimento | 128h |  |
| 26 | 1.3.3.2 | Liberação de ambiente para TI/Fábrica |  | 7d | 2017-11-17 | 2017-11-27 | 25 |  |  | 0d |  |  | Alexandre Nascimento | 56h |  |
| 27 | 1.3.4 | Fim do Projeto |  | 5d | 2017-11-21 | 2017-11-27 | 24FF |  |  | 0d |  |  | Alexandre Nascimento; Fabian Maravalha Santos; Leandro Frossard | 120h |  |

Notes:
- 2: Data Firme
- 5: Data Firme
- 6: Data Firme
- 7: Data Firme
- 8: Data Firme
- 9: Data Firme
- 11: Data Firme
- 12: Data Firme
- 13: Data Firme
- 14: Expectativa
- 15: Expectativa
- 18: Expectativa depende de cronograma de infra
- 19: Expectativa depende de cronograma de infra
- 21: Expectativa depende de cronograma de infra
- 22: Expectativa depende de cronograma de infra
- 23: Expectativa depende de cronograma de infra
- 25: Expectativa depende de cronograma de infra
- 26: Expectativa depende de cronograma de infra
- 27: Expectativa depende de cronograma de infra

| ID | WBS | Task | Type | Duration | Start | Finish | Predecessors | Complete | Remaining | Total slack | Free slack | Constraint | Resources | Work | Actual work |
| --- | --- | --- | --- | --- | --- | --- | --- | --- | --- | --- | --- | --- | --- | --- | --- |
| 28 | 2 | **Onda 1 - RAID-FMS Regras Oi TV Offline** |  | 49d? | 2017-08-31 A | 2017-11-07 |  | 1% | 48.27d? | 14d |  |  |  | 936h | 24h |
| 29 | 2.1 | Assessment Antifraude - identificação de atividades |  | 1d | 2017-08-31 A | 2017-08-31 A |  | 100% |  |  |  | start no earlier than 2017-08-31 | Antonio Carlos da Silva Gomes; Kleyton Nogueira Soares; Leandro Frossard | 24h | 24h |
| 30 | 2.2 | **WEDO - Atividades de levantamento** |  | 16d | 2017-09-18 | 2017-10-09 |  |  |  |  |  |  |  | 128h |  |
| 31 | 2.2.1 | Levamentamento de bases de dados e regras |  | 1d | 2017-09-18 | 2017-09-18 |  |  |  | 35d | 0d |  | Expectativa | 8h |  |
| 32 | 2.2.2 | xxx |  | 5d | 2017-09-19 | 2017-09-25 | 31 |  |  | 35d | 0d |  | draft | 40h |  |
| 33 | 2.2.3 | xxx |  | 5d | 2017-09-26 | 2017-10-02 | 32 |  |  | 35d | 0d |  | draft | 40h |  |
| 34 | 2.2.4 | xxx | milestone | 0d | 2017-10-02 | 2017-10-02 | 33 |  |  | 35d | 0d |  | draft |  |  |
| 35 | 2.2.5 | xxx |  | 5d | 2017-10-03 | 2017-10-09 | 34 |  |  | 35d |  |  | draft | 40h |  |
| 36 | 2.3 | **Prevenção Oi + TI - Assessment & Scoping** |  | 17d | 2017-09-18 | 2017-10-10 |  |  |  | 0d |  |  |  | 776h |  |
| 37 | 2.3.1 | **Disponibilizar acesso às bases informacionais Prevenção** |  | 5d | 2017-09-18 | 2017-09-22 |  |  |  |  |  |  | Leandro Frossard; Kleyton Nogueira Soares; Rodrigo Cesar de Freitas | 120h |  |
| 38 | 2.3.1.1 | Disponibilizar integração SIAF |  | 5d | 2017-09-18 | 2017-09-22 |  |  |  | 33d |  |  |  |  |  |
| 39 | 2.3.1.2 | Integração com arquivos CRM + BOV +SINN |  | 5d | 2017-09-18 | 2017-09-22 |  |  |  | 33d |  |  |  |  |  |
| 40 | 2.3.2 | Disponibilizar conjunto de regras de prevenção OITV Offline |  | 5d | 2017-09-18 | 2017-09-22 |  |  |  | 38d | 0d | start no earlier than 2017-09-18 | Kleyton Nogueira Soares; Rodrigo Cesar de Freitas | 80h |  |
| 41 | 2.3.3 | Levantamento e Design de processo de prevenção atual |  | 5d | 2017-09-18 | 2017-09-22 | 40FF |  |  | 43d | 10d |  | Kleyton Nogueira Soares; Rodrigo Cesar de Freitas | 80h |  |
| 42 | 2.3.4 | Levantamento e Design de processo de operação e callcenter |  | 5d | 2017-09-25 | 2017-09-29 | 40 |  |  | 38d | 5d |  | Kleyton Nogueira Soares; Rodrigo Cesar de Freitas | 80h |  |
| 43 | 2.3.5 | Definição de topicos conceituais RAID-FMS para solicitar treinamento/Workshop WEDO |  | 2d | 2017-09-21 | 2017-09-22 | 37FF |  |  | 33d | 0d |  | Kleyton Nogueira Soares; Leandro Frossard; Rodrigo Cesar de Freitas | 48h |  |
| 44 | 2.3.6 | Design de front-end RAID-FMS para operação |  | 5d | 2017-09-25 | 2017-09-29 | 43 |  |  | 33d | 0d |  | Kleyton Nogueira Soares; Leandro Frossard; Rodrigo Cesar de Freitas; WEDO | 160h |  |
| 45 | 2.3.7 | Elaborar estudo de análise de sinergia interfaces RAID-PI/UC/FMS |  | 5d | 2017-10-02 | 2017-10-06 | 44 |  |  | 33d | 0d |  | Antonio Carlos da Silva Gomes; Kleyton Nogueira Soares; Leandro Frossard; Rodrigo Cesar de Freitas | 160h |  |
| 46 | 2.3.8 | Definição de criterios de aceitação e assertividade |  | 2d | 2017-10-09 | 2017-10-10 | 41, 42, 43, 45, 44 |  |  | 33d |  |  | Kleyton Nogueira Soares; Leandro Frossard; Rodrigo Cesar de Freitas | 48h |  |
| 47 | 2.4 | **Especificação e Desenvolvimento RAID-FMS OI TV** |  | 46d? | 2017-09-05 | 2017-11-07 |  |  |  | 14d |  |  |  | 8h |  |
| 48 | 2.4.1 | Providenciar abertura de PRJ no CA |  | 1d | 2017-10-11 | 2017-10-11 | 36 |  |  | 33d |  |  | Relacionamento de TI | 8h |  |
| 49 | 2.4.2 | Cronograma Desenvolvimento WEDO | milestone | 0d | 2017-09-05 | 2017-09-05 | 2 |  |  | 50d | 36d | start no earlier than 2017-09-05 | WEDO |  |  |
| 50 | 2.4.3 | DSOL |  | 7d | 2017-10-25 | 2017-11-02 | 49 |  |  | 14d | 0d | start no earlier than 2017-10-25 |  |  |  |
| 51 | 2.4.4 | Construção + Testes Unitários |  | 1d? | 2017-11-03 | 2017-11-03 | 50 |  |  | 14d | 0d |  |  |  |  |
| 52 | 2.4.5 | Teste de Sistema + UAT |  | 1d? | 2017-11-06 | 2017-11-06 | 51 |  |  | 14d | 0d |  |  |  |  |
| 53 | 2.4.6 | Implantação + Rollout |  | 1d? | 2017-11-07 | 2017-11-07 | 52 |  |  | 14d |  |  |  |  |  |

Notes:
- 28: Expectativa depende de cronograma de infra
- 37: Expectativa
- 40: Expectativa
- 41: Expectativa
- 42: Expectativa
- 43: Expectativa
- 44: Expectativa
- 46: Expectativa
- 48: Expectativa
- 49: Data Firme
- 50: Draft
- 51: Draft
- 52: Draft
- 53: Draft

| ID | WBS | Task | Type | Duration | Start | Finish | Predecessors | Total slack | Free slack | Constraint |
| --- | --- | --- | --- | --- | --- | --- | --- | --- | --- | --- |
| 54 | 3 | **subprojeto RAID-FMS Regras 2p Fixo R1 online/offline** |  | 1d? | 2017-10-25 | 2017-10-25 |  |  |  |  |
| 55 | 3.1 | DS aprovado | milestone | 0d | 2014-05-16 | 2014-05-16 |  | 904d | 898d | start no earlier than 2014-05-16 |
| 56 | 3.2 | **WEDO** |  | 18d | 2017-10-25 | 2017-11-17 |  | 6d |  |  |
| 57 | 3.2.1 | RFP | milestone | 0d | 2017-10-25 | 2017-10-25 | 55 | 6d | 0d |  |
| 58 | 3.2.2 | PT |  | 8d | 2017-10-25 | 2017-11-03 | 57 | 6d | 0d |  |
| 59 | 3.2.3 | Validar PT |  | 5d | 2017-11-06 | 2017-11-10 | 58 | 6d | 0d |  |
| 60 | 3.2.4 | Go fábrica | milestone | 0d | 2017-11-10 | 2017-11-10 | 59 | 6d | 0d |  |
| 61 | 3.2.5 | Receber cronograma |  | 5d | 2017-11-13 | 2017-11-17 | 60 | 6d |  |  |
| 62 | 3.3 | **IBM** |  | 15d | 2017-10-25 | 2017-11-14 |  | 9d |  |  |
| 63 | 3.3.1 | RFP | milestone | 0d | 2017-10-25 | 2017-10-25 | 55 | 9d | 0d |  |
| 64 | 3.3.2 | PT |  | 7d | 2017-10-25 | 2017-11-02 | 63 | 9d | 0d |  |
| 65 | 3.3.3 | Validar PT |  | 3d | 2017-11-03 | 2017-11-07 | 64 | 9d | 0d |  |
| 66 | 3.3.4 | Go fábrica - BASELINE | milestone | 0d | 2017-11-07 | 2017-11-07 | 65 | 9d | 0d |  |
| 67 | 3.3.5 | Receber cronograma |  | 5d | 2017-11-08 | 2017-11-14 | 66 | 9d |  |  |
