# MPP_BR.A.16.POI.039.00 - PROJETO FRAUDE OI

Schedule from MS Project, 2017-09-18 to 2017-12-29.
SSI

## Calendars

- Standard: Mon-Fri 08:00-12:00, 13:00-17:00; Sat-Sun off. Exceptions (off unless hours are given): 2017-10-12 to 2017-10-13 (Nsa Aparecida), 2017-11-02 (Finados), 2017-11-15 (Republica), 2017-12-25 (Natal).

## Resources

| Resource |
| --- |
| Andre Jacomino |
| Nuno Pestana |
| WeDo |
| Oi |
| OI BH |

## Schedule

| ID | WBS | Task | Type | Duration | Start | Finish | Predecessors | Total slack | Free slack | Resources | Work |
| --- | --- | --- | --- | --- | --- | --- | --- | --- | --- | --- | --- |
| 1 | 1 | **Projeto FRAUDE OI** |  | 70d | 2017-09-18 | 2017-12-29 |  |  |  |  | 1296h |
| 2 | 1.1 | **Infra-estrutura** |  | 40d | 2017-10-05 | 2017-12-05 |  | 17d |  |  | 80h |
| 3 | 1.1.1 | Acessos Lógicos Liberados | milestone | 0d | 2017-10-05 | 2017-10-05 | 20SS-5d | 57d |  | Oi |  |
| 4 | 1.1.2 | Ambiente de DEV disponível | milestone | 0d | 2017-10-05 | 2017-10-05 | 20SS-5d | 17d | 0d | Oi |  |
| 5 | 1.1.3 | Ambiente de HML disponível | milestone | 0d | 2017-11-21 | 2017-11-21 | 4FF+30d | 22d | 0d | Oi |  |
| 6 | 1.1.4 | Instalação Vanila RAID FMS - HML |  | 5d | 2017-11-22 | 2017-11-28 | 5 | 22d |  | WeDo | 40h |
| 7 | 1.1.5 | Ambiente de PRD disponível | milestone | 0d | 2017-11-28 | 2017-11-28 | 4FF+35d | 17d | 0d | Oi |  |
| 8 | 1.1.6 | Instalação Vanila RAID FMS - PRD |  | 5d | 2017-11-29 | 2017-12-05 | 7 | 17d |  | WeDo | 40h |
| 9 | 1.2 | **Onda 1 - Planejamento e Setup** |  | 18d | 2017-09-18 | 2017-10-11 |  | 7d |  |  | 256h |
| 10 | 1.2.1 | Acessos Físicos Liberados | milestone | 0d | 2017-09-18 | 2017-09-18 |  | 70d |  | Oi |  |
| 11 | 1.2.2 | Levantamento e elaboração Blueprint |  | 12d | 2017-09-18 | 2017-10-03 |  | 7d | 0d | WeDo; Oi | 192h |
| 12 | 1.2.3 | Reunião de Kick-off |  | 1d | 2017-10-04 | 2017-10-04 | 11 | 57d |  | WeDo; Oi | 16h |
| 13 | 1.2.4 | Elaborar Plano de Desenvolvimento do Projeto (PDP) |  | 6d | 2017-10-04 | 2017-10-11 | 11 | 7d | 0d | WeDo | 48h |
| 14 | 1.2.5 | Onda 1 - Planejamento e Setup - Finalizada | milestone | 0d | 2017-10-11 | 2017-10-11 | 13 | 7d | 0d |  |  |
| 15 | 1.3 | **Treinamento - Conceitos Básicos** |  | 6d | 2017-10-16 | 2017-10-23 |  | 46d |  |  | 56h |
| 16 | 1.3.1 | Elaborar material |  | 5d | 2017-10-16 | 2017-10-20 | 14 | 46d | 0d | WeDo | 40h |
| 17 | 1.3.2 | Ambiente disponibilizado | milestone | 0d | 2017-10-20 | 2017-10-20 | 16 | 46d | 0d | Oi |  |
| 18 | 1.3.3 | Realizar Treinamento |  | 1d | 2017-10-23 | 2017-10-23 | 17 | 46d | 0d | Oi; WeDo | 16h |
| 19 | 1.3.4 | Treinamento Finalizado | milestone | 0d | 2017-10-23 | 2017-10-23 | 18 | 46d |  |  |  |
| 20 | 1.4 | Instalação Vanila RAID FMS - DEV |  | 5d | 2017-10-16 | 2017-10-20 | 14 | 7d | 0d | WeDo | 40h |
| 21 | 1.5 | **Pré Onda 2** |  | 20d | 2017-09-25 | 2017-10-24 |  | 0d |  |  | 304h |
| 22 | 1.5.1 | Criação e priorização do subprojeto no CA | manual | 10d | 2017-09-25 | 2017-10-06 |  |  |  | OI BH | 80h |
| 23 | 1.5.2 | detalhamento funcional do motor de regras e TVOffline | manual | 13d | 2017-10-02 | 2017-10-20 |  |  |  | OI BH | 104h |
| 24 | 1.5.3 | Liberação de acessos às fontes de dados uFraude (ftp01, SP, BCV SINN) | manual | 15d | 2017-10-02 | 2017-10-24 |  |  |  | OI BH | 120h |

| ID | WBS | Task | Type | Duration | Start | Finish | Predecessors | Total slack | Free slack | Resources | Work |
| --- | --- | --- | --- | --- | --- | --- | --- | --- | --- | --- | --- |
| 25 | 1.6 | **Onda 2 - TV off line** |  | 40d | 2017-10-23 | 2017-12-19 |  | 7d |  |  | 520h |
| 26 | 1.6.1 | Análise (Desenho de Solução, Especificação Técnica, Cenários de Teste e Critérios de Aceitação) |  | 9d | 2017-10-23 | 2017-11-03 | 20, 23, 22 | 7d | 0d | WeDo; Oi | 144h |
| 27 | 1.6.2 | Construção e Testes Unitários |  | 13d | 2017-11-06 | 2017-11-23 | 26, 24 | 7d | 0d | WeDo | 104h |
| 28 | 1.6.3 | Elaborar Runbook |  | 3d | 2017-11-24 | 2017-11-28 | 27 | 22d |  | WeDo | 24h |
| 29 | 1.6.4 | Testes de Sistema |  | 4d | 2017-11-24 | 2017-11-29 | 27 | 7d | 0d | WeDo | 32h |
| 30 | 1.6.5 | Testes Integrados |  | 2d | 2017-11-30 | 2017-12-01 | 29 | 7d | 0d | WeDo; Oi | 32h |
| 31 | 1.6.6 | UAT |  | 4d | 2017-12-04 | 2017-12-07 | 30 | 7d | 0d | WeDo; Oi | 64h |
| 32 | 1.6.7 | Elaborar PLIM |  | 2d | 2017-12-04 | 2017-12-05 | 30 | 17d |  | WeDo | 16h |
| 33 | 1.6.8 | Implantação |  | 3d | 2017-12-08 | 2017-12-12 | 31 | 7d | 0d | WeDo | 24h |
| 34 | 1.6.9 | Operação Assistida |  | 5d | 2017-12-13 | 2017-12-19 | 33 | 7d | 0d | WeDo; Oi | 80h |
| 35 | 1.6.10 | Onda 2 - TV off line - Finalizada | milestone | 0d | 2017-12-19 | 2017-12-19 | 34 | 7d |  |  |  |
| 36 | 1.7 | **Treinamentos Onda 2** |  | 8d | 2017-11-20 | 2017-11-29 |  | 21d |  |  | 40h |
| 37 | 1.7.1 | **Treinamento usuário** |  | 8d | 2017-11-20 | 2017-11-29 |  | 21d |  |  | 40h |
| 38 | 1.7.1.1 | Elaborar material |  | 5d | 2017-11-20 | 2017-11-24 | 27SS+9d | 21d | 0d | WeDo | 40h |
| 39 | 1.7.1.2 | Ambiente disponibilizado | milestone | 0d | 2017-11-24 | 2017-11-24 | 38 | 21d | 0d | Oi |  |
| 40 | 1.7.1.3 | Realizar Treinamento |  | 3d | 2017-11-27 | 2017-11-29 | 39 | 21d | 0d |  |  |
| 41 | 1.7.1.4 | Treinamento Finalizado | milestone | 0d | 2017-11-29 | 2017-11-29 | 40 | 21d | 0d |  |  |
| 42 | 1.7.2 | Treinamento Onda 2 Finalizado | milestone | 0d | 2017-11-29 | 2017-11-29 | 41 | 21d |  |  |  |
