# MPP_BR.A.16.POI.039.00 - PROJETO FRAUDE OI

Schedule from MS Project, 2017-09-18 to 2019-12-16, A marks actual dates.
SSI

## Calendars

- Standard: Mon-Fri 08:00-12:00, 13:00-17:00; Sat-Sun off. Exceptions (off unless hours are given): 2017-09-07 to 2020-09-07 (Feriado Sete Setembro, recurring), 2017-10-12 to 2020-10-12 (Nsa Aparecida, recurring), 2017-10-16 to 2019-10-16 (Dia do Informática, recurring), 2017-11-02 to 2020-11-02 (Finados, recurring), 2017-11-15 to 2020-11-15 (Republica, recurring), 2017-12-25 to 2020-12-25 (Natal, recurring), 2017-12-31 to 2019-12-31 (Vespera Ano Novo, recurring), 2018-01-01 to 2021-01-01 (Ano Novo, recurring), 2018-02-12 to 2018-02-13 (Carnaval 2018), 2018-03-30 (Semana Santa), 2018-04-21 to 2019-04-21 (Tiradentes, recurring), 2018-05-01 to 2020-05-01 (Dia do Trabalho, recurring), 2018-05-31 (Corpus Christi 2018), 2018-12-24 to 2020-12-24 (Vespera Natal, recurring), 2019-03-04 to 2019-03-05 (Carnaval 2019), 2019-06-20 (Corpus Christi 2019).

## Resources

| Resource |
| --- |
| Andre Jacomino |
| Nuno Pestana |
| WeDo |
| Oi |

## Schedule

| ID | WBS | Task | Type | Duration | Start | Finish | Predecessors | Complete | Remaining | Baseline start | Baseline finish | Baseline duration | Total slack | Free slack | Constraint | Resources | Work | Actual work |
| --- | --- | --- | --- | --- | --- | --- | --- | --- | --- | --- | --- | --- | --- | --- | --- | --- | --- | --- |
| 1 | 1 | **Projeto RAID FMS OI - Programa 1** |  | 359d | 2017-09-18 A | 2019-02-28 |  | 2% | 352.65d | 2017-09-18 | 2019-02-28 | 359d |  |  |  |  | 5224h | 127.2h |
| 2 | 1.1 | **Infra-estrutura** |  | 55d | 2017-09-18 A | 2017-12-07 |  | 10% | 49.5d | 2017-09-18 | 2017-12-07 | 55d | 505d |  |  |  | 240h | 24h |
| 3 | 1.1.1 | **Acessos Lógicos** |  | 10d | 2017-09-18 A | 2017-09-29 |  | 30% | 7d | 2017-09-18 | 2017-09-29 | 10d | 550d |  |  |  | 80h | 24h |
| 4 | 1.1.1.1 | Enviar dados de acesso e contas de serviço |  | 3d | 2017-09-18 A | 2017-09-20 A |  | 100% |  | 2017-09-18 | 2017-09-20 | 3d |  |  |  | WeDo | 24h | 24h |
| 5 | 1.1.1.2 | Liberar acessos |  | 7d | 2017-09-21 | 2017-09-29 | 4 |  |  | 2017-09-21 | 2017-09-29 | 7d | 505d | 0d |  | Oi | 56h |  |
| 6 | 1.1.1.3 | Acessos Lógicos Liberados | milestone | 0d | 2017-09-29 | 2017-09-29 | 5 |  |  | 2017-09-29 | 2017-09-29 | 0d | 550d |  |  |  |  |  |
| 7 | 1.1.2 | Ambiente de DEV disponível | milestone | 0d | 2017-09-29 | 2017-09-29 | 5 |  |  | 2017-09-29 | 2017-09-29 | 0d | 505d | 0d |  | Oi |  |  |
| 8 | 1.1.3 | Instalação Vanila RAID FMS - DEV |  | 5d | 2017-10-02 | 2017-10-06 | 7 |  |  | 2017-10-02 | 2017-10-06 | 5d | 545d |  |  | WeDo | 40h |  |
| 9 | 1.1.4 | Ambiente de HML disponível | milestone | 0d | 2017-11-16 | 2017-11-16 | 7FF+30d |  |  | 2017-11-16 | 2017-11-16 | 0d | 515d | 0d |  | Oi |  |  |
| 10 | 1.1.5 | Instalação Vanila RAID FMS - HML |  | 5d | 2017-11-17 | 2017-11-23 | 9 |  |  | 2017-11-17 | 2017-11-23 | 5d | 515d |  |  | WeDo | 40h |  |
| 11 | 1.1.6 | Ambiente de PRD disponível | milestone | 0d | 2017-11-23 | 2017-11-23 | 7FF+35d |  |  | 2017-11-23 | 2017-11-23 | 0d | 505d | 0d |  | Oi |  |  |
| 12 | 1.1.7 | Instalação Vanila RAID FMS - PRD + BCV |  | 10d | 2017-11-24 | 2017-12-07 | 11 |  |  | 2017-11-24 | 2017-12-07 | 10d | 505d |  |  | WeDo | 80h |  |
| 13 | 1.1.8 | Ambiente de BCV disponível | milestone | 0d | 2017-11-23 | 2017-11-23 | 11FF |  |  | 2017-11-23 | 2017-11-23 | 0d | 515d |  |  |  |  |  |
| 14 | 1.2 | **ONDA 1: Planejamento e Setup** |  | 14d | 2017-09-18 A | 2017-10-05 |  | 35% | 9.17d | 2017-09-18 | 2017-10-05 | 14d | 545d |  |  |  | 264h | 103.2h |
| 15 | 1.2.1 | Acessos Físicos Liberados | milestone | 0d | 2017-09-18 A | 2017-09-18 A |  | 100% |  | 2017-09-18 | 2017-09-18 | 0d |  |  |  | Oi; WeDo |  |  |
| 16 | 1.2.2 | Levantamento e elaboração Blueprint |  | 12d | 2017-09-18 A | 2017-10-03 |  | 50% | 6d | 2017-09-18 | 2017-10-03 | 12d | 541d | 0d |  | WeDo; Oi | 192h | 96h |
| 17 | 1.2.3 | Elaborar Plano de Desenvolvimento do Projeto (PDP) |  | 6d | 2017-09-26 A | 2017-10-03 | 16SS+6d | 15% | 5.1d | 2017-09-26 | 2017-10-03 | 6d | 547d | 0d |  | WeDo | 48h | 7.2h |
| 18 | 1.2.4 | Elaborar Material kick-off | manual | 1d | 2017-10-04 | 2017-10-04 | 17 |  |  | 2017-10-04 | 2017-10-04 | 1d |  |  |  | Oi | 8h |  |
| 19 | 1.2.5 | Reunião de Kick-off |  | 1d | 2017-10-05 | 2017-10-05 | 16 |  |  | 2017-10-05 | 2017-10-05 | 1d | 540d | 0d | start no earlier than 2017-10-05 | WeDo; Oi | 16h |  |
| 20 | 1.2.6 | Onda 1 - Planejamento e Setup - Finalizada | milestone | 0d | 2017-10-05 | 2017-10-05 | 19 |  |  | 2017-10-05 | 2017-10-05 | 0d | 540d | 0d |  |  |  |  |
| 21 | 1.3 | **Treinamento - Conceitos Básicos - Teoria (FMS-01)** |  | 6d | 2017-10-06 | 2017-10-17 |  |  |  | 2017-10-06 | 2017-10-17 | 6d | 540d |  |  |  | 56h |  |
| 22 | 1.3.1 | Elaborar material |  | 5d | 2017-10-06 | 2017-10-13 | 20 |  |  | 2017-10-06 | 2017-10-13 | 5d | 540d | 0d |  | WeDo | 40h |  |
| 23 | 1.3.2 | Ambiente disponibilizado | milestone | 0d | 2017-10-13 | 2017-10-13 | 22 |  |  | 2017-10-13 | 2017-10-13 | 0d | 540d | 0d |  | Oi |  |  |
| 24 | 1.3.3 | Realizar Treinamento |  | 1d | 2017-10-17 | 2017-10-17 | 23 |  |  | 2017-10-17 | 2017-10-17 | 1d | 540d | 0d |  | Oi; WeDo | 16h |  |
| 25 | 1.3.4 | Treinamento Finalizado | milestone | 0d | 2017-10-17 | 2017-10-17 | 24 |  |  | 2017-10-17 | 2017-10-17 | 0d | 540d |  |  |  |  |  |

Notes:
- 7: Contingencia será ambiente RAID UC (aguardando chegada do serv. novo)

| ID | WBS | Task | Type | Duration | Start | Finish | Predecessors | Baseline start | Baseline finish | Baseline duration | Total slack | Free slack | Constraint | Resources | Work |
| --- | --- | --- | --- | --- | --- | --- | --- | --- | --- | --- | --- | --- | --- | --- | --- |
| 26 | 1.4 | **ONDA 2: TV off line (Quick Wins - Motor de Fraude)** |  | 58d | 2017-10-23 | 2018-01-16 |  | 2017-10-23 | 2018-01-16 | 58d | 0d |  |  |  | 680h |
| 27 | 1.4.1 | Análise (Desenho de Solução, Especificação Técnica, Cenários de Teste e Critérios de Aceitação) |  | 12d | 2017-10-23 | 2017-11-08 |  | 2017-10-23 | 2017-11-08 | 12d | 0d |  | start no earlier than 2017-10-23 | WeDo; Oi | 192h |
| 28 | 1.4.2 | Construção e Testes Unitários |  | 30d | 2017-11-09 | 2017-12-21 | 27 | 2017-11-09 | 2017-12-21 | 30d | 0d |  |  | WeDo | 240h |
| 29 | 1.4.3 | Elaborar Runbook |  | 3d | 2017-12-22 | 2017-12-27 | 28 | 2017-12-22 | 2017-12-27 | 3d | 492d |  |  | WeDo | 24h |
| 30 | 1.4.4 | Testes de Sistema |  | 4d | 2017-12-22 | 2017-12-28 | 28 | 2017-12-22 | 2017-12-28 | 4d | 0d |  |  | WeDo | 32h |
| 31 | 1.4.5 | Testes Integrados |  | 1d | 2017-12-29 | 2017-12-29 | 30 | 2017-12-29 | 2017-12-29 | 1d | 0d |  |  | WeDo; Oi | 16h |
| 32 | 1.4.6 | UAT |  | 4d | 2018-01-02 | 2018-01-05 | 31 | 2018-01-02 | 2018-01-05 | 4d | 0d |  |  | WeDo; Oi | 64h |
| 33 | 1.4.7 | Elaborar PLIM |  | 2d | 2018-01-02 | 2018-01-03 | 31 | 2018-01-02 | 2018-01-03 | 2d | 488d |  |  | WeDo | 16h |
| 34 | 1.4.8 | Implantação |  | 2d | 2018-01-08 | 2018-01-09 | 32 | 2018-01-08 | 2018-01-09 | 2d | 0d |  |  | WeDo | 16h |
| 35 | 1.4.9 | Operação Assistida |  | 5d | 2018-01-10 | 2018-01-16 | 34 | 2018-01-10 | 2018-01-16 | 5d | 479d | 0d |  | WeDo; Oi | 80h |
| 36 | 1.4.10 | Onda 2 - TV off line - Finalizada | milestone | 0d | 2018-01-16 | 2018-01-16 | 35 | 2018-01-16 | 2018-01-16 | 0d | 479d |  |  |  |  |
| 37 | 1.5 | WAC - Analytics (calibragem das regras) | manual | 45d | 2017-12-04 | 2018-02-06 |  | 2017-12-04 | 2018-02-06 | 45d |  |  |  | WeDo | 360h |
| 38 | 1.6 | **ONDA 3: Oi Total 2P + Fixa R1 2P** |  | 60d | 2017-11-24 | 2018-02-21 |  | 2017-11-24 | 2018-02-21 | 60d | 31d |  |  |  | 384h |
| 39 | 1.6.1 | Análise (Desenho de Solução, Especificação Técnica, Cenários de Teste e Critérios de Aceitação) |  | 4d | 2018-01-10 | 2018-01-15 | 34 | 2018-01-10 | 2018-01-15 | 4d | 0d |  |  | WeDo; Oi | 64h |
| 40 | 1.6.2 | Análise Transact |  | 3d | 2017-11-24 | 2017-11-28 | 28SS+10d | 2017-11-24 | 2017-11-28 | 3d | 505d | 0d |  | WeDo | 24h |
| 41 | 1.6.3 | Construção e Testes Unitários |  | 8d | 2018-01-16 | 2018-01-25 | 39 | 2018-01-16 | 2018-01-25 | 8d | 0d |  |  | WeDo | 64h |
| 42 | 1.6.4 | Construção e Testes Unitários - Transact |  | 7d | 2017-11-29 | 2017-12-07 | 40 | 2017-11-29 | 2017-12-07 | 7d | 505d |  |  | WeDo | 56h |
| 43 | 1.6.5 | Elaborar Runbook |  | 2d | 2018-01-26 | 2018-01-29 | 41 | 2018-01-26 | 2018-01-29 | 2d | 470d |  |  | WeDo | 16h |
| 44 | 1.6.6 | Testes de Sistema |  | 4d | 2018-01-26 | 2018-01-31 | 41 | 2018-01-26 | 2018-01-31 | 4d | 0d |  |  | WeDo | 32h |
| 45 | 1.6.7 | Testes Integrados |  | 3d | 2018-02-01 | 2018-02-05 | 44 | 2018-02-01 | 2018-02-05 | 3d | 0d |  |  | WeDo; Oi | 48h |
| 46 | 1.6.8 | UAT |  | 3d | 2018-02-06 | 2018-02-08 | 45 | 2018-02-06 | 2018-02-08 | 3d | 0d |  |  | WeDo; Oi | 48h |
| 47 | 1.6.9 | Elaborar PLIM |  | 2d | 2018-02-06 | 2018-02-07 | 45 | 2018-02-06 | 2018-02-07 | 2d | 463d |  |  | WeDo | 16h |
| 48 | 1.6.10 | Implantação |  | 2d | 2018-02-09 | 2018-02-14 | 46 | 2018-02-09 | 2018-02-14 | 2d | 0d |  |  | WeDo | 16h |
| 49 | 1.6.11 | Operação Assistida |  | 5d | 2018-02-15 | 2018-02-21 | 48 | 2018-02-15 | 2018-02-21 | 5d | 455d | 0d |  |  |  |
| 50 | 1.6.12 | Onda 3 - Oi Total 2P + Fixa R1 1P - Finalizada | milestone | 0d | 2018-02-21 | 2018-02-21 | 49 | 2018-02-21 | 2018-02-21 | 0d | 455d |  |  |  |  |
| 51 | 1.7 | WAC - Analytics (construção dos modelos) | manual | 35d | 2018-02-07 | 2018-03-29 |  | 2018-02-07 | 2018-03-29 | 35d |  |  |  | WeDo | 280h |

Notes:
- 28: Avaliar a possibilidade de quebrar entregas (quais)
- 38: Modelos estatísticos devem devem estar prontos para entrada do online (risco alto)

| ID | WBS | Task | Type | Duration | Start | Finish | Predecessors | Baseline start | Baseline finish | Baseline duration | Total slack | Free slack | Resources | Work |
| --- | --- | --- | --- | --- | --- | --- | --- | --- | --- | --- | --- | --- | --- | --- |
| 52 | 1.8 | **Treinamento Usuário (FMS-04)** |  | 8d | 2018-01-19 | 2018-01-30 |  | 2018-01-19 | 2018-01-30 | 8d | 469d |  |  | 40h |
| 53 | 1.8.1 | Elaborar material |  | 5d | 2018-01-19 | 2018-01-25 | 41SS+3d | 2018-01-19 | 2018-01-25 | 5d | 469d | 0d | WeDo | 40h |
| 54 | 1.8.2 | Ambiente disponibilizado | milestone | 0d | 2018-01-25 | 2018-01-25 | 53 | 2018-01-25 | 2018-01-25 | 0d | 469d | 0d | Oi |  |
| 55 | 1.8.3 | Realizar Treinamento |  | 3d | 2018-01-26 | 2018-01-30 | 54 | 2018-01-26 | 2018-01-30 | 3d | 469d | 0d |  |  |
| 56 | 1.8.4 | Treinamento Usuário Finalizado | milestone | 0d | 2018-01-30 | 2018-01-30 | 55 | 2018-01-30 | 2018-01-30 | 0d | 469d |  |  |  |
| 57 | 1.9 | **ONDAS 4, 5 e 6: Oi Total 3P + Móvel Puro Online + Oi Total Online** |  | 34d | 2018-02-15 | 2018-04-04 |  | 2018-02-15 | 2018-04-04 | 34d | 0d |  |  | 408h |
| 58 | 1.9.1 | Análise (Desenho de Solução, Especificação Técnica, Cenários de Teste e Critérios de Aceitação) |  | 7d | 2018-02-15 | 2018-02-23 | 48 | 2018-02-15 | 2018-02-23 | 7d | 0d |  | WeDo; Oi | 112h |
| 59 | 1.9.2 | Construção e Testes Unitários |  | 15d | 2018-02-26 | 2018-03-16 | 58 | 2018-02-26 | 2018-03-16 | 15d | 0d |  | WeDo | 120h |
| 60 | 1.9.3 | Elaborar Runbook |  | 2d | 2018-03-19 | 2018-03-20 | 59 | 2018-03-19 | 2018-03-20 | 2d | 436d |  | WeDo | 16h |
| 61 | 1.9.4 | Testes de Sistema |  | 4d | 2018-03-19 | 2018-03-22 | 59 | 2018-03-19 | 2018-03-22 | 4d | 0d |  | WeDo | 32h |
| 62 | 1.9.5 | Testes Integrados |  | 2d | 2018-03-23 | 2018-03-26 | 61 | 2018-03-23 | 2018-03-26 | 2d | 0d |  | WeDo; Oi | 32h |
| 63 | 1.9.6 | UAT |  | 4d | 2018-03-27 | 2018-04-02 | 62 | 2018-03-27 | 2018-04-02 | 4d | 0d |  | WeDo; Oi | 64h |
| 64 | 1.9.7 | Elaborar PLIM |  | 2d | 2018-03-27 | 2018-03-28 | 62 | 2018-03-27 | 2018-03-28 | 2d | 430d |  | WeDo | 16h |
| 65 | 1.9.8 | Implantação |  | 2d | 2018-04-03 | 2018-04-04 | 63 | 2018-04-03 | 2018-04-04 | 2d | 0d |  | WeDo | 16h |
| 66 | 1.9.9 | Ondas 4, 5 e 6 - Oi Total 3P + Móvel Puro Online + Oi Total Online - Finalizada | milestone | 0d | 2018-04-04 | 2018-04-04 | 65 | 2018-04-04 | 2018-04-04 | 0d | 0d |  |  |  |
| 67 | 1.10 | **ONDA 7.1: Integração Bases de Dados (CRM)** |  | 57d | 2018-04-05 | 2018-06-26 |  | 2018-04-05 | 2018-06-26 | 57d | 0d |  |  | 688h |
| 68 | 1.10.1 | Análise (Desenho de Solução, Especificação Técnica, Cenários de Teste e Critérios de Aceitação) |  | 10d | 2018-04-05 | 2018-04-18 | 66 | 2018-04-05 | 2018-04-18 | 10d | 0d |  | WeDo; Oi | 160h |
| 69 | 1.10.2 | Construção e Testes Unitários |  | 25d | 2018-04-19 | 2018-05-24 | 68 | 2018-04-19 | 2018-05-24 | 25d | 0d |  | WeDo | 200h |
| 70 | 1.10.3 | Elaborar Runbook |  | 2d | 2018-05-25 | 2018-05-28 | 69 | 2018-05-25 | 2018-05-28 | 2d | 389d |  | WeDo | 16h |
| 71 | 1.10.4 | Testes de Sistema |  | 5d | 2018-05-25 | 2018-06-01 | 69 | 2018-05-25 | 2018-06-01 | 5d | 0d |  | WeDo | 40h |
| 72 | 1.10.5 | Testes Integrados - Plano e Execução |  | 10d | 2018-06-04 | 2018-06-15 | 71 | 2018-06-04 | 2018-06-15 | 10d | 0d |  | WeDo; Oi | 160h |
| 73 | 1.10.6 | UAT |  | 5d | 2018-06-18 | 2018-06-22 | 72 | 2018-06-18 | 2018-06-22 | 5d | 0d |  | WeDo; Oi | 80h |
| 74 | 1.10.7 | Elaborar PLIM |  | 2d | 2018-06-18 | 2018-06-19 | 72 | 2018-06-18 | 2018-06-19 | 2d | 374d |  | WeDo | 16h |
| 75 | 1.10.8 | Implantação |  | 2d | 2018-06-25 | 2018-06-26 | 73 | 2018-06-25 | 2018-06-26 | 2d | 0d |  | WeDo | 16h |
| 76 | 1.10.9 | Onda 7.1 - Integração Bases de Dados - Finalizada | milestone | 0d | 2018-06-26 | 2018-06-26 | 75 | 2018-06-26 | 2018-06-26 | 0d | 0d |  |  |  |

| ID | WBS | Task | Type | Duration | Start | Finish | Predecessors | Baseline start | Baseline finish | Baseline duration | Total slack | Free slack | Resources | Work |
| --- | --- | --- | --- | --- | --- | --- | --- | --- | --- | --- | --- | --- | --- | --- |
| 77 | 1.11 | **ONDA 7.2: Integração Bases de Dados (Inadimplência e Recargas)** |  | 31d | 2018-06-27 | 2018-08-08 |  | 2018-06-27 | 2018-08-08 | 31d | 0d |  |  | 368h |
| 78 | 1.11.1 | Análise (Desenho de Solução, Especificação Técnica, Cenários de Teste e Critérios de Aceitação) |  | 5d | 2018-06-27 | 2018-07-03 | 76 | 2018-06-27 | 2018-07-03 | 5d | 0d |  | WeDo; Oi | 80h |
| 79 | 1.11.2 | Construção e Testes Unitários |  | 15d | 2018-07-04 | 2018-07-24 | 78 | 2018-07-04 | 2018-07-24 | 15d | 0d |  | WeDo | 120h |
| 80 | 1.11.3 | Elaborar Runbook |  | 2d | 2018-07-25 | 2018-07-26 | 79 | 2018-07-25 | 2018-07-26 | 2d | 347d |  | WeDo | 16h |
| 81 | 1.11.4 | Testes de Sistema |  | 3d | 2018-07-25 | 2018-07-27 | 79 | 2018-07-25 | 2018-07-27 | 3d | 0d |  | WeDo | 24h |
| 82 | 1.11.5 | Testes Integrados - Plano e Execução |  | 3d | 2018-07-30 | 2018-08-01 | 81 | 2018-07-30 | 2018-08-01 | 3d | 0d |  | WeDo; Oi | 48h |
| 83 | 1.11.6 | UAT |  | 3d | 2018-08-02 | 2018-08-06 | 82 | 2018-08-02 | 2018-08-06 | 3d | 0d |  | WeDo; Oi | 48h |
| 84 | 1.11.7 | Elaborar PLIM |  | 2d | 2018-08-02 | 2018-08-03 | 82 | 2018-08-02 | 2018-08-03 | 2d | 341d |  | WeDo | 16h |
| 85 | 1.11.8 | Implantação |  | 2d | 2018-08-07 | 2018-08-08 | 83 | 2018-08-07 | 2018-08-08 | 2d | 0d |  | WeDo | 16h |
| 86 | 1.11.9 | Onda 7.2 - Integração Bases de Dados - Finalizada | milestone | 0d | 2018-08-08 | 2018-08-08 | 85 | 2018-08-08 | 2018-08-08 | 0d | 338d |  |  |  |
| 87 | 1.12 | **Treinamento Administração Técnica (FMS-02)** |  | 8d | 2018-07-04 | 2018-07-13 |  | 2018-07-04 | 2018-07-13 | 8d | 356d |  |  | 88h |
| 88 | 1.12.1 | Elaborar material |  | 5d | 2018-07-04 | 2018-07-10 | 79SS | 2018-07-04 | 2018-07-10 | 5d | 356d | 0d | WeDo | 40h |
| 89 | 1.12.2 | Ambiente disponibilizado | milestone | 0d | 2018-07-10 | 2018-07-10 | 88 | 2018-07-10 | 2018-07-10 | 0d | 356d | 0d | Oi |  |
| 90 | 1.12.3 | Realizar Treinamento |  | 3d | 2018-07-11 | 2018-07-13 | 89 | 2018-07-11 | 2018-07-13 | 3d | 356d | 0d | WeDo; Oi | 48h |
| 91 | 1.12.4 | Treinamento Administração Técnica Finalizado | milestone | 0d | 2018-07-13 | 2018-07-13 | 90 | 2018-07-13 | 2018-07-13 | 0d | 356d |  |  |  |
| 92 | 1.13 | **Treinamento Administração Funcional (FMS-03)** |  | 8d | 2017-09-18 | 2017-09-27 |  | 2017-09-18 | 2017-09-27 | 8d | 552d |  |  | 88h |
| 93 | 1.13.1 | Elaborar material |  | 5d | 2017-09-18 | 2017-09-22 |  | 2017-09-18 | 2017-09-22 | 5d | 552d | 0d | WeDo | 40h |
| 94 | 1.13.2 | Ambiente disponibilizado | milestone | 0d | 2017-09-22 | 2017-09-22 | 93 | 2017-09-22 | 2017-09-22 | 0d | 552d | 0d | Oi |  |
| 95 | 1.13.3 | Realizar Treinamento |  | 3d | 2017-09-25 | 2017-09-27 | 94 | 2017-09-25 | 2017-09-27 | 3d | 552d | 0d | WeDo; Oi | 48h |
| 96 | 1.13.4 | Treinamento Administração Funcional Finalizado | milestone | 0d | 2017-09-27 | 2017-09-27 | 95 | 2017-09-27 | 2017-09-27 | 0d | 552d |  |  |  |
| 97 | 1.14 | **ONDA 9: Telas para Operação de Crédito** |  | 38d | 2018-08-09 | 2018-10-02 |  | 2018-08-09 | 2018-10-02 | 38d | 300d |  |  |  |
| 98 | 1.14.1 | Análise (Desenho de Solução, Especificação Técnica, Cenários de Teste e Critérios de Aceitação) |  | 5d | 2018-08-09 | 2018-08-15 | 85 | 2018-08-09 | 2018-08-15 | 5d | 300d | 0d |  |  |
| 99 | 1.14.2 | Construção e Testes Unitários |  | 15d | 2018-08-16 | 2018-09-05 | 98 | 2018-08-16 | 2018-09-05 | 15d | 300d | 0d |  |  |
| 100 | 1.14.3 | Elaborar Runbook |  | 2d | 2018-09-06 | 2018-09-10 | 99 | 2018-09-06 | 2018-09-10 | 2d | 316d |  |  |  |
| 101 | 1.14.4 | Testes de Sistema |  | 5d | 2018-09-06 | 2018-09-13 | 99 | 2018-09-06 | 2018-09-13 | 5d | 300d | 0d |  |  |
| 102 | 1.14.5 | Testes Integrados |  | 1d | 2018-09-14 | 2018-09-14 | 101 | 2018-09-14 | 2018-09-14 | 1d | 300d | 0d |  |  |
| 103 | 1.14.6 | UAT |  | 5d | 2018-09-17 | 2018-09-21 | 102 | 2018-09-17 | 2018-09-21 | 5d | 300d | 0d |  |  |
| 104 | 1.14.7 | Elaborar PLIM |  | 2d | 2018-09-17 | 2018-09-18 | 102 | 2018-09-17 | 2018-09-18 | 2d | 310d |  |  |  |
| 105 | 1.14.8 | Implantação |  | 2d | 2018-09-24 | 2018-09-25 | 103 | 2018-09-24 | 2018-09-25 | 2d | 300d | 0d |  |  |
| 106 | 1.14.9 | Operação Assistida |  | 5d | 2018-09-26 | 2018-10-02 | 105 | 2018-09-26 | 2018-10-02 | 5d | 300d | 0d |  |  |
| 107 | 1.14.10 | Onda 9 - Telas para Operação de Crédito - Finalizada | milestone | 0d | 2018-10-02 | 2018-10-02 | 106 | 2018-10-02 | 2018-10-02 | 0d | 300d |  |  |  |

| ID | WBS | Task | Type | Duration | Start | Finish | Predecessors | Baseline start | Baseline finish | Baseline duration | Total slack | Free slack | Resources | Work |
| --- | --- | --- | --- | --- | --- | --- | --- | --- | --- | --- | --- | --- | --- | --- |
| 108 | 1.15 | **ONDA 10: Oi Controle Sem Fatura Online** |  | 45d | 2018-08-09 | 2018-10-11 |  | 2018-08-09 | 2018-10-11 | 45d | 0d |  |  | 584h |
| 109 | 1.15.1 | Análise (Desenho de Solução, Especificação Técnica, Cenários de Teste e Critérios de Aceitação) |  | 10d | 2018-08-09 | 2018-08-22 | 85 | 2018-08-09 | 2018-08-22 | 10d | 0d |  | WeDo; Oi | 160h |
| 110 | 1.15.2 | Construção e Testes Unitários |  | 18d | 2018-08-23 | 2018-09-18 | 109 | 2018-08-23 | 2018-09-18 | 18d | 0d |  | WeDo | 144h |
| 111 | 1.15.3 | Elaborar Runbook |  | 2d | 2018-09-19 | 2018-09-20 | 110 | 2018-09-19 | 2018-09-20 | 2d | 308d |  | WeDo | 16h |
| 112 | 1.15.4 | Testes de Sistema |  | 4d | 2018-09-19 | 2018-09-24 | 110 | 2018-09-19 | 2018-09-24 | 4d | 0d |  | WeDo | 32h |
| 113 | 1.15.5 | Testes Integrados |  | 3d | 2018-09-25 | 2018-09-27 | 112 | 2018-09-25 | 2018-09-27 | 3d | 0d |  | WeDo; Oi | 48h |
| 114 | 1.15.6 | UAT |  | 4d | 2018-09-28 | 2018-10-03 | 113 | 2018-09-28 | 2018-10-03 | 4d | 299d |  | WeDo; Oi | 64h |
| 115 | 1.15.7 | Elaborar PLIM |  | 2d | 2018-09-28 | 2018-10-01 | 113 | 2018-09-28 | 2018-10-01 | 2d | 0d |  | WeDo | 16h |
| 116 | 1.15.8 | Implantação |  | 3d | 2018-10-02 | 2018-10-04 | 115 | 2018-10-02 | 2018-10-04 | 3d | 0d |  | WeDo | 24h |
| 117 | 1.15.9 | Operação Assistida |  | 5d | 2018-10-05 | 2018-10-11 | 116 | 2018-10-05 | 2018-10-11 | 5d | 293d | 0d | WeDo; Oi | 80h |
| 118 | 1.15.10 | Onda 10 - Oi Controle Sem Fatura Online - Finalizada | milestone | 0d | 2018-10-11 | 2018-10-11 | 117 | 2018-10-11 | 2018-10-11 | 0d | 293d |  |  |  |
| 119 | 1.16 | **ONDA 8: Oi Fibra Online** |  | 10d | 2018-10-05 | 2018-10-22 |  | 2018-10-05 | 2018-10-22 | 10d | 288d |  |  | 104h |
| 120 | 1.16.1 | Análise (Desenho de Solução, Especificação Técnica, Cenários de Teste e Critérios de Aceitação) |  | 3d | 2018-10-05 | 2018-10-09 | 116 | 2018-10-05 | 2018-10-09 | 3d | 288d | 0d | WeDo | 24h |
| 121 | 1.16.2 | Construção e Testes Unitários |  | 3d | 2018-10-10 | 2018-10-15 | 120 | 2018-10-10 | 2018-10-15 | 3d | 288d | 0d | WeDo | 24h |
| 122 | 1.16.3 | Elaborar Runbook |  | 1d | 2018-10-10 | 2018-10-10 | 120 | 2018-10-10 | 2018-10-10 | 1d | 294d |  | WeDo | 8h |
| 123 | 1.16.4 | Testes de Sistema |  | 1d | 2018-10-17 | 2018-10-17 | 121 | 2018-10-17 | 2018-10-17 | 1d | 288d | 0d | WeDo; Oi | 16h |
| 124 | 1.16.5 | Testes Integrados |  | 1d | 2018-10-18 | 2018-10-18 | 123 | 2018-10-18 | 2018-10-18 | 1d | 288d | 0d | WeDo; Oi | 16h |
| 125 | 1.16.6 | UAT |  | 1d | 2018-10-19 | 2018-10-19 | 124 | 2018-10-19 | 2018-10-19 | 1d | 289d |  | WeDo | 8h |
| 126 | 1.16.7 | Elaborar PLIM |  | 1d | 2018-10-19 | 2018-10-19 | 124 | 2018-10-19 | 2018-10-19 | 1d | 288d | 0d | WeDo | 8h |
| 127 | 1.16.8 | Implantação |  | 1d | 2018-10-22 | 2018-10-22 | 126 | 2018-10-22 | 2018-10-22 | 1d | 288d | 0d |  |  |
| 128 | 1.16.9 | Onda 8 - Oi Fibra Online - Finalizada | milestone | 0d | 2018-10-22 | 2018-10-22 | 127 | 2018-10-22 | 2018-10-22 | 0d | 288d |  |  |  |
| 129 | 1.17 | **ONDA 11: Fixa R2 Offline** |  | 25d | 2018-10-05 | 2018-11-13 |  | 2018-10-05 | 2018-11-13 | 25d | 253d |  |  | 320h |
| 130 | 1.17.1 | Análise (Desenho de Solução, Especificação Técnica, Cenários de Teste e Critérios de Aceitação) |  | 5d | 2018-10-05 | 2018-10-11 | 116 | 2018-10-05 | 2018-10-11 | 5d | 253d | 0d | WeDo; Oi | 80h |
| 131 | 1.17.2 | Construção e Testes Unitários |  | 10d | 2018-10-15 | 2018-10-29 | 130 | 2018-10-15 | 2018-10-29 | 10d | 253d | 0d | WeDo | 80h |
| 132 | 1.17.3 | Elaborar Runbook |  | 2d | 2018-10-30 | 2018-10-31 | 131 | 2018-10-30 | 2018-10-31 | 2d | 281d |  | WeDo | 16h |
| 133 | 1.17.4 | Testes de Sistema |  | 4d | 2018-10-30 | 2018-11-05 | 131 | 2018-10-30 | 2018-11-05 | 4d | 253d | 0d | WeDo | 32h |
| 134 | 1.17.5 | Testes Integrados |  | 2d | 2018-11-06 | 2018-11-07 | 133 | 2018-11-06 | 2018-11-07 | 2d | 253d | 0d | WeDo; Oi | 32h |
| 135 | 1.17.6 | UAT |  | 3d | 2018-11-08 | 2018-11-12 | 134 | 2018-11-08 | 2018-11-12 | 3d | 274d |  | WeDo; Oi | 48h |
| 136 | 1.17.7 | Elaborar PLIM |  | 2d | 2018-11-08 | 2018-11-09 | 134 | 2018-11-08 | 2018-11-09 | 2d | 253d | 0d | WeDo | 16h |
| 137 | 1.17.8 | Implantação |  | 2d | 2018-11-12 | 2018-11-13 | 136 | 2018-11-12 | 2018-11-13 | 2d | 253d | 0d | WeDo | 16h |
| 138 | 1.17.9 | Onda 11 - Fixa R2 Offline - Finalizada | milestone | 0d | 2018-11-13 | 2018-11-13 | 137 | 2018-11-13 | 2018-11-13 | 0d | 253d | 0d |  |  |

Notes:
- 129: Depende UNIFICA ou CRM Unico - ver Cezar

| ID | WBS | Task | Type | Duration | Start | Finish | Predecessors | Baseline start | Baseline finish | Baseline duration | Total slack | Free slack | Resources | Work |
| --- | --- | --- | --- | --- | --- | --- | --- | --- | --- | --- | --- | --- | --- | --- |
| 139 | 1.18 | **ONDA 12: Fixa R2 Online** |  | 20d | 2018-11-14 | 2018-12-12 |  | 2018-11-14 | 2018-12-12 | 20d | 253d |  |  | 272h |
| 140 | 1.18.1 | Análise (Desenho de Solução, Especificação Técnica, Cenários de Teste e Critérios de Aceitação) |  | 5d | 2018-11-14 | 2018-11-21 | 138 | 2018-11-14 | 2018-11-21 | 5d | 253d | 0d | WeDo; Oi | 80h |
| 141 | 1.18.2 | Construção e Testes Unitários |  | 7d | 2018-11-22 | 2018-11-30 | 140 | 2018-11-22 | 2018-11-30 | 7d | 253d | 0d | WeDo | 56h |
| 142 | 1.18.3 | Elaborar Runbook |  | 2d | 2018-12-03 | 2018-12-04 | 141 | 2018-12-03 | 2018-12-04 | 2d | 259d |  | WeDo | 16h |
| 143 | 1.18.4 | Testes de Sistema |  | 3d | 2018-12-03 | 2018-12-05 | 141 | 2018-12-03 | 2018-12-05 | 3d | 253d | 0d | WeDo | 24h |
| 144 | 1.18.5 | Testes Integrados |  | 1d | 2018-12-06 | 2018-12-06 | 143 | 2018-12-06 | 2018-12-06 | 1d | 253d | 0d | WeDo; Oi | 16h |
| 145 | 1.18.6 | UAT |  | 3d | 2018-12-07 | 2018-12-11 | 144 | 2018-12-07 | 2018-12-11 | 3d | 254d |  | WeDo; Oi | 48h |
| 146 | 1.18.7 | Elaborar PLIM |  | 2d | 2018-12-07 | 2018-12-10 | 144 | 2018-12-07 | 2018-12-10 | 2d | 253d | 0d | WeDo | 16h |
| 147 | 1.18.8 | Implantação |  | 2d | 2018-12-11 | 2018-12-12 | 146 | 2018-12-11 | 2018-12-12 | 2d | 253d | 0d | WeDo | 16h |
| 148 | 1.18.9 | Operação Assistida | milestone | 0d | 2018-12-12 | 2018-12-12 | 147 | 2018-12-12 | 2018-12-12 | 0d | 253d | 0d | WeDo; Oi |  |
| 149 | 1.18.10 | Onda 12 - Fixa R2 Online - Finalizada | milestone | 0d | 2018-12-12 | 2018-12-12 | 148 | 2018-12-12 | 2018-12-12 | 0d | 253d |  |  |  |
| 150 | 2 | **Projeto RAID FMS OI - Programa 2** |  | 298d | 2018-10-05 | 2019-12-16 |  | 2018-10-05 | 2019-12-16 | 298d | 0d |  |  | 5704h |
| 151 | 2.1 | **ONDA 1: Planejamento e Setup** |  | 7d | 2018-10-05 | 2018-10-17 |  | 2018-10-05 | 2018-10-17 | 7d | 0d |  |  | 224h |
| 152 | 2.1.1 | Detalhamento (Macro Requisitos) |  | 7d | 2018-10-05 | 2018-10-17 | 116, 149 | 2018-10-05 | 2018-10-17 | 7d | 291d |  | Oi | 56h |
| 153 | 2.1.2 | Revisão do Cronograma |  | 7d | 2018-10-05 | 2018-10-17 | 116, 149 | 2018-10-05 | 2018-10-17 | 7d | 291d |  | WeDo; Oi | 112h |
| 154 | 2.1.3 | Atualização PDP |  | 7d | 2018-10-05 | 2018-10-17 | 116, 149 | 2018-10-05 | 2018-10-17 | 7d | 0d |  | WeDo | 56h |
| 155 | 2.2 | **ONDA 1.1: Configuração Ambiente** |  | 30d | 2018-10-17 | 2018-11-29 |  | 2018-10-17 | 2018-11-29 | 30d | 0d |  |  | 480h |
| 156 | 2.2.1 | Integração Hadoop | manual | 30d | 2018-10-17 | 2018-11-29 | 116, 154 | 2018-10-17 | 2018-11-29 | 30d |  |  | WeDo; Oi | 480h |
| 157 | 2.3 | **ONDAS 13 e 14: Fraude LDI + Roaming internacional Near Real Time** |  | 63d | 2018-10-18 | 2019-01-22 |  | 2018-10-18 | 2019-01-22 | 63d | 0d |  |  | 752h |
| 158 | 2.3.1 | Análise (Desenho de Solução, Especificação Técnica, Cenários de Teste e Critérios de Aceitação) |  | 12d | 2018-10-18 | 2018-11-05 | 154 | 2018-10-18 | 2018-11-05 | 12d | 0d |  | WeDo; Oi | 192h |
| 159 | 2.3.2 | Construção e Testes Unitários |  | 29d | 2018-11-06 | 2018-12-17 | 158 | 2018-11-06 | 2018-12-17 | 29d | 203d | 0d | WeDo | 232h |
| 160 | 2.3.3 | Elaborar Runbook |  | 3d | 2018-12-18 | 2018-12-20 | 159 | 2018-12-18 | 2018-12-20 | 3d | 247d |  | WeDo | 24h |
| 161 | 2.3.4 | Testes de Sistema |  | 6d | 2018-12-18 | 2018-12-27 | 159 | 2018-12-18 | 2018-12-27 | 6d | 203d | 0d | WeDo | 48h |
| 162 | 2.3.5 | Testes Integrados |  | 3d | 2018-12-28 | 2019-01-03 | 161 | 2018-12-28 | 2019-01-03 | 3d | 203d | 0d | WeDo; Oi | 48h |
| 163 | 2.3.6 | UAT |  | 6d | 2019-01-04 | 2019-01-11 | 162 | 2019-01-04 | 2019-01-11 | 6d | 203d | 0d | WeDo; Oi | 96h |
| 164 | 2.3.7 | Elaborar PLIM |  | 2d | 2019-01-04 | 2019-01-07 | 162 | 2019-01-04 | 2019-01-07 | 2d | 239d |  | WeDo | 16h |
| 165 | 2.3.8 | Implantação |  | 2d | 2019-01-14 | 2019-01-15 | 163 | 2019-01-14 | 2019-01-15 | 2d | 203d | 0d | WeDo | 16h |
| 166 | 2.3.9 | Operação Assistida |  | 5d | 2019-01-16 | 2019-01-22 | 165 | 2019-01-16 | 2019-01-22 | 5d | 228d | 0d | WeDo; Oi | 80h |
| 167 | 2.3.10 | ONDAS 13 e 14: Fraude LDI + Roaming internacional Near Real Time - Finalizado | milestone | 0d | 2019-01-22 | 2019-01-22 | 166 | 2019-01-22 | 2019-01-22 | 0d | 228d |  |  |  |

Notes:
- 139: Depende UNIFICA - ver Cezar
- 152: parelizado com término da ONDA 10

| ID | WBS | Task | Type | Duration | Start | Finish | Predecessors | Baseline start | Baseline finish | Baseline duration | Total slack | Free slack | Resources | Work |
| --- | --- | --- | --- | --- | --- | --- | --- | --- | --- | --- | --- | --- | --- | --- |
| 168 | 2.4 | **Treinamento Help Desk (FMS-06)** |  | 4d | 2018-11-09 | 2018-11-14 |  | 2018-11-09 | 2018-11-14 | 4d | 272d |  |  | 48h |
| 169 | 2.4.1 | Elaborar material |  | 2d | 2018-11-09 | 2018-11-12 | 159SS+3d | 2018-11-09 | 2018-11-12 | 2d | 272d | 0d | WeDo | 16h |
| 170 | 2.4.2 | Ambiente disponibilizado | milestone | 0d | 2018-11-12 | 2018-11-12 | 169 | 2018-11-12 | 2018-11-12 | 0d | 272d | 0d | Oi |  |
| 171 | 2.4.3 | Realizar Treinamento |  | 2d | 2018-11-13 | 2018-11-14 | 170 | 2018-11-13 | 2018-11-14 | 2d | 272d | 0d | WeDo; Oi | 32h |
| 172 | 2.4.4 | Treinamento Usuário Finalizado | milestone | 0d | 2018-11-14 | 2018-11-14 | 171 | 2018-11-14 | 2018-11-14 | 0d | 272d |  |  |  |
| 173 | 2.5 | **ONDA 15: Alarmes Externos** |  | 30d | 2019-01-16 | 2019-02-26 |  | 2019-01-16 | 2019-02-26 | 30d | 203d |  |  | 312h |
| 174 | 2.5.1 | Análise (Desenho de Solução, Especificação Técnica, Cenários de Teste e Critérios de Aceitação) |  | 5d | 2019-01-16 | 2019-01-22 | 165 | 2019-01-16 | 2019-01-22 | 5d | 203d | 0d | WeDo; Oi | 80h |
| 175 | 2.5.2 | Construção e Testes Unitários |  | 12d | 2019-01-23 | 2019-02-07 | 174 | 2019-01-23 | 2019-02-07 | 12d | 203d | 0d | WeDo | 96h |
| 176 | 2.5.3 | Elaborar Runbook |  | 2d | 2019-02-08 | 2019-02-11 | 175 | 2019-02-08 | 2019-02-11 | 2d | 214d |  | WeDo | 16h |
| 177 | 2.5.4 | Testes de Sistema |  | 3d | 2019-02-08 | 2019-02-12 | 175 | 2019-02-08 | 2019-02-12 | 3d | 203d | 0d | WeDo | 24h |
| 178 | 2.5.5 | Testes Integrados |  | 1d | 2019-02-13 | 2019-02-13 | 177 | 2019-02-13 | 2019-02-13 | 1d | 203d | 0d | WeDo; Oi | 16h |
| 179 | 2.5.6 | UAT |  | 3d | 2019-02-14 | 2019-02-18 | 178 | 2019-02-14 | 2019-02-18 | 3d | 209d |  | WeDo; Oi | 48h |
| 180 | 2.5.7 | Elaborar PLIM |  | 2d | 2019-02-14 | 2019-02-15 | 178 | 2019-02-14 | 2019-02-15 | 2d | 203d | 0d | WeDo | 16h |
| 181 | 2.5.8 | Implantação |  | 2d | 2019-02-18 | 2019-02-19 | 180 | 2019-02-18 | 2019-02-19 | 2d | 203d | 0d | WeDo | 16h |
| 182 | 2.5.9 | Operação Assistida |  | 5d | 2019-02-20 | 2019-02-26 | 181 | 2019-02-20 | 2019-02-26 | 5d | 203d | 0d |  |  |
| 183 | 2.5.10 | Onda 15 - Alarmes Externos - Finalizado | milestone | 0d | 2019-02-26 | 2019-02-26 | 182 | 2019-02-26 | 2019-02-26 | 0d | 203d |  |  |  |
| 184 | 2.6 | **ONDAS 16 e 18: Carga + Motor Uso - Tráfego (Móvel, Fixa, VOD, VoIP, TV)** |  | 105d | 2018-10-18 | 2019-03-25 |  | 2018-10-18 | 2019-03-25 | 105d | 0d |  |  | 1168h |
| 185 | 2.6.1 | Análise (Desenho de Solução, Especificação Técnica, Cenários de Teste e Critérios de Aceitação) |  | 15d | 2018-10-18 | 2018-11-08 | 158SS | 2018-10-18 | 2018-11-08 | 15d | 0d |  | WeDo; Oi | 240h |
| 186 | 2.6.2 | Construção e Testes Unitários |  | 60d | 2018-11-09 | 2019-02-07 | 185 | 2018-11-09 | 2019-02-07 | 60d | 0d |  | WeDo | 480h |
| 187 | 2.6.3 | Elaborar Runbook |  | 2d | 2019-02-08 | 2019-02-11 | 186 | 2019-02-08 | 2019-02-11 | 2d | 214d |  | WeDo | 16h |
| 188 | 2.6.4 | Testes de Sistema |  | 10d | 2019-02-08 | 2019-02-21 | 186 | 2019-02-08 | 2019-02-21 | 10d | 0d |  | WeDo | 80h |
| 189 | 2.6.5 | Testes Integrados |  | 10d | 2019-02-22 | 2019-03-11 | 188 | 2019-02-22 | 2019-03-11 | 10d | 0d |  | WeDo; Oi | 160h |
| 190 | 2.6.6 | UAT |  | 10d | 2019-03-12 | 2019-03-25 | 189 | 2019-03-12 | 2019-03-25 | 10d | 186d |  | WeDo; Oi | 160h |
| 191 | 2.6.7 | Elaborar PLIM |  | 2d | 2019-03-12 | 2019-03-13 | 189 | 2019-03-12 | 2019-03-13 | 2d | 0d |  | WeDo | 16h |
| 192 | 2.6.8 | Implantação |  | 2d | 2019-03-14 | 2019-03-15 | 191 | 2019-03-14 | 2019-03-15 | 2d | 0d |  | WeDo | 16h |
| 193 | 2.6.9 | ONDAS 16 e 18: Carga + Motor Uso - Tráfego (Móvel, Fixa, VOD, VoIP, TV) - Finalizada | milestone | 0d | 2019-03-15 | 2019-03-15 | 192 | 2019-03-15 | 2019-03-15 | 0d | 0d |  |  |  |

Notes:
- 173: Tratamento de eventos de risco (ver planilha de macro requisitos)
- 184: validar com Jaca motor (mesmo da móvel)

| ID | WBS | Task | Type | Duration | Start | Finish | Predecessors | Baseline start | Baseline finish | Baseline duration | Total slack | Free slack | Resources | Work |
| --- | --- | --- | --- | --- | --- | --- | --- | --- | --- | --- | --- | --- | --- | --- |
| 194 | 2.7 | **ONDA 17: Motor Detecção - Tráfego** |  | 49d | 2019-03-18 | 2019-05-24 |  | 2019-03-18 | 2019-05-24 | 49d | 0d |  |  | 544h |
| 195 | 2.7.1 | Análise (Desenho de Solução, Especificação Técnica, Cenários de Teste e Critérios de Aceitação) |  | 10d | 2019-03-18 | 2019-03-29 | 193, 181 | 2019-03-18 | 2019-03-29 | 10d | 0d |  | WeDo; Oi | 160h |
| 196 | 2.7.2 | Construção e Testes Unitários |  | 23d | 2019-04-01 | 2019-05-02 | 195 | 2019-04-01 | 2019-05-02 | 23d | 0d |  | WeDo | 184h |
| 197 | 2.7.3 | Elaborar Runbook |  | 2d | 2019-05-03 | 2019-05-06 | 196 | 2019-05-03 | 2019-05-06 | 2d | 157d |  | WeDo | 16h |
| 198 | 2.7.4 | Testes de Sistema |  | 5d | 2019-05-03 | 2019-05-09 | 196 | 2019-05-03 | 2019-05-09 | 5d | 0d |  | WeDo | 40h |
| 199 | 2.7.5 | Testes Integrados |  | 2d | 2019-05-10 | 2019-05-13 | 198 | 2019-05-10 | 2019-05-13 | 2d | 0d |  | WeDo; Oi | 32h |
| 200 | 2.7.6 | UAT |  | 5d | 2019-05-14 | 2019-05-20 | 199 | 2019-05-14 | 2019-05-20 | 5d | 147d |  | WeDo; Oi | 80h |
| 201 | 2.7.7 | Elaborar PLIM |  | 2d | 2019-05-14 | 2019-05-15 | 199 | 2019-05-14 | 2019-05-15 | 2d | 0d |  | WeDo | 16h |
| 202 | 2.7.8 | Implantação |  | 2d | 2019-05-16 | 2019-05-17 | 201 | 2019-05-16 | 2019-05-17 | 2d | 0d |  | WeDo | 16h |
| 203 | 2.7.9 | Operação Assistida |  | 5d | 2019-05-20 | 2019-05-24 | 202 | 2019-05-20 | 2019-05-24 | 5d | 0d |  |  |  |
| 204 | 2.7.10 | Onda 17 - Motor Detecção - Tráfego | milestone | 0d | 2019-05-24 | 2019-05-24 | 203, 202 | 2019-05-24 | 2019-05-24 | 0d | 0d |  |  |  |
| 205 | 2.8 | **ONDA 19: Recargas Pre-Pago** |  | 15d | 2019-05-27 | 2019-06-14 |  | 2019-05-27 | 2019-06-14 | 15d | 0d |  |  | 176h |
| 206 | 2.8.1 | Análise (Desenho de Solução, Especificação Técnica, Cenários de Teste e Critérios de Aceitação) |  | 3d | 2019-05-27 | 2019-05-29 | 204 | 2019-05-27 | 2019-05-29 | 3d | 0d |  | WeDo; Oi | 48h |
| 207 | 2.8.2 | Construção e Testes Unitários |  | 8d | 2019-05-30 | 2019-06-10 | 206 | 2019-05-30 | 2019-06-10 | 8d | 0d |  | WeDo | 64h |
| 208 | 2.8.3 | Elaborar Runbook |  | 1d | 2019-06-11 | 2019-06-11 | 207 | 2019-06-11 | 2019-06-11 | 1d | 131d |  | WeDo | 8h |
| 209 | 2.8.4 | Testes de Sistema |  | 1d | 2019-06-11 | 2019-06-11 | 207 | 2019-06-11 | 2019-06-11 | 1d | 0d |  | WeDo | 8h |
| 210 | 2.8.5 | Testes Integrados |  | 1d | 2019-06-12 | 2019-06-12 | 209 | 2019-06-12 | 2019-06-12 | 1d | 0d |  | WeDo; Oi | 16h |
| 211 | 2.8.6 | UAT |  | 1d | 2019-06-13 | 2019-06-13 | 210 | 2019-06-13 | 2019-06-13 | 1d | 129d |  | WeDo; Oi | 16h |
| 212 | 2.8.7 | Elaborar PLIM |  | 1d | 2019-06-13 | 2019-06-13 | 210 | 2019-06-13 | 2019-06-13 | 1d | 0d |  | WeDo | 8h |
| 213 | 2.8.8 | Implantação |  | 1d | 2019-06-14 | 2019-06-14 | 212 | 2019-06-14 | 2019-06-14 | 1d | 0d |  | WeDo | 8h |
| 214 | 2.8.9 | Onda 19 - Recargas Pre-Pago - Finalizada | milestone | 0d | 2019-06-14 | 2019-06-14 | 213 | 2019-06-14 | 2019-06-14 | 0d | 128d |  |  |  |
| 215 | 2.9 | **ONDA 20: Criação de telas para operação (detecção de fraude Fixa R1, detecção de fraude Fixa R2, detecção de fraude TV, detecção de fraude Movel e Oi Total** |  | 55d | 2019-06-17 | 2019-09-02 |  | 2019-06-17 | 2019-09-02 | 55d | 0d |  |  | 712h |
| 216 | 2.9.1 | Análise (Desenho de Solução, Especificação Técnica, Cenários de Teste e Critérios de Aceitação) |  | 10d | 2019-06-17 | 2019-07-01 | 213, 214 | 2019-06-17 | 2019-07-01 | 10d | 0d |  | WeDo; Oi | 160h |
| 217 | 2.9.2 | Construção e Testes Unitários |  | 24d | 2019-07-02 | 2019-08-02 | 216 | 2019-07-02 | 2019-08-02 | 24d | 0d |  | WeDo | 192h |
| 218 | 2.9.3 | Elaborar Runbook |  | 2d | 2019-08-05 | 2019-08-06 | 217 | 2019-08-05 | 2019-08-06 | 2d | 92d |  | WeDo | 16h |
| 219 | 2.9.4 | Testes de Sistema |  | 5d | 2019-08-05 | 2019-08-09 | 217 | 2019-08-05 | 2019-08-09 | 5d | 0d |  | WeDo | 40h |
| 220 | 2.9.5 | Testes Integrados |  | 2d | 2019-08-12 | 2019-08-13 | 219 | 2019-08-12 | 2019-08-13 | 2d | 0d |  | WeDo; Oi | 32h |
| 221 | 2.9.6 | UAT |  | 5d | 2019-08-14 | 2019-08-20 | 220 | 2019-08-14 | 2019-08-20 | 5d | 82d |  | WeDo; Oi | 80h |
| 222 | 2.9.7 | Elaborar PLIM |  | 2d | 2019-08-14 | 2019-08-15 | 220 | 2019-08-14 | 2019-08-15 | 2d | 0d |  | WeDo | 16h |
| 223 | 2.9.8 | Implantação |  | 2d | 2019-08-16 | 2019-08-19 | 222 | 2019-08-16 | 2019-08-19 | 2d | 0d |  | WeDo | 16h |
| 224 | 2.9.9 | Operação Assistida |  | 10d | 2019-08-20 | 2019-09-02 | 223 | 2019-08-20 | 2019-09-02 | 10d | 73d | 0d | WeDo; Oi | 160h |
| 225 | 2.9.10 | Onda 20 - Criação de telas para operação (detecção de fraude Fixa R1, detecção de fraude Fixa R2, detecção de fraude TV, detecção de fraude Movel e Oi Total - Finalizada | milestone | 0d | 2019-09-02 | 2019-09-02 | 224 | 2019-09-02 | 2019-09-02 | 0d | 73d |  |  |  |

Notes:
- 194: validar com Jaca motor (mesmo da fixa) - atividade paralelizada com onda 16

| ID | WBS | Task | Type | Duration | Start | Finish | Predecessors | Baseline start | Baseline finish | Baseline duration | Total slack | Free slack | Resources | Work |
| --- | --- | --- | --- | --- | --- | --- | --- | --- | --- | --- | --- | --- | --- | --- |
| 226 | 2.10 | **ONDA 21: Pós Tratamento da Fraude (Regras de Desbloqueio)** |  | 40d | 2019-08-20 | 2019-10-14 |  | 2019-08-20 | 2019-10-14 | 40d | 0d |  |  | 544h |
| 227 | 2.10.1 | Análise (Desenho de Solução, Especificação Técnica, Cenários de Teste e Critérios de Aceitação) |  | 5d | 2019-08-20 | 2019-08-26 | 223 | 2019-08-20 | 2019-08-26 | 5d | 0d |  | WeDo; Oi | 80h |
| 228 | 2.10.2 | Construção e Testes Unitários |  | 15d | 2019-08-27 | 2019-09-16 | 227 | 2019-08-27 | 2019-09-16 | 15d | 0d |  | WeDo | 120h |
| 229 | 2.10.3 | Elaborar Runbook |  | 2d | 2019-09-17 | 2019-09-18 | 228 | 2019-09-17 | 2019-09-18 | 2d | 61d |  | WeDo | 16h |
| 230 | 2.10.4 | Testes de Sistema |  | 4d | 2019-09-17 | 2019-09-20 | 228 | 2019-09-17 | 2019-09-20 | 4d | 0d |  | WeDo | 32h |
| 231 | 2.10.5 | Testes Integrados |  | 3d | 2019-09-23 | 2019-09-25 | 230 | 2019-09-23 | 2019-09-25 | 3d | 0d |  | WeDo; Oi | 48h |
| 232 | 2.10.6 | UAT |  | 4d | 2019-09-26 | 2019-10-01 | 231 | 2019-09-26 | 2019-10-01 | 4d | 52d |  | WeDo; Oi | 64h |
| 233 | 2.10.7 | Elaborar PLIM |  | 2d | 2019-09-26 | 2019-09-27 | 231 | 2019-09-26 | 2019-09-27 | 2d | 0d |  | WeDo | 16h |
| 234 | 2.10.8 | Implantação |  | 1d | 2019-09-30 | 2019-09-30 | 233 | 2019-09-30 | 2019-09-30 | 1d | 0d |  | WeDo | 8h |
| 235 | 2.10.9 | Operação Assistida |  | 10d | 2019-10-01 | 2019-10-14 | 234 | 2019-10-01 | 2019-10-14 | 10d | 43d | 0d | WeDo; Oi | 160h |
| 236 | 2.10.10 | Onda 21 - Pos Tratamento da Fraude Regras de desbloqueio - Finalizada | milestone | 0d | 2019-10-14 | 2019-10-14 | 235 | 2019-10-14 | 2019-10-14 | 0d | 43d |  |  |  |
| 237 | 2.11 | **ONDA 22: Pós Tratamento da Fraude (Integração Fat, Cob e Contest)** |  | 50d | 2019-10-01 | 2019-12-11 |  | 2019-10-01 | 2019-12-11 | 50d | 0d |  |  | 520h |
| 238 | 2.11.1 | Análise (Desenho de Solução, Especificação Técnica, Cenários de Teste e Critérios de Aceitação) |  | 10d | 2019-10-01 | 2019-10-14 | 234 | 2019-10-01 | 2019-10-14 | 10d | 0d |  | WeDo; Oi | 160h |
| 239 | 2.11.2 | Construção e Testes Unitários |  | 25d | 2019-10-15 | 2019-11-20 | 238 | 2019-10-15 | 2019-11-20 | 25d | 0d |  | WeDo | 200h |
| 240 | 2.11.3 | Elaborar Runbook |  | 2d | 2019-11-21 | 2019-11-22 | 239 | 2019-11-21 | 2019-11-22 | 2d | 16d |  | WeDo | 16h |
| 241 | 2.11.4 | Testes de Sistema |  | 4d | 2019-11-21 | 2019-11-26 | 239 | 2019-11-21 | 2019-11-26 | 4d | 3d | 0d | WeDo | 32h |
| 242 | 2.11.5 | Testes Integrados |  | 2d | 2019-11-27 | 2019-11-28 | 241 | 2019-11-27 | 2019-11-28 | 2d | 3d | 0d | WeDo; Oi | 32h |
| 243 | 2.11.6 | UAT |  | 3d | 2019-11-29 | 2019-12-03 | 242 | 2019-11-29 | 2019-12-03 | 3d | 9d |  | WeDo; Oi | 48h |
| 244 | 2.11.7 | Elaborar PLIM |  | 2d | 2019-11-29 | 2019-12-02 | 242 | 2019-11-29 | 2019-12-02 | 2d | 3d | 0d | WeDo | 16h |
| 245 | 2.11.8 | Implantação |  | 2d | 2019-12-03 | 2019-12-04 | 244 | 2019-12-03 | 2019-12-04 | 2d | 3d | 0d | WeDo | 16h |
| 246 | 2.11.9 | Operação Assistida |  | 5d | 2019-12-05 | 2019-12-11 | 245 | 2019-12-05 | 2019-12-11 | 5d | 3d | 0d |  |  |
| 247 | 2.11.10 | Onda 22 - Pos Tratamento da Fraude - Finalizada | milestone | 0d | 2019-12-11 | 2019-12-11 | 246 | 2019-12-11 | 2019-12-11 | 0d | 3d |  |  |  |
| 248 | 2.12 | **Treinamento Help Desk (FMS-06)** |  | 3d | 2019-11-21 | 2019-11-25 |  | 2019-11-21 | 2019-11-25 | 3d | 0d |  |  | 40h |
| 249 | 2.12.1 | Elaborar material |  | 1d | 2019-11-21 | 2019-11-21 | 239 | 2019-11-21 | 2019-11-21 | 1d | 0d |  | WeDo | 8h |
| 250 | 2.12.2 | Ambiente disponibilizado | milestone | 0d | 2019-11-21 | 2019-11-21 | 249 | 2019-11-21 | 2019-11-21 | 0d | 0d |  | Oi |  |
| 251 | 2.12.3 | Realizar Treinamento |  | 2d | 2019-11-22 | 2019-11-25 | 250 | 2019-11-22 | 2019-11-25 | 2d | 0d |  | WeDo; Oi | 32h |
| 252 | 2.12.4 | Treinamento Usuário Finalizado | milestone | 0d | 2019-11-25 | 2019-11-25 | 251 | 2019-11-25 | 2019-11-25 | 0d | 0d |  |  |  |

Notes:
- 248: SERÁ MANTIDO? PODE SER SEQUENCIAL APOS A ULTIMA ONDA?

| ID | WBS | Task | Type | Duration | Start | Finish | Predecessors | Baseline start | Baseline finish | Baseline duration | Total slack | Resources | Work |
| --- | --- | --- | --- | --- | --- | --- | --- | --- | --- | --- | --- | --- | --- |
| 253 | 2.13 | **Treinamento Administração Funcional (FMS-03)** |  | 5d | 2019-11-26 | 2019-12-02 |  | 2019-11-26 | 2019-12-02 | 5d | 0d |  | 64h |
| 254 | 2.13.1 | Elaborar material |  | 2d | 2019-11-26 | 2019-11-27 | 252 | 2019-11-26 | 2019-11-27 | 2d | 0d | WeDo | 16h |
| 255 | 2.13.2 | Ambiente disponibilizado | milestone | 0d | 2019-11-27 | 2019-11-27 | 254 | 2019-11-27 | 2019-11-27 | 0d | 0d | Oi |  |
| 256 | 2.13.3 | Realizar Treinamento |  | 3d | 2019-11-28 | 2019-12-02 | 255 | 2019-11-28 | 2019-12-02 | 3d | 0d | WeDo; Oi | 48h |
| 257 | 2.13.4 | Treinamento Administração Funcional Finalizado | milestone | 0d | 2019-12-02 | 2019-12-02 | 256 | 2019-12-02 | 2019-12-02 | 0d | 0d |  |  |
| 258 | 2.14 | **Treinamento Administração Técnica (FMS-02)** |  | 6d | 2019-12-03 | 2019-12-10 |  | 2019-12-03 | 2019-12-10 | 6d | 0d |  | 72h |
| 259 | 2.14.1 | Elaborar material |  | 3d | 2019-12-03 | 2019-12-05 | 257 | 2019-12-03 | 2019-12-05 | 3d | 0d | WeDo | 24h |
| 260 | 2.14.2 | Ambiente disponibilizado | milestone | 0d | 2019-12-05 | 2019-12-05 | 259 | 2019-12-05 | 2019-12-05 | 0d | 0d | Oi |  |
| 261 | 2.14.3 | Realizar Treinamento |  | 3d | 2019-12-06 | 2019-12-10 | 260 | 2019-12-06 | 2019-12-10 | 3d | 0d | WeDo; Oi | 48h |
| 262 | 2.14.4 | Treinamento Administração Técnica Finalizado | milestone | 0d | 2019-12-10 | 2019-12-10 | 261 | 2019-12-10 | 2019-12-10 | 0d | 0d |  |  |
| 263 | 2.15 | **Treinamento Usuário (FMS-04)** |  | 4d | 2019-12-11 | 2019-12-16 |  | 2019-12-11 | 2019-12-16 | 4d | 0d |  | 48h |
| 264 | 2.15.1 | Elaborar material |  | 2d | 2019-12-11 | 2019-12-12 | 262 | 2019-12-11 | 2019-12-12 | 2d | 0d | WeDo | 16h |
| 265 | 2.15.2 | Ambiente disponibilizado | milestone | 0d | 2019-12-12 | 2019-12-12 | 264 | 2019-12-12 | 2019-12-12 | 0d | 0d | Oi |  |
| 266 | 2.15.3 | Realizar Treinamento |  | 2d | 2019-12-13 | 2019-12-16 | 265 | 2019-12-13 | 2019-12-16 | 2d | 0d | WeDo; Oi | 32h |
| 267 | 2.15.4 | Treinamento Usuário Finalizado | milestone | 0d | 2019-12-16 | 2019-12-16 | 266 | 2019-12-16 | 2019-12-16 | 0d | 0d |  |  |
