# MPP_BR.A.16.POI.039.00 - PROJETO FRAUDE OI

Schedule from MS Project, 2017-09-18 to 2018-12-27.
SSI

## Calendars

- Standard: Mon-Fri 08:00-12:00, 13:00-17:00; Sat-Sun off. Exceptions (off unless hours are given): 2017-10-12 to 2017-10-13 (Nsa Aparecida), 2017-11-02 (Finados), 2017-11-15 (Republica), 2017-12-25 (Natal), 2018-01-01 (Ano Novo).

## Resources

| Resource |
| --- |
| Andre Jacomino |
| Nuno Pestana |
| WeDo |
| Oi |

## Schedule

| ID | WBS | Task | Type | Duration | Start | Finish | Predecessors | Total slack | Free slack | Constraint | Resources | Work |
| --- | --- | --- | --- | --- | --- | --- | --- | --- | --- | --- | --- | --- |
| 1 | 1 | **Projeto FRAUDE OI** |  | 323d | 2017-09-18 | 2018-12-20 |  |  |  |  |  | 4880h |
| 2 | 1.1 | **Infra-estrutura** |  | 48d | 2017-09-18 | 2017-11-28 |  | 280d |  |  |  | 184h |
| 3 | 1.1.1 | **Acessos Lógicos** |  | 8d | 2017-09-18 | 2017-09-27 |  | 320d |  |  |  | 64h |
| 4 | 1.1.1.1 | Enviar dados de acesso e contas de serviço |  | 3d | 2017-09-18 | 2017-09-20 |  | 315d | 0d |  | WeDo | 24h |
| 5 | 1.1.1.2 | Liberar acessos |  | 5d | 2017-09-21 | 2017-09-27 | 4 | 315d | 0d |  | Oi | 40h |
| 6 | 1.1.1.3 | Acessos Lógicos Liberados | milestone | 0d | 2017-09-27 | 2017-09-27 | 5 | 315d |  |  |  |  |
| 7 | 1.1.2 | Ambiente de DEV disponível | milestone | 0d | 2017-09-28 | 2017-09-28 | 8SS-5d | 275d | 0d |  | Oi |  |
| 8 | 1.1.3 | Instalação Vanila RAID FMS - DEV |  | 5d | 2017-10-05 | 2017-10-11 | 18 | 266d | 0d |  | WeDo | 40h |
| 9 | 1.1.4 | Ambiente de HML disponível | milestone | 0d | 2017-11-13 | 2017-11-13 | 7FF+30d | 285d | 0d |  | Oi |  |
| 10 | 1.1.5 | Instalação Vanila RAID FMS - HML |  | 5d | 2017-11-14 | 2017-11-21 | 9 | 285d |  |  | WeDo | 40h |
| 11 | 1.1.6 | Ambiente de PRD disponível | milestone | 0d | 2017-11-21 | 2017-11-21 | 7FF+35d | 280d | 0d |  | Oi |  |
| 12 | 1.1.7 | Instalação Vanila RAID FMS - PRD |  | 5d | 2017-11-22 | 2017-11-28 | 11 | 280d |  |  | WeDo | 40h |
| 13 | 1.2 | **Onda 1 - Planejamento e Setup** |  | 13d | 2017-09-18 | 2017-10-04 |  | 270d |  |  |  | 256h |
| 14 | 1.2.1 | Acessos Físicos Liberados | milestone | 0d | 2017-09-18 | 2017-09-18 |  | 323d |  |  | Oi; WeDo |  |
| 15 | 1.2.2 | Levantamento e elaboração Blueprint |  | 12d | 2017-09-18 | 2017-10-03 |  | 270d | 0d |  | WeDo; Oi | 192h |
| 16 | 1.2.3 | Elaborar Plano de Desenvolvimento do Projeto (PDP) |  | 6d | 2017-09-26 | 2017-10-03 | 15SS+6d | 316d |  |  | WeDo | 48h |
| 17 | 1.2.4 | Reunião de Kick-off |  | 1d | 2017-10-04 | 2017-10-04 | 15 | 270d | 0d |  | WeDo; Oi | 16h |
| 18 | 1.2.5 | Onda 1 - Planejamento e Setup - Finalizada | milestone | 0d | 2017-10-04 | 2017-10-04 | 17 | 270d | 0d |  |  |  |
| 19 | 1.3 | **Treinamento - Conceitos Básicos (Teoria)** |  | 6d | 2017-10-05 | 2017-10-16 |  | 309d |  |  |  | 56h |
| 20 | 1.3.1 | Elaborar material |  | 5d | 2017-10-05 | 2017-10-11 | 18 | 309d | 0d |  | WeDo | 40h |
| 21 | 1.3.2 | Ambiente disponibilizado | milestone | 0d | 2017-10-11 | 2017-10-11 | 20 | 309d | 0d |  | Oi |  |
| 22 | 1.3.3 | Realizar Treinamento |  | 1d | 2017-10-16 | 2017-10-16 | 21 | 309d | 0d |  | Oi; WeDo | 16h |
| 23 | 1.3.4 | Treinamento Finalizado | milestone | 0d | 2017-10-16 | 2017-10-16 | 22 | 309d |  |  |  |  |
| 24 | 1.4 | **Onda 2 - TV off line** |  | 40d | 2017-10-23 | 2017-12-19 |  | 0d |  |  |  | 520h |
| 25 | 1.4.1 | Análise (Desenho de Solução, Especificação Técnica, Cenários de Teste e Critérios de Aceitação) |  | 9d | 2017-10-23 | 2017-11-03 |  | 0d |  | start no earlier than 2017-10-23 | WeDo; Oi | 144h |
| 26 | 1.4.2 | Construção e Testes Unitários |  | 13d | 2017-11-06 | 2017-11-23 | 25 | 0d |  |  | WeDo | 104h |
| 27 | 1.4.3 | Elaborar Runbook |  | 3d | 2017-11-24 | 2017-11-28 | 26 | 280d |  |  | WeDo | 24h |
| 28 | 1.4.4 | Testes de Sistema |  | 4d | 2017-11-24 | 2017-11-29 | 26 | 0d |  |  | WeDo | 32h |
| 29 | 1.4.5 | Testes Integrados |  | 2d | 2017-11-30 | 2017-12-01 | 28 | 0d |  |  | WeDo; Oi | 32h |
| 30 | 1.4.6 | UAT |  | 4d | 2017-12-04 | 2017-12-07 | 29 | 0d |  |  | WeDo; Oi | 64h |
| 31 | 1.4.7 | Elaborar PLIM |  | 2d | 2017-12-04 | 2017-12-05 | 29 | 275d |  |  | WeDo | 16h |
| 32 | 1.4.8 | Implantação |  | 3d | 2017-12-08 | 2017-12-12 | 30 | 0d |  |  | WeDo | 24h |
| 33 | 1.4.9 | Operação Assistida |  | 5d | 2017-12-13 | 2017-12-19 | 32 | 0d |  |  | WeDo; Oi | 80h |
| 34 | 1.4.10 | Onda 2 - TV off line - Finalizada | milestone | 0d | 2017-12-19 | 2017-12-19 | 33 | 0d |  |  |  |  |

| ID | WBS | Task | Type | Duration | Start | Finish | Predecessors | Total slack | Free slack | Resources | Work |
| --- | --- | --- | --- | --- | --- | --- | --- | --- | --- | --- | --- |
| 35 | 1.5 | **Onda 3 - Oi Total 2P + Fixa R1 1P** |  | 20d | 2017-12-20 | 2018-01-18 |  | 0d |  |  | 272h |
| 36 | 1.5.1 | Análise (Desenho de Solução, Especificação Técnica, Cenários de Teste e Critérios de Aceitação) |  | 5d | 2017-12-20 | 2017-12-27 | 34 | 0d |  | WeDo; Oi | 80h |
| 37 | 1.5.2 | Construção e Testes Unitários |  | 7d | 2017-12-28 | 2018-01-08 | 36 | 0d |  | WeDo | 56h |
| 38 | 1.5.3 | Elaborar Runbook |  | 2d | 2018-01-09 | 2018-01-10 | 37 | 251d |  | WeDo | 16h |
| 39 | 1.5.4 | Testes de Sistema |  | 3d | 2018-01-09 | 2018-01-11 | 37 | 0d |  | WeDo | 24h |
| 40 | 1.5.5 | Testes Integrados |  | 1d | 2018-01-12 | 2018-01-12 | 39 | 0d |  | WeDo; Oi | 16h |
| 41 | 1.5.6 | UAT |  | 3d | 2018-01-15 | 2018-01-17 | 40 | 246d |  | WeDo; Oi | 48h |
| 42 | 1.5.7 | Elaborar PLIM |  | 2d | 2018-01-15 | 2018-01-16 | 40 | 0d |  | WeDo | 16h |
| 43 | 1.5.8 | Implantação |  | 2d | 2018-01-17 | 2018-01-18 | 42 | 0d |  | WeDo | 16h |
| 44 | 1.5.9 | Onda 3 - Oi Total 2P + Fixa R1 1P - Finalizada | milestone | 0d | 2018-01-18 | 2018-01-18 | 43 | 0d |  |  |  |
| 45 | 1.6 | **Treinamento Usuário** |  | 8d | 2018-01-03 | 2018-01-12 |  | 249d |  |  | 40h |
| 46 | 1.6.1 | Elaborar material |  | 5d | 2018-01-03 | 2018-01-09 | 37SS+3d | 249d | 0d | WeDo | 40h |
| 47 | 1.6.2 | Ambiente disponibilizado | milestone | 0d | 2018-01-09 | 2018-01-09 | 46 | 249d | 0d | Oi |  |
| 48 | 1.6.3 | Realizar Treinamento |  | 3d | 2018-01-10 | 2018-01-12 | 47 | 249d | 0d |  |  |
| 49 | 1.6.4 | Treinamento Usuário Finalizado | milestone | 0d | 2018-01-12 | 2018-01-12 | 48 | 249d |  |  |  |
| 50 | 1.7 | **Onda 4 - Oi Total 3P** |  | 40d | 2018-01-19 | 2018-03-15 |  | 0d |  |  | 504h |
| 51 | 1.7.1 | Análise (Desenho de Solução, Especificação Técnica, Cenários de Teste e Critérios de Aceitação) |  | 10d | 2018-01-19 | 2018-02-01 | 44 | 0d |  | WeDo; Oi | 160h |
| 52 | 1.7.2 | Construção e Testes Unitários |  | 18d | 2018-02-02 | 2018-02-27 | 51 | 0d |  | WeDo | 144h |
| 53 | 1.7.3 | Elaborar Runbook |  | 2d | 2018-02-28 | 2018-03-01 | 52 | 215d |  | WeDo | 16h |
| 54 | 1.7.4 | Testes de Sistema |  | 4d | 2018-02-28 | 2018-03-05 | 52 | 0d |  | WeDo | 32h |
| 55 | 1.7.5 | Testes Integrados |  | 3d | 2018-03-06 | 2018-03-08 | 54 | 0d |  | WeDo; Oi | 48h |
| 56 | 1.7.6 | UAT |  | 4d | 2018-03-09 | 2018-03-14 | 55 | 206d |  | WeDo; Oi | 64h |
| 57 | 1.7.7 | Elaborar PLIM |  | 2d | 2018-03-09 | 2018-03-12 | 55 | 0d |  | WeDo | 16h |
| 58 | 1.7.8 | Implantação |  | 3d | 2018-03-13 | 2018-03-15 | 57 | 0d |  | WeDo | 24h |
| 59 | 1.7.9 | Onda 4 - Oi Total 3P - Finalizada | milestone | 0d | 2018-03-15 | 2018-03-15 | 58 | 0d |  |  |  |

| ID | WBS | Task | Type | Duration | Start | Finish | Predecessors | Total slack | Resources | Work |
| --- | --- | --- | --- | --- | --- | --- | --- | --- | --- | --- |
| 60 | 1.8 | **Onda 5 - Móvel Puro Online** |  | 20d | 2018-03-16 | 2018-04-12 |  | 0d |  | 272h |
| 61 | 1.8.1 | Análise (Desenho de Solução, Especificação Técnica, Cenários de Teste e Critérios de Aceitação) |  | 5d | 2018-03-16 | 2018-03-22 | 59 | 0d | WeDo; Oi | 80h |
| 62 | 1.8.2 | Construção e Testes Unitários |  | 7d | 2018-03-23 | 2018-04-02 | 61 | 0d | WeDo | 56h |
| 63 | 1.8.3 | Elaborar Runbook |  | 2d | 2018-04-03 | 2018-04-04 | 62 | 191d | WeDo | 16h |
| 64 | 1.8.4 | Testes de Sistema |  | 3d | 2018-04-03 | 2018-04-05 | 62 | 0d | WeDo | 24h |
| 65 | 1.8.5 | Testes Integrados |  | 1d | 2018-04-06 | 2018-04-06 | 64 | 0d | WeDo; Oi | 16h |
| 66 | 1.8.6 | UAT |  | 3d | 2018-04-09 | 2018-04-11 | 65 | 186d | WeDo; Oi | 48h |
| 67 | 1.8.7 | Elaborar PLIM |  | 2d | 2018-04-09 | 2018-04-10 | 65 | 0d | WeDo | 16h |
| 68 | 1.8.8 | Implantação |  | 2d | 2018-04-11 | 2018-04-12 | 67 | 0d | WeDo | 16h |
| 69 | 1.8.9 | Onda 5 - Móvel Puro Online - Finalizada | milestone | 0d | 2018-04-12 | 2018-04-12 | 68 | 0d |  |  |
| 70 | 1.9 | **Onda 6 - Oi Total Online** |  | 10d | 2018-04-13 | 2018-04-26 |  | 0d |  | 136h |
| 71 | 1.9.1 | Análise (Desenho de Solução, Especificação Técnica, Cenários de Teste e Critérios de Aceitação) |  | 3d | 2018-04-13 | 2018-04-17 | 69 | 0d | WeDo; Oi | 48h |
| 72 | 1.9.2 | Construção e Testes Unitários |  | 3d | 2018-04-18 | 2018-04-20 | 71 | 0d | WeDo | 24h |
| 73 | 1.9.3 | Elaborar Runbook |  | 1d | 2018-04-23 | 2018-04-23 | 72 | 178d | WeDo | 8h |
| 74 | 1.9.4 | Testes de Sistema |  | 1d | 2018-04-23 | 2018-04-23 | 72 | 0d | WeDo | 8h |
| 75 | 1.9.5 | Testes Integrados |  | 1d | 2018-04-24 | 2018-04-24 | 74 | 0d | WeDo; Oi | 16h |
| 76 | 1.9.6 | UAT |  | 1d | 2018-04-25 | 2018-04-25 | 75 | 176d | WeDo; Oi | 16h |
| 77 | 1.9.7 | Elaborar PLIM |  | 1d | 2018-04-25 | 2018-04-25 | 75 | 0d | WeDo | 8h |
| 78 | 1.9.8 | Implantação |  | 1d | 2018-04-26 | 2018-04-26 | 77 | 0d | WeDo | 8h |
| 79 | 1.9.9 | Onda 6 - Oi Total Online - Finalizada | milestone | 0d | 2018-04-26 | 2018-04-26 | 78 | 0d |  |  |
| 80 | 1.10 | **Onda 7.1 - Integração Bases de Dados** |  | 25d | 2018-04-27 | 2018-05-31 |  | 0d |  | 328h |
| 81 | 1.10.1 | Análise (Desenho de Solução, Especificação Técnica, Cenários de Teste e Critérios de Aceitação) |  | 5d | 2018-04-27 | 2018-05-03 | 79 | 0d | WeDo; Oi | 80h |
| 82 | 1.10.2 | Construção e Testes Unitários |  | 10d | 2018-05-04 | 2018-05-17 | 81 | 0d | WeDo | 80h |
| 83 | 1.10.3 | Elaborar Runbook |  | 2d | 2018-05-18 | 2018-05-21 | 82 | 158d | WeDo | 16h |
| 84 | 1.10.4 | Testes de Sistema |  | 3d | 2018-05-18 | 2018-05-22 | 82 | 0d | WeDo | 24h |
| 85 | 1.10.5 | Testes Integrados |  | 3d | 2018-05-23 | 2018-05-25 | 84 | 0d | WeDo; Oi | 48h |
| 86 | 1.10.6 | UAT |  | 3d | 2018-05-28 | 2018-05-30 | 85 | 151d | WeDo; Oi | 48h |
| 87 | 1.10.7 | Elaborar PLIM |  | 2d | 2018-05-28 | 2018-05-29 | 85 | 0d | WeDo | 16h |
| 88 | 1.10.8 | Implantação |  | 2d | 2018-05-30 | 2018-05-31 | 87 | 0d | WeDo | 16h |
| 89 | 1.10.9 | Onda 7.1 - Integração Bases de Dados - Finalizada | milestone | 0d | 2018-05-31 | 2018-05-31 | 88 | 0d |  |  |

| ID | WBS | Task | Type | Duration | Start | Finish | Predecessors | Total slack | Free slack | Resources | Work |
| --- | --- | --- | --- | --- | --- | --- | --- | --- | --- | --- | --- |
| 90 | 1.11 | **Onda 7.2 - Integração Bases de Dados** |  | 25d | 2018-06-01 | 2018-07-05 |  | 0d |  |  | 328h |
| 91 | 1.11.1 | Análise (Desenho de Solução, Especificação Técnica, Cenários de Teste e Critérios de Aceitação) |  | 5d | 2018-06-01 | 2018-06-07 | 89 | 0d |  | WeDo; Oi | 80h |
| 92 | 1.11.2 | Construção e Testes Unitários |  | 10d | 2018-06-08 | 2018-06-21 | 91 | 0d |  | WeDo | 80h |
| 93 | 1.11.3 | Elaborar Runbook |  | 2d | 2018-06-22 | 2018-06-25 | 92 | 133d |  | WeDo | 16h |
| 94 | 1.11.4 | Testes de Sistema |  | 3d | 2018-06-22 | 2018-06-26 | 92 | 0d |  | WeDo | 24h |
| 95 | 1.11.5 | Testes Integrados |  | 3d | 2018-06-27 | 2018-06-29 | 94 | 0d |  | WeDo; Oi | 48h |
| 96 | 1.11.6 | UAT |  | 3d | 2018-07-02 | 2018-07-04 | 95 | 126d |  | WeDo; Oi | 48h |
| 97 | 1.11.7 | Elaborar PLIM |  | 2d | 2018-07-02 | 2018-07-03 | 95 | 0d |  | WeDo | 16h |
| 98 | 1.11.8 | Implantação |  | 2d | 2018-07-04 | 2018-07-05 | 97 | 0d |  | WeDo | 16h |
| 99 | 1.11.9 | Onda 7.2 - Integração Bases de Dados - Finalizada | milestone | 0d | 2018-07-05 | 2018-07-05 | 98 | 0d |  |  |  |
| 100 | 1.12 | **Treinamento Administração Técnica** |  | 8d | 2018-06-08 | 2018-06-19 |  | 137d |  |  | 88h |
| 101 | 1.12.1 | Elaborar material |  | 5d | 2018-06-08 | 2018-06-14 | 92SS | 137d | 0d | WeDo | 40h |
| 102 | 1.12.2 | Ambiente disponibilizado | milestone | 0d | 2018-06-14 | 2018-06-14 | 101 | 137d | 0d | Oi |  |
| 103 | 1.12.3 | Realizar Treinamento |  | 3d | 2018-06-15 | 2018-06-19 | 102 | 137d | 0d | WeDo; Oi | 48h |
| 104 | 1.12.4 | Treinamento Administração Técnica Finalizado | milestone | 0d | 2018-06-19 | 2018-06-19 | 103 | 137d |  |  |  |
| 105 | 1.13 | **Onda 8 - Oi Fibra Online** |  | 10d | 2018-07-06 | 2018-07-19 |  | 0d |  |  | 136h |
| 106 | 1.13.1 | Análise (Desenho de Solução, Especificação Técnica, Cenários de Teste e Critérios de Aceitação) |  | 3d | 2018-07-06 | 2018-07-10 | 99 | 0d |  | WeDo; Oi | 48h |
| 107 | 1.13.2 | Construção e Testes Unitários |  | 3d | 2018-07-11 | 2018-07-13 | 106 | 0d |  | WeDo | 24h |
| 108 | 1.13.3 | Elaborar Runbook |  | 1d | 2018-07-16 | 2018-07-16 | 107 | 118d |  | WeDo | 8h |
| 109 | 1.13.4 | Testes de Sistema |  | 1d | 2018-07-16 | 2018-07-16 | 107 | 0d |  | WeDo | 8h |
| 110 | 1.13.5 | Testes Integrados |  | 1d | 2018-07-17 | 2018-07-17 | 109 | 0d |  | WeDo; Oi | 16h |
| 111 | 1.13.6 | UAT |  | 1d | 2018-07-18 | 2018-07-18 | 110 | 116d |  | WeDo; Oi | 16h |
| 112 | 1.13.7 | Elaborar PLIM |  | 1d | 2018-07-18 | 2018-07-18 | 110 | 0d |  | WeDo | 8h |
| 113 | 1.13.8 | Implantação |  | 1d | 2018-07-19 | 2018-07-19 | 112 | 0d |  | WeDo | 8h |
| 114 | 1.13.9 | Onda 7.2 - Integração Bases de Dados - Finalizada | milestone | 0d | 2018-07-19 | 2018-07-19 | 113 | 0d |  |  |  |

| ID | WBS | Task | Type | Duration | Start | Finish | Predecessors | Total slack | Free slack | Resources | Work |
| --- | --- | --- | --- | --- | --- | --- | --- | --- | --- | --- | --- |
| 115 | 1.14 | **Onda 9 - Telas para Operação de Crédito** |  | 25d | 2018-07-20 | 2018-08-23 |  | 0d |  |  | 352h |
| 116 | 1.14.1 | Análise (Desenho de Solução, Especificação Técnica, Cenários de Teste e Critérios de Aceitação) |  | 5d | 2018-07-20 | 2018-07-26 | 114 | 0d |  | WeDo; Oi | 80h |
| 117 | 1.14.2 | Construção e Testes Unitários |  | 7d | 2018-07-27 | 2018-08-06 | 116 | 0d |  | WeDo | 56h |
| 118 | 1.14.3 | Elaborar Runbook |  | 2d | 2018-08-07 | 2018-08-08 | 117 | 101d |  | WeDo | 16h |
| 119 | 1.14.4 | Testes de Sistema |  | 3d | 2018-08-07 | 2018-08-09 | 117 | 0d |  | WeDo | 24h |
| 120 | 1.14.5 | Testes Integrados |  | 1d | 2018-08-10 | 2018-08-10 | 119 | 0d |  | WeDo; Oi | 16h |
| 121 | 1.14.6 | UAT |  | 3d | 2018-08-13 | 2018-08-15 | 120 | 96d |  | WeDo; Oi | 48h |
| 122 | 1.14.7 | Elaborar PLIM |  | 2d | 2018-08-13 | 2018-08-14 | 120 | 0d |  | WeDo | 16h |
| 123 | 1.14.8 | Implantação |  | 2d | 2018-08-15 | 2018-08-16 | 122 | 0d |  | WeDo | 16h |
| 124 | 1.14.9 | Operação Assistida |  | 5d | 2018-08-17 | 2018-08-23 | 123 | 90d |  | WeDo; Oi | 80h |
| 125 | 1.14.10 | Onda 9 - Telas para Operação de Crédito - Finalizada | milestone | 0d | 2018-08-16 | 2018-08-16 | 123 | 0d |  |  |  |
| 126 | 1.15 | **Treinamento Administração Funcional** |  | 8d | 2018-07-27 | 2018-08-07 |  | 102d |  |  | 88h |
| 127 | 1.15.1 | Elaborar material |  | 5d | 2018-07-27 | 2018-08-02 | 117SS | 102d | 0d | WeDo | 40h |
| 128 | 1.15.2 | Ambiente disponibilizado | milestone | 0d | 2018-08-02 | 2018-08-02 | 127 | 102d | 0d | Oi |  |
| 129 | 1.15.3 | Realizar Treinamento |  | 3d | 2018-08-03 | 2018-08-07 | 128 | 102d | 0d | WeDo; Oi | 48h |
| 130 | 1.15.4 | Treinamento Administração Funcional Finalizado | milestone | 0d | 2018-08-07 | 2018-08-07 | 129 | 102d |  |  |  |
| 131 | 1.16 | **Onda 10 - Oi Controle Sem Fatura Online** |  | 45d | 2018-08-17 | 2018-10-18 |  | 0d |  |  | 584h |
| 132 | 1.16.1 | Análise (Desenho de Solução, Especificação Técnica, Cenários de Teste e Critérios de Aceitação) |  | 10d | 2018-08-17 | 2018-08-30 | 125 | 0d |  | WeDo; Oi | 160h |
| 133 | 1.16.2 | Construção e Testes Unitários |  | 18d | 2018-08-31 | 2018-09-25 | 132 | 0d |  | WeDo | 144h |
| 134 | 1.16.3 | Elaborar Runbook |  | 2d | 2018-09-26 | 2018-09-27 | 133 | 65d |  | WeDo | 16h |
| 135 | 1.16.4 | Testes de Sistema |  | 4d | 2018-09-26 | 2018-10-01 | 133 | 0d |  | WeDo | 32h |
| 136 | 1.16.5 | Testes Integrados |  | 3d | 2018-10-02 | 2018-10-04 | 135 | 0d |  | WeDo; Oi | 48h |
| 137 | 1.16.6 | UAT |  | 4d | 2018-10-05 | 2018-10-10 | 136 | 56d |  | WeDo; Oi | 64h |
| 138 | 1.16.7 | Elaborar PLIM |  | 2d | 2018-10-05 | 2018-10-08 | 136 | 0d |  | WeDo | 16h |
| 139 | 1.16.8 | Implantação |  | 3d | 2018-10-09 | 2018-10-11 | 138 | 0d |  | WeDo | 24h |
| 140 | 1.16.9 | Operação Assistida |  | 5d | 2018-10-12 | 2018-10-18 | 139 | 50d |  | WeDo; Oi | 80h |
| 141 | 1.16.10 | Onda 10 - Oi Controle Sem Fatura Online - Finalizada | milestone | 0d | 2018-10-11 | 2018-10-11 | 139 | 0d |  |  |  |

| ID | WBS | Task | Type | Duration | Start | Finish | Predecessors | Total slack | Resources | Work |
| --- | --- | --- | --- | --- | --- | --- | --- | --- | --- | --- |
| 142 | 1.17 | **Onda 11 - Fixa R2 Offline** |  | 30d | 2018-10-12 | 2018-11-22 |  | 0d |  | 384h |
| 143 | 1.17.1 | Análise (Desenho de Solução, Especificação Técnica, Cenários de Teste e Critérios de Aceitação) |  | 8d | 2018-10-12 | 2018-10-23 | 141 | 0d | WeDo; Oi | 128h |
| 144 | 1.17.2 | Construção e Testes Unitários |  | 12d | 2018-10-24 | 2018-11-08 | 143 | 0d | WeDo | 96h |
| 145 | 1.17.3 | Elaborar Runbook |  | 2d | 2018-11-09 | 2018-11-12 | 144 | 33d | WeDo | 16h |
| 146 | 1.17.4 | Testes de Sistema |  | 4d | 2018-11-09 | 2018-11-14 | 144 | 0d | WeDo | 32h |
| 147 | 1.17.5 | Testes Integrados |  | 2d | 2018-11-15 | 2018-11-16 | 146 | 0d | WeDo; Oi | 32h |
| 148 | 1.17.6 | UAT |  | 3d | 2018-11-19 | 2018-11-21 | 147 | 26d | WeDo; Oi | 48h |
| 149 | 1.17.7 | Elaborar PLIM |  | 2d | 2018-11-19 | 2018-11-20 | 147 | 0d | WeDo | 16h |
| 150 | 1.17.8 | Implantação |  | 2d | 2018-11-21 | 2018-11-22 | 149 | 0d | WeDo | 16h |
| 151 | 1.17.9 | Onda 11 - Fixa R2 Offline - Finalizada | milestone | 0d | 2018-11-22 | 2018-11-22 | 150 | 0d |  |  |
| 152 | 1.18 | **Onda 12 - Fixa R2 Online** |  | 25d | 2018-11-23 | 2018-12-27 |  | 0d |  | 352h |
| 153 | 1.18.1 | Análise (Desenho de Solução, Especificação Técnica, Cenários de Teste e Critérios de Aceitação) |  | 5d | 2018-11-23 | 2018-11-29 | 151 | 0d | WeDo; Oi | 80h |
| 154 | 1.18.2 | Construção e Testes Unitários |  | 7d | 2018-11-30 | 2018-12-10 | 153 | 0d | WeDo | 56h |
| 155 | 1.18.3 | Elaborar Runbook |  | 2d | 2018-12-11 | 2018-12-12 | 154 | 11d | WeDo | 16h |
| 156 | 1.18.4 | Testes de Sistema |  | 3d | 2018-12-11 | 2018-12-13 | 154 | 0d | WeDo | 24h |
| 157 | 1.18.5 | Testes Integrados |  | 1d | 2018-12-14 | 2018-12-14 | 156 | 0d | WeDo; Oi | 16h |
| 158 | 1.18.6 | UAT |  | 3d | 2018-12-17 | 2018-12-19 | 157 | 6d | WeDo; Oi | 48h |
| 159 | 1.18.7 | Elaborar PLIM |  | 2d | 2018-12-17 | 2018-12-18 | 157 | 0d | WeDo | 16h |
| 160 | 1.18.8 | Implantação |  | 2d | 2018-12-19 | 2018-12-20 | 159 | 0d | WeDo | 16h |
| 161 | 1.18.9 | Operação Assistida |  | 5d | 2018-12-21 | 2018-12-27 | 160 | 0d | WeDo; Oi | 80h |
| 162 | 1.18.10 | Onda 12 - Fixa R2 Online - Finalizada | milestone | 0d | 2018-12-20 | 2018-12-20 | 160 | 5d |  |  |
