# MPP_BR.A.16.POI.039.00 - PROJETO FRAUDE OI

Schedule from MS Project, 2017-09-18 to 2019-12-16, A marks actual dates.
SSI

## Calendars

- Standard: Mon-Fri 08:00-12:00, 13:00-17:00; Sat-Sun off. Exceptions (off unless hours are given): 2017-09-07 to 2020-09-07 (Feriado Sete Setembro, recurring), 2017-10-12 to 2020-10-12 (Nsa Aparecida, recurring), 2017-10-16 to 2019-10-16 (Dia do Informática, recurring), 2017-11-02 to 2020-11-02 (Finados, recurring), 2017-11-15 to 2020-11-15 (Republica, recurring), 2017-12-25 to 2020-12-25 (Natal, recurring), 2017-12-31 to 2019-12-31 (Vespera Ano Novo, recurring), 2018-01-01 to 2021-01-01 (Ano Novo, recurring), 2018-02-12 to 2018-02-13 (Carnaval 2018), 2018-03-30 (Semana Santa), 2018-04-21 to 2019-04-21 (Tiradentes, recurring), 2018-05-01 to 2020-05-01 (Dia do Trabalho, recurring), 2018-05-31 (Corpus Christi 2018), 2018-12-24 to 2020-12-24 (Vespera Natal, recurring), 2019-03-04 to 2019-03-05 (Carnaval 2019), 2019-06-20 (Corpus Christi 2019).

## Resources

| Resource |
| --- |
| Andre Jacomino |
| Nuno Pestana |
| WeDo |
| Oi |

## Schedule

| ID | WBS | Task | Type | Duration | Start | Finish | Predecessors | Complete | Remaining | Baseline start | Baseline finish | Baseline duration | Total slack | Free slack | Constraint | Resources | Work | Actual work |
| --- | --- | --- | --- | --- | --- | --- | --- | --- | --- | --- | --- | --- | --- | --- | --- | --- | --- | --- |
| 1 | 1 | **Projeto RAID FMS OI - Programa 1** |  | 359d | 2017-09-18 A | 2019-02-28 |  | 2% | 351.6d | 2017-09-18 | 2019-02-28 | 359d |  |  |  |  | 5048h | 127.2h |
| 2 | 1.1 | **Infra-estrutura** |  | 55d | 2017-09-18 A | 2017-12-07 |  | 10% | 49.5d | 2017-09-18 | 2017-12-07 | 55d | 304d |  |  |  | 240h | 24h |
| 3 | 1.1.1 | **Acessos Lógicos** |  | 10d | 2017-09-18 A | 2017-09-29 |  | 30% | 7d | 2017-09-18 | 2017-09-29 | 10d | 349d |  |  |  | 80h | 24h |
| 4 | 1.1.1.1 | Enviar dados de acesso e contas de serviço |  | 3d | 2017-09-18 A | 2017-09-20 A |  | 100% |  | 2017-09-18 | 2017-09-20 | 3d |  |  |  | WeDo | 24h | 24h |
| 5 | 1.1.1.2 | Liberar acessos |  | 7d | 2017-09-21 | 2017-09-29 | 4 |  |  | 2017-09-21 | 2017-09-29 | 7d | 304d | 0d |  | Oi | 56h |  |
| 6 | 1.1.1.3 | Acessos Lógicos Liberados | milestone | 0d | 2017-09-29 | 2017-09-29 | 5 |  |  | 2017-09-29 | 2017-09-29 | 0d | 349d |  |  |  |  |  |
| 7 | 1.1.2 | Ambiente de DEV disponível | milestone | 0d | 2017-09-29 | 2017-09-29 | 5 |  |  | 2017-09-29 | 2017-09-29 | 0d | 304d | 0d |  | Oi |  |  |
| 8 | 1.1.3 | Instalação Vanila RAID FMS - DEV |  | 5d | 2017-10-02 | 2017-10-06 | 7 |  |  | 2017-10-02 | 2017-10-06 | 5d | 344d |  |  | WeDo | 40h |  |
| 9 | 1.1.4 | Ambiente de HML disponível | milestone | 0d | 2017-11-16 | 2017-11-16 | 7FF+30d |  |  | 2017-11-16 | 2017-11-16 | 0d | 314d | 0d |  | Oi |  |  |
| 10 | 1.1.5 | Instalação Vanila RAID FMS - HML |  | 5d | 2017-11-17 | 2017-11-23 | 9 |  |  | 2017-11-17 | 2017-11-23 | 5d | 314d |  |  | WeDo | 40h |  |
| 11 | 1.1.6 | Ambiente de PRD disponível | milestone | 0d | 2017-11-23 | 2017-11-23 | 7FF+35d |  |  | 2017-11-23 | 2017-11-23 | 0d | 304d | 0d |  | Oi |  |  |
| 12 | 1.1.7 | Instalação Vanila RAID FMS - PRD + BCV |  | 10d | 2017-11-24 | 2017-12-07 | 11 |  |  | 2017-11-24 | 2017-12-07 | 10d | 304d |  |  | WeDo | 80h |  |
| 13 | 1.1.8 | Ambiente de BCV disponível | milestone, manual | 0d | 2017-11-23 | 2017-11-23 | 11FF |  |  | 2017-11-23 | 2017-11-23 | 0d |  |  |  |  |  |  |
| 14 | 1.2 | **ONDA 1: Planejamento e Setup** |  | 14d | 2017-09-18 A | 2017-10-05 |  | 35% | 9.17d | 2017-09-18 | 2017-10-05 | 14d | 344d |  |  |  | 264h | 103.2h |
| 15 | 1.2.1 | Acessos Físicos Liberados | milestone | 0d | 2017-09-18 A | 2017-09-18 A |  | 100% |  | 2017-09-18 | 2017-09-18 | 0d |  |  |  | Oi; WeDo |  |  |
| 16 | 1.2.2 | Levantamento e elaboração Blueprint |  | 12d | 2017-09-18 A | 2017-10-03 |  | 50% | 6d | 2017-09-18 | 2017-10-03 | 12d | 340d | 0d |  | WeDo; Oi | 192h | 96h |
| 17 | 1.2.3 | Elaborar Plano de Desenvolvimento do Projeto (PDP) |  | 6d | 2017-09-26 A | 2017-10-03 | 16SS+6d | 15% | 5.1d | 2017-09-26 | 2017-10-03 | 6d | 346d | 0d |  | WeDo | 48h | 7.2h |
| 18 | 1.2.4 | Elaborar Material kick-off | manual | 1d | 2017-10-04 | 2017-10-04 | 17 |  |  | 2017-10-04 | 2017-10-04 | 1d |  |  |  | Oi | 8h |  |
| 19 | 1.2.5 | Reunião de Kick-off |  | 1d | 2017-10-05 | 2017-10-05 | 16 |  |  | 2017-10-05 | 2017-10-05 | 1d | 339d | 0d | start no earlier than 2017-10-05 | WeDo; Oi | 16h |  |
| 20 | 1.2.6 | Onda 1 - Planejamento e Setup - Finalizada | milestone | 0d | 2017-10-05 | 2017-10-05 | 19 |  |  | 2017-10-05 | 2017-10-05 | 0d | 339d | 0d |  |  |  |  |
| 21 | 1.3 | **Treinamento - Conceitos Básicos - Teoria (FMS-01)** |  | 6d | 2017-10-06 | 2017-10-17 |  |  |  | 2017-10-06 | 2017-10-17 | 6d | 339d |  |  |  | 56h |  |
| 22 | 1.3.1 | Elaborar material |  | 5d | 2017-10-06 | 2017-10-13 | 20 |  |  | 2017-10-06 | 2017-10-13 | 5d | 339d | 0d |  | WeDo | 40h |  |
| 23 | 1.3.2 | Ambiente disponibilizado | milestone | 0d | 2017-10-13 | 2017-10-13 | 22 |  |  | 2017-10-13 | 2017-10-13 | 0d | 339d | 0d |  | Oi |  |  |
| 24 | 1.3.3 | Realizar Treinamento |  | 1d | 2017-10-17 | 2017-10-17 | 23 |  |  | 2017-10-17 | 2017-10-17 | 1d | 339d | 0d |  | Oi; WeDo | 16h |  |
| 25 | 1.3.4 | Treinamento Finalizado | milestone | 0d | 2017-10-17 | 2017-10-17 | 24 |  |  | 2017-10-17 | 2017-10-17 | 0d | 339d |  |  |  |  |  |

Notes:
- 7: Contingencia será ambiente RAID UC (aguardando chegada do serv. novo)

| ID | WBS | Task | Type | Duration | Start | Finish | Predecessors | Baseline start | Baseline finish | Baseline duration | Total slack | Free slack | Constraint | Resources | Work |
| --- | --- | --- | --- | --- | --- | --- | --- | --- | --- | --- | --- | --- | --- | --- | --- |
| 26 | 1.4 | **ONDA 2: TV off line (Quick Wins - Motor de Fraude)** |  | 58d | 2017-10-23 | 2018-01-16 |  | 2017-10-23 | 2018-01-16 | 58d | 0d |  |  |  | 680h |
| 27 | 1.4.1 | Análise (Desenho de Solução, Especificação Técnica, Cenários de Teste e Critérios de Aceitação) |  | 12d | 2017-10-23 | 2017-11-08 |  | 2017-10-23 | 2017-11-08 | 12d | 0d |  | start no earlier than 2017-10-23 | WeDo; Oi | 192h |
| 28 | 1.4.2 | Construção e Testes Unitários |  | 30d | 2017-11-09 | 2017-12-21 | 27 | 2017-11-09 | 2017-12-21 | 30d | 0d |  |  | WeDo | 240h |
| 29 | 1.4.3 | Elaborar Runbook |  | 3d | 2017-12-22 | 2017-12-27 | 28 | 2017-12-22 | 2017-12-27 | 3d | 291d |  |  | WeDo | 24h |
| 30 | 1.4.4 | Testes de Sistema |  | 4d | 2017-12-22 | 2017-12-28 | 28 | 2017-12-22 | 2017-12-28 | 4d | 0d |  |  | WeDo | 32h |
| 31 | 1.4.5 | Testes Integrados |  | 1d | 2017-12-29 | 2017-12-29 | 30 | 2017-12-29 | 2017-12-29 | 1d | 0d |  |  | WeDo; Oi | 16h |
| 32 | 1.4.6 | UAT |  | 4d | 2018-01-02 | 2018-01-05 | 31 | 2018-01-02 | 2018-01-05 | 4d | 0d |  |  | WeDo; Oi | 64h |
| 33 | 1.4.7 | Elaborar PLIM |  | 2d | 2018-01-02 | 2018-01-03 | 31 | 2018-01-02 | 2018-01-03 | 2d | 287d |  |  | WeDo | 16h |
| 34 | 1.4.8 | Implantação |  | 2d | 2018-01-08 | 2018-01-09 | 32 | 2018-01-08 | 2018-01-09 | 2d | 0d |  |  | WeDo | 16h |
| 35 | 1.4.9 | Operação Assistida |  | 5d | 2018-01-10 | 2018-01-16 | 34 | 2018-01-10 | 2018-01-16 | 5d | 278d | 0d |  | WeDo; Oi | 80h |
| 36 | 1.4.10 | Onda 2 - TV off line - Finalizada | milestone | 0d | 2018-01-16 | 2018-01-16 | 35 | 2018-01-16 | 2018-01-16 | 0d | 278d |  |  |  |  |
| 37 | 1.5 | **ONDA 3: Oi Total 2P + Fixa R1 2P** |  | 76d | 2017-11-24 | 2018-03-15 |  | 2017-11-24 | 2018-03-15 | 76d | 31d |  |  |  | 384h |
| 38 | 1.5.1 | Análise (Desenho de Solução, Especificação Técnica, Cenários de Teste e Critérios de Aceitação) |  | 4d | 2018-01-10 | 2018-01-15 | 34 | 2018-01-10 | 2018-01-15 | 4d | 0d |  |  | WeDo; Oi | 64h |
| 39 | 1.5.2 | Análise Transact |  | 3d | 2017-11-24 | 2017-11-28 | 28SS+10d | 2017-11-24 | 2017-11-28 | 3d | 304d | 0d |  | WeDo | 24h |
| 40 | 1.5.3 | Construção e Testes Unitários |  | 8d | 2018-01-16 | 2018-01-25 | 38 | 2018-01-16 | 2018-01-25 | 8d | 0d |  |  | WeDo | 64h |
| 41 | 1.5.4 | Construção e Testes Unitários - Transact |  | 7d | 2017-11-29 | 2017-12-07 | 39 | 2017-11-29 | 2017-12-07 | 7d | 304d |  |  | WeDo | 56h |
| 42 | 1.5.5 | Elaborar Runbook |  | 2d | 2018-01-26 | 2018-01-29 | 40 | 2018-01-26 | 2018-01-29 | 2d | 269d |  |  | WeDo | 16h |
| 43 | 1.5.6 | Testes de Sistema |  | 4d | 2018-01-26 | 2018-01-31 | 40 | 2018-01-26 | 2018-01-31 | 4d | 0d |  |  | WeDo | 32h |
| 44 | 1.5.7 | Testes Integrados |  | 3d | 2018-02-01 | 2018-02-05 | 43 | 2018-02-01 | 2018-02-05 | 3d | 0d |  |  | WeDo; Oi | 48h |
| 45 | 1.5.8 | UAT |  | 3d | 2018-02-06 | 2018-02-08 | 44 | 2018-02-06 | 2018-02-08 | 3d | 0d |  |  | WeDo; Oi | 48h |
| 46 | 1.5.9 | Elaborar PLIM |  | 2d | 2018-02-06 | 2018-02-07 | 44 | 2018-02-06 | 2018-02-07 | 2d | 262d |  |  | WeDo | 16h |
| 47 | 1.5.10 | Implantação |  | 2d | 2018-02-09 | 2018-02-14 | 45 | 2018-02-09 | 2018-02-14 | 2d | 0d |  |  | WeDo | 16h |
| 48 | 1.5.11 | Operação Assistida | manual | 5d | 2018-03-09 | 2018-03-15 | 47 | 2018-03-09 | 2018-03-15 | 5d |  |  |  |  |  |
| 49 | 1.5.12 | Onda 3 - Oi Total 2P + Fixa R1 1P - Finalizada | milestone | 0d | 2018-03-15 | 2018-03-15 | 48 | 2018-03-15 | 2018-03-15 | 0d | 238d |  |  |  |  |

Notes:
- 28: Avaliar a possibilidade de quebrar entregas (quais)
- 37: Modelos estatísticos devem devem estar prontos para entrada do online (risco alto)

| ID | WBS | Task | Type | Duration | Start | Finish | Predecessors | Baseline start | Baseline finish | Baseline duration | Total slack | Free slack | Resources | Work |
| --- | --- | --- | --- | --- | --- | --- | --- | --- | --- | --- | --- | --- | --- | --- |
| 50 | 1.6 | **Treinamento Usuário (FMS-04)** |  | 8d | 2018-01-19 | 2018-01-30 |  | 2018-01-19 | 2018-01-30 | 8d | 268d |  |  | 40h |
| 51 | 1.6.1 | Elaborar material |  | 5d | 2018-01-19 | 2018-01-25 | 40SS+3d | 2018-01-19 | 2018-01-25 | 5d | 268d | 0d | WeDo | 40h |
| 52 | 1.6.2 | Ambiente disponibilizado | milestone | 0d | 2018-01-25 | 2018-01-25 | 51 | 2018-01-25 | 2018-01-25 | 0d | 268d | 0d | Oi |  |
| 53 | 1.6.3 | Realizar Treinamento |  | 3d | 2018-01-26 | 2018-01-30 | 52 | 2018-01-26 | 2018-01-30 | 3d | 268d | 0d |  |  |
| 54 | 1.6.4 | Treinamento Usuário Finalizado | milestone | 0d | 2018-01-30 | 2018-01-30 | 53 | 2018-01-30 | 2018-01-30 | 0d | 268d |  |  |  |
| 55 | 1.7 | **ONDAS 4, 5 e 6: Oi Total 3P + Móvel Puro Online + Oi Total Online** |  | 34d | 2018-02-15 | 2018-04-04 |  | 2018-02-15 | 2018-04-04 | 34d | 0d |  |  | 408h |
| 56 | 1.7.1 | Análise (Desenho de Solução, Especificação Técnica, Cenários de Teste e Critérios de Aceitação) |  | 7d | 2018-02-15 | 2018-02-23 | 47 | 2018-02-15 | 2018-02-23 | 7d | 0d |  | WeDo; Oi | 112h |
| 57 | 1.7.2 | Construção e Testes Unitários |  | 15d | 2018-02-26 | 2018-03-16 | 56 | 2018-02-26 | 2018-03-16 | 15d | 0d |  | WeDo | 120h |
| 58 | 1.7.3 | Elaborar Runbook |  | 2d | 2018-03-19 | 2018-03-20 | 57 | 2018-03-19 | 2018-03-20 | 2d | 235d |  | WeDo | 16h |
| 59 | 1.7.4 | Testes de Sistema |  | 4d | 2018-03-19 | 2018-03-22 | 57 | 2018-03-19 | 2018-03-22 | 4d | 0d |  | WeDo | 32h |
| 60 | 1.7.5 | Testes Integrados |  | 2d | 2018-03-23 | 2018-03-26 | 59 | 2018-03-23 | 2018-03-26 | 2d | 0d |  | WeDo; Oi | 32h |
| 61 | 1.7.6 | UAT |  | 4d | 2018-03-27 | 2018-04-02 | 60 | 2018-03-27 | 2018-04-02 | 4d | 0d |  | WeDo; Oi | 64h |
| 62 | 1.7.7 | Elaborar PLIM |  | 2d | 2018-03-27 | 2018-03-28 | 60 | 2018-03-27 | 2018-03-28 | 2d | 229d |  | WeDo | 16h |
| 63 | 1.7.8 | Implantação |  | 2d | 2018-04-03 | 2018-04-04 | 61 | 2018-04-03 | 2018-04-04 | 2d | 0d |  | WeDo | 16h |
| 64 | 1.7.9 | Ondas 4, 5 e 6 - Oi Total 3P + Móvel Puro Online + Oi Total Online - Finalizada | milestone | 0d | 2018-04-04 | 2018-04-04 | 63 | 2018-04-04 | 2018-04-04 | 0d | 0d |  |  |  |
| 65 | 1.8 | **ONDA 7.1: Integração Bases de Dados (CRM)** |  | 57d | 2018-04-05 | 2018-06-26 |  | 2018-04-05 | 2018-06-26 | 57d | 0d |  |  | 688h |
| 66 | 1.8.1 | Análise (Desenho de Solução, Especificação Técnica, Cenários de Teste e Critérios de Aceitação) |  | 10d | 2018-04-05 | 2018-04-18 | 64 | 2018-04-05 | 2018-04-18 | 10d | 0d |  | WeDo; Oi | 160h |
| 67 | 1.8.2 | Construção e Testes Unitários |  | 25d | 2018-04-19 | 2018-05-24 | 66 | 2018-04-19 | 2018-05-24 | 25d | 0d |  | WeDo | 200h |
| 68 | 1.8.3 | Elaborar Runbook |  | 2d | 2018-05-25 | 2018-05-28 | 67 | 2018-05-25 | 2018-05-28 | 2d | 188d |  | WeDo | 16h |
| 69 | 1.8.4 | Testes de Sistema |  | 5d | 2018-05-25 | 2018-06-01 | 67 | 2018-05-25 | 2018-06-01 | 5d | 0d |  | WeDo | 40h |
| 70 | 1.8.5 | Testes Integrados - Plano e Execução |  | 10d | 2018-06-04 | 2018-06-15 | 69 | 2018-06-04 | 2018-06-15 | 10d | 0d |  | WeDo; Oi | 160h |
| 71 | 1.8.6 | UAT |  | 5d | 2018-06-18 | 2018-06-22 | 70 | 2018-06-18 | 2018-06-22 | 5d | 0d |  | WeDo; Oi | 80h |
| 72 | 1.8.7 | Elaborar PLIM |  | 2d | 2018-06-18 | 2018-06-19 | 70 | 2018-06-18 | 2018-06-19 | 2d | 173d |  | WeDo | 16h |
| 73 | 1.8.8 | Implantação |  | 2d | 2018-06-25 | 2018-06-26 | 71 | 2018-06-25 | 2018-06-26 | 2d | 0d |  | WeDo | 16h |
| 74 | 1.8.9 | Onda 7.1 - Integração Bases de Dados - Finalizada | milestone | 0d | 2018-06-26 | 2018-06-26 | 73 | 2018-06-26 | 2018-06-26 | 0d | 0d |  |  |  |

| ID | WBS | Task | Type | Duration | Start | Finish | Predecessors | Baseline start | Baseline finish | Baseline duration | Total slack | Free slack | Resources | Work |
| --- | --- | --- | --- | --- | --- | --- | --- | --- | --- | --- | --- | --- | --- | --- |
| 75 | 1.9 | **ONDA 7.2: Integração Bases de Dados (Faturamento)** |  | 31d | 2018-06-27 | 2018-08-08 |  | 2018-06-27 | 2018-08-08 | 31d | 0d |  |  | 368h |
| 76 | 1.9.1 | Análise (Desenho de Solução, Especificação Técnica, Cenários de Teste e Critérios de Aceitação) |  | 5d | 2018-06-27 | 2018-07-03 | 74 | 2018-06-27 | 2018-07-03 | 5d | 0d |  | WeDo; Oi | 80h |
| 77 | 1.9.2 | Construção e Testes Unitários |  | 15d | 2018-07-04 | 2018-07-24 | 76 | 2018-07-04 | 2018-07-24 | 15d | 0d |  | WeDo | 120h |
| 78 | 1.9.3 | Elaborar Runbook |  | 2d | 2018-07-25 | 2018-07-26 | 77 | 2018-07-25 | 2018-07-26 | 2d | 146d |  | WeDo | 16h |
| 79 | 1.9.4 | Testes de Sistema |  | 3d | 2018-07-25 | 2018-07-27 | 77 | 2018-07-25 | 2018-07-27 | 3d | 0d |  | WeDo | 24h |
| 80 | 1.9.5 | Testes Integrados - Plano e Execução |  | 3d | 2018-07-30 | 2018-08-01 | 79 | 2018-07-30 | 2018-08-01 | 3d | 0d |  | WeDo; Oi | 48h |
| 81 | 1.9.6 | UAT |  | 3d | 2018-08-02 | 2018-08-06 | 80 | 2018-08-02 | 2018-08-06 | 3d | 0d |  | WeDo; Oi | 48h |
| 82 | 1.9.7 | Elaborar PLIM |  | 2d | 2018-08-02 | 2018-08-03 | 80 | 2018-08-02 | 2018-08-03 | 2d | 140d |  | WeDo | 16h |
| 83 | 1.9.8 | Implantação |  | 2d | 2018-08-07 | 2018-08-08 | 81 | 2018-08-07 | 2018-08-08 | 2d | 0d |  | WeDo | 16h |
| 84 | 1.9.9 | Onda 7.2 - Integração Bases de Dados - Finalizada | milestone | 0d | 2018-08-08 | 2018-08-08 | 83 | 2018-08-08 | 2018-08-08 | 0d | 137d |  |  |  |
| 85 | 1.10 | **Treinamento Administração Técnica (FMS-02)** |  | 8d | 2018-07-04 | 2018-07-13 |  | 2018-07-04 | 2018-07-13 | 8d | 155d |  |  | 88h |
| 86 | 1.10.1 | Elaborar material |  | 5d | 2018-07-04 | 2018-07-10 | 77SS | 2018-07-04 | 2018-07-10 | 5d | 155d | 0d | WeDo | 40h |
| 87 | 1.10.2 | Ambiente disponibilizado | milestone | 0d | 2018-07-10 | 2018-07-10 | 86 | 2018-07-10 | 2018-07-10 | 0d | 155d | 0d | Oi |  |
| 88 | 1.10.3 | Realizar Treinamento |  | 3d | 2018-07-11 | 2018-07-13 | 87 | 2018-07-11 | 2018-07-13 | 3d | 155d | 0d | WeDo; Oi | 48h |
| 89 | 1.10.4 | Treinamento Administração Técnica Finalizado | milestone | 0d | 2018-07-13 | 2018-07-13 | 88 | 2018-07-13 | 2018-07-13 | 0d | 155d |  |  |  |
| 90 | 1.11 | **Treinamento Administração Funcional (FMS-03)** |  | 8d | 2017-09-18 | 2017-09-27 |  | 2017-09-18 | 2017-09-27 | 8d | 351d |  |  | 88h |
| 91 | 1.11.1 | Elaborar material |  | 5d | 2017-09-18 | 2017-09-22 |  | 2017-09-18 | 2017-09-22 | 5d | 351d | 0d | WeDo | 40h |
| 92 | 1.11.2 | Ambiente disponibilizado | milestone | 0d | 2017-09-22 | 2017-09-22 | 91 | 2017-09-22 | 2017-09-22 | 0d | 351d | 0d | Oi |  |
| 93 | 1.11.3 | Realizar Treinamento |  | 3d | 2017-09-25 | 2017-09-27 | 92 | 2017-09-25 | 2017-09-27 | 3d | 351d | 0d | WeDo; Oi | 48h |
| 94 | 1.11.4 | Treinamento Administração Funcional Finalizado | milestone | 0d | 2017-09-27 | 2017-09-27 | 93 | 2017-09-27 | 2017-09-27 | 0d | 351d |  |  |  |
| 95 | 1.12 | **ONDA 10: Oi Controle Sem Fatura Online** |  | 45d | 2018-08-09 | 2018-10-11 |  | 2018-08-09 | 2018-10-11 | 45d | 0d |  |  | 584h |
| 96 | 1.12.1 | Análise (Desenho de Solução, Especificação Técnica, Cenários de Teste e Critérios de Aceitação) |  | 10d | 2018-08-09 | 2018-08-22 | 83 | 2018-08-09 | 2018-08-22 | 10d | 0d |  | WeDo; Oi | 160h |
| 97 | 1.12.2 | Construção e Testes Unitários |  | 18d | 2018-08-23 | 2018-09-18 | 96 | 2018-08-23 | 2018-09-18 | 18d | 0d |  | WeDo | 144h |
| 98 | 1.12.3 | Elaborar Runbook |  | 2d | 2018-09-19 | 2018-09-20 | 97 | 2018-09-19 | 2018-09-20 | 2d | 107d |  | WeDo | 16h |
| 99 | 1.12.4 | Testes de Sistema |  | 4d | 2018-09-19 | 2018-09-24 | 97 | 2018-09-19 | 2018-09-24 | 4d | 0d |  | WeDo | 32h |
| 100 | 1.12.5 | Testes Integrados |  | 3d | 2018-09-25 | 2018-09-27 | 99 | 2018-09-25 | 2018-09-27 | 3d | 0d |  | WeDo; Oi | 48h |
| 101 | 1.12.6 | UAT |  | 4d | 2018-09-28 | 2018-10-03 | 100 | 2018-09-28 | 2018-10-03 | 4d | 98d |  | WeDo; Oi | 64h |
| 102 | 1.12.7 | Elaborar PLIM |  | 2d | 2018-09-28 | 2018-10-01 | 100 | 2018-09-28 | 2018-10-01 | 2d | 0d |  | WeDo | 16h |
| 103 | 1.12.8 | Implantação |  | 3d | 2018-10-02 | 2018-10-04 | 102 | 2018-10-02 | 2018-10-04 | 3d | 0d |  | WeDo | 24h |
| 104 | 1.12.9 | Operação Assistida |  | 5d | 2018-10-05 | 2018-10-11 | 103 | 2018-10-05 | 2018-10-11 | 5d | 92d | 0d | WeDo; Oi | 80h |
| 105 | 1.12.10 | Onda 10 - Oi Controle Sem Fatura Online - Finalizada | milestone | 0d | 2018-10-11 | 2018-10-11 | 104 | 2018-10-11 | 2018-10-11 | 0d | 92d |  |  |  |

| ID | WBS | Task | Type | Duration | Start | Finish | Predecessors | Baseline start | Baseline finish | Baseline duration | Total slack | Free slack | Resources | Work |
| --- | --- | --- | --- | --- | --- | --- | --- | --- | --- | --- | --- | --- | --- | --- |
| 106 | 1.13 | **ONDA 9: Telas para Operação de Crédito** |  | 35d | 2018-10-05 | 2018-11-28 |  | 2018-10-05 | 2018-11-28 | 35d | 62d |  |  | 464h |
| 107 | 1.13.1 | Análise (Desenho de Solução, Especificação Técnica, Cenários de Teste e Critérios de Aceitação) |  | 5d | 2018-10-05 | 2018-10-11 | 103 | 2018-10-05 | 2018-10-11 | 5d | 62d | 0d | WeDo; Oi | 80h |
| 108 | 1.13.2 | Construção e Testes Unitários |  | 15d | 2018-10-15 | 2018-11-06 | 107 | 2018-10-15 | 2018-11-06 | 15d | 62d | 0d | WeDo | 120h |
| 109 | 1.13.3 | Elaborar Runbook |  | 2d | 2018-11-07 | 2018-11-08 | 108 | 2018-11-07 | 2018-11-08 | 2d | 75d |  | WeDo | 16h |
| 110 | 1.13.4 | Testes de Sistema |  | 5d | 2018-11-07 | 2018-11-13 | 108 | 2018-11-07 | 2018-11-13 | 5d | 62d | 0d | WeDo | 40h |
| 111 | 1.13.5 | Testes Integrados |  | 1d | 2018-11-14 | 2018-11-14 | 110 | 2018-11-14 | 2018-11-14 | 1d | 62d | 0d | WeDo; Oi | 16h |
| 112 | 1.13.6 | UAT |  | 5d | 2018-11-16 | 2018-11-22 | 111 | 2018-11-16 | 2018-11-22 | 5d | 66d |  | WeDo; Oi | 80h |
| 113 | 1.13.7 | Elaborar PLIM |  | 2d | 2018-11-16 | 2018-11-19 | 111 | 2018-11-16 | 2018-11-19 | 2d | 62d | 0d | WeDo | 16h |
| 114 | 1.13.8 | Implantação |  | 2d | 2018-11-20 | 2018-11-21 | 113 | 2018-11-20 | 2018-11-21 | 2d | 62d | 0d | WeDo | 16h |
| 115 | 1.13.9 | Operação Assistida |  | 5d | 2018-11-22 | 2018-11-28 | 114 | 2018-11-22 | 2018-11-28 | 5d | 62d | 0d | WeDo; Oi | 80h |
| 116 | 1.13.10 | Onda 9 - Telas para Operação de Crédito - Finalizada | milestone | 0d | 2018-11-28 | 2018-11-28 | 115 | 2018-11-28 | 2018-11-28 | 0d | 62d |  |  |  |
| 117 | 1.14 | **ONDA 8: Oi Fibra Online** |  | 10d | 2018-10-05 | 2018-10-22 |  | 2018-10-05 | 2018-10-22 | 10d | 87d |  |  | 104h |
| 118 | 1.14.1 | Análise (Desenho de Solução, Especificação Técnica, Cenários de Teste e Critérios de Aceitação) |  | 3d | 2018-10-05 | 2018-10-09 | 103 | 2018-10-05 | 2018-10-09 | 3d | 87d | 0d | WeDo | 24h |
| 119 | 1.14.2 | Construção e Testes Unitários |  | 3d | 2018-10-10 | 2018-10-15 | 118 | 2018-10-10 | 2018-10-15 | 3d | 87d | 0d | WeDo | 24h |
| 120 | 1.14.3 | Elaborar Runbook |  | 1d | 2018-10-10 | 2018-10-10 | 118 | 2018-10-10 | 2018-10-10 | 1d | 93d |  | WeDo | 8h |
| 121 | 1.14.4 | Testes de Sistema |  | 1d | 2018-10-17 | 2018-10-17 | 119 | 2018-10-17 | 2018-10-17 | 1d | 87d | 0d | WeDo; Oi | 16h |
| 122 | 1.14.5 | Testes Integrados |  | 1d | 2018-10-18 | 2018-10-18 | 121 | 2018-10-18 | 2018-10-18 | 1d | 87d | 0d | WeDo; Oi | 16h |
| 123 | 1.14.6 | UAT |  | 1d | 2018-10-19 | 2018-10-19 | 122 | 2018-10-19 | 2018-10-19 | 1d | 88d |  | WeDo | 8h |
| 124 | 1.14.7 | Elaborar PLIM |  | 1d | 2018-10-19 | 2018-10-19 | 122 | 2018-10-19 | 2018-10-19 | 1d | 87d | 0d | WeDo | 8h |
| 125 | 1.14.8 | Implantação |  | 1d | 2018-10-22 | 2018-10-22 | 124 | 2018-10-22 | 2018-10-22 | 1d | 87d | 0d |  |  |
| 126 | 1.14.9 | Onda 8 - Oi Fibra Online - Finalizada | milestone | 0d | 2018-10-22 | 2018-10-22 | 125 | 2018-10-22 | 2018-10-22 | 0d | 87d |  |  |  |
| 127 | 1.15 | **ONDA 11: Fixa R2 Offline** |  | 25d | 2018-10-05 | 2018-11-13 |  | 2018-10-05 | 2018-11-13 | 25d | 52d |  |  | 320h |
| 128 | 1.15.1 | Análise (Desenho de Solução, Especificação Técnica, Cenários de Teste e Critérios de Aceitação) |  | 5d | 2018-10-05 | 2018-10-11 | 103 | 2018-10-05 | 2018-10-11 | 5d | 52d | 0d | WeDo; Oi | 80h |
| 129 | 1.15.2 | Construção e Testes Unitários |  | 10d | 2018-10-15 | 2018-10-29 | 128 | 2018-10-15 | 2018-10-29 | 10d | 52d | 0d | WeDo | 80h |
| 130 | 1.15.3 | Elaborar Runbook |  | 2d | 2018-10-30 | 2018-10-31 | 129 | 2018-10-30 | 2018-10-31 | 2d | 80d |  | WeDo | 16h |
| 131 | 1.15.4 | Testes de Sistema |  | 4d | 2018-10-30 | 2018-11-05 | 129 | 2018-10-30 | 2018-11-05 | 4d | 52d | 0d | WeDo | 32h |
| 132 | 1.15.5 | Testes Integrados |  | 2d | 2018-11-06 | 2018-11-07 | 131 | 2018-11-06 | 2018-11-07 | 2d | 52d | 0d | WeDo; Oi | 32h |
| 133 | 1.15.6 | UAT |  | 3d | 2018-11-08 | 2018-11-12 | 132 | 2018-11-08 | 2018-11-12 | 3d | 73d |  | WeDo; Oi | 48h |
| 134 | 1.15.7 | Elaborar PLIM |  | 2d | 2018-11-08 | 2018-11-09 | 132 | 2018-11-08 | 2018-11-09 | 2d | 52d | 0d | WeDo | 16h |
| 135 | 1.15.8 | Implantação |  | 2d | 2018-11-12 | 2018-11-13 | 134 | 2018-11-12 | 2018-11-13 | 2d | 52d | 0d | WeDo | 16h |
| 136 | 1.15.9 | Onda 11 - Fixa R2 Offline - Finalizada | milestone | 0d | 2018-11-13 | 2018-11-13 | 135 | 2018-11-13 | 2018-11-13 | 0d | 52d | 0d |  |  |

Notes:
- 127: Depende UNIFICA ou CRM Unico - ver Cezar

| ID | WBS | Task | Type | Duration | Start | Finish | Predecessors | Baseline start | Baseline finish | Baseline duration | Total slack | Free slack | Resources | Work |
| --- | --- | --- | --- | --- | --- | --- | --- | --- | --- | --- | --- | --- | --- | --- |
| 137 | 1.16 | **ONDA 12: Fixa R2 Online** |  | 20d | 2018-11-14 | 2018-12-12 |  | 2018-11-14 | 2018-12-12 | 20d | 52d |  |  | 272h |
| 138 | 1.16.1 | Análise (Desenho de Solução, Especificação Técnica, Cenários de Teste e Critérios de Aceitação) |  | 5d | 2018-11-14 | 2018-11-21 | 136 | 2018-11-14 | 2018-11-21 | 5d | 52d | 0d | WeDo; Oi | 80h |
| 139 | 1.16.2 | Construção e Testes Unitários |  | 7d | 2018-11-22 | 2018-11-30 | 138 | 2018-11-22 | 2018-11-30 | 7d | 52d | 0d | WeDo | 56h |
| 140 | 1.16.3 | Elaborar Runbook |  | 2d | 2018-12-03 | 2018-12-04 | 139 | 2018-12-03 | 2018-12-04 | 2d | 58d |  | WeDo | 16h |
| 141 | 1.16.4 | Testes de Sistema |  | 3d | 2018-12-03 | 2018-12-05 | 139 | 2018-12-03 | 2018-12-05 | 3d | 52d | 0d | WeDo | 24h |
| 142 | 1.16.5 | Testes Integrados |  | 1d | 2018-12-06 | 2018-12-06 | 141 | 2018-12-06 | 2018-12-06 | 1d | 52d | 0d | WeDo; Oi | 16h |
| 143 | 1.16.6 | UAT |  | 3d | 2018-12-07 | 2018-12-11 | 142 | 2018-12-07 | 2018-12-11 | 3d | 53d |  | WeDo; Oi | 48h |
| 144 | 1.16.7 | Elaborar PLIM |  | 2d | 2018-12-07 | 2018-12-10 | 142 | 2018-12-07 | 2018-12-10 | 2d | 52d | 0d | WeDo | 16h |
| 145 | 1.16.8 | Implantação |  | 2d | 2018-12-11 | 2018-12-12 | 144 | 2018-12-11 | 2018-12-12 | 2d | 52d | 0d | WeDo | 16h |
| 146 | 1.16.9 | Operação Assistida | milestone | 0d | 2018-12-12 | 2018-12-12 | 145 | 2018-12-12 | 2018-12-12 | 0d | 52d | 0d | WeDo; Oi |  |
| 147 | 1.16.10 | Onda 12 - Fixa R2 Online - Finalizada | milestone | 0d | 2018-12-12 | 2018-12-12 | 146 | 2018-12-12 | 2018-12-12 | 0d | 52d |  |  |  |
| 148 | 2 | **Projeto RAID FMS OI - Programa 2** |  | 298d | 2018-10-05 | 2019-12-16 |  | 2018-10-05 | 2019-12-16 | 298d | 0d |  |  | 5704h |
| 149 | 2.1 | **ONDA 1: Planejamento e Setup** |  | 7d | 2018-10-05 | 2018-10-17 |  | 2018-10-05 | 2018-10-17 | 7d | 0d |  |  | 224h |
| 150 | 2.1.1 | Detalhamento (Macro Requisitos) |  | 7d | 2018-10-05 | 2018-10-17 | 103, 147 | 2018-10-05 | 2018-10-17 | 7d | 291d |  | Oi | 56h |
| 151 | 2.1.2 | Revisão do Cronograma |  | 7d | 2018-10-05 | 2018-10-17 | 103, 147 | 2018-10-05 | 2018-10-17 | 7d | 291d |  | WeDo; Oi | 112h |
| 152 | 2.1.3 | Atualização PDP |  | 7d | 2018-10-05 | 2018-10-17 | 103, 147 | 2018-10-05 | 2018-10-17 | 7d | 0d |  | WeDo | 56h |
| 153 | 2.2 | **ONDA 1.1: Configuração Ambiente** |  | 30d | 2018-10-17 | 2018-11-29 |  | 2018-10-17 | 2018-11-29 | 30d | 0d |  |  | 480h |
| 154 | 2.2.1 | Integração Hadoop | manual | 30d | 2018-10-17 | 2018-11-29 | 103, 152 | 2018-10-17 | 2018-11-29 | 30d |  |  | WeDo; Oi | 480h |
| 155 | 2.3 | **ONDAS 13 e 14: Fraude LDI + Roaming internacional Near Real Time** |  | 63d | 2018-10-18 | 2019-01-22 |  | 2018-10-18 | 2019-01-22 | 63d | 0d |  |  | 752h |
| 156 | 2.3.1 | Análise (Desenho de Solução, Especificação Técnica, Cenários de Teste e Critérios de Aceitação) |  | 12d | 2018-10-18 | 2018-11-05 | 152 | 2018-10-18 | 2018-11-05 | 12d | 0d |  | WeDo; Oi | 192h |
| 157 | 2.3.2 | Construção e Testes Unitários |  | 29d | 2018-11-06 | 2018-12-17 | 156 | 2018-11-06 | 2018-12-17 | 29d | 203d | 0d | WeDo | 232h |
| 158 | 2.3.3 | Elaborar Runbook |  | 3d | 2018-12-18 | 2018-12-20 | 157 | 2018-12-18 | 2018-12-20 | 3d | 247d |  | WeDo | 24h |
| 159 | 2.3.4 | Testes de Sistema |  | 6d | 2018-12-18 | 2018-12-27 | 157 | 2018-12-18 | 2018-12-27 | 6d | 203d | 0d | WeDo | 48h |
| 160 | 2.3.5 | Testes Integrados |  | 3d | 2018-12-28 | 2019-01-03 | 159 | 2018-12-28 | 2019-01-03 | 3d | 203d | 0d | WeDo; Oi | 48h |
| 161 | 2.3.6 | UAT |  | 6d | 2019-01-04 | 2019-01-11 | 160 | 2019-01-04 | 2019-01-11 | 6d | 203d | 0d | WeDo; Oi | 96h |
| 162 | 2.3.7 | Elaborar PLIM |  | 2d | 2019-01-04 | 2019-01-07 | 160 | 2019-01-04 | 2019-01-07 | 2d | 239d |  | WeDo | 16h |
| 163 | 2.3.8 | Implantação |  | 2d | 2019-01-14 | 2019-01-15 | 161 | 2019-01-14 | 2019-01-15 | 2d | 203d | 0d | WeDo | 16h |
| 164 | 2.3.9 | Operação Assistida |  | 5d | 2019-01-16 | 2019-01-22 | 163 | 2019-01-16 | 2019-01-22 | 5d | 228d | 0d | WeDo; Oi | 80h |
| 165 | 2.3.10 | ONDAS 13 e 14: Fraude LDI + Roaming internacional Near Real Time - Finalizado | milestone | 0d | 2019-01-22 | 2019-01-22 | 164 | 2019-01-22 | 2019-01-22 | 0d | 228d |  |  |  |

Notes:
- 137: Depende UNIFICA - ver Cezar
- 150: parelizado com término da ONDA 10

| ID | WBS | Task | Type | Duration | Start | Finish | Predecessors | Baseline start | Baseline finish | Baseline duration | Total slack | Free slack | Resources | Work |
| --- | --- | --- | --- | --- | --- | --- | --- | --- | --- | --- | --- | --- | --- | --- |
| 166 | 2.4 | **Treinamento Help Desk (FMS-06)** |  | 4d | 2018-11-09 | 2018-11-14 |  | 2018-11-09 | 2018-11-14 | 4d | 272d |  |  | 48h |
| 167 | 2.4.1 | Elaborar material |  | 2d | 2018-11-09 | 2018-11-12 | 157SS+3d | 2018-11-09 | 2018-11-12 | 2d | 272d | 0d | WeDo | 16h |
| 168 | 2.4.2 | Ambiente disponibilizado | milestone | 0d | 2018-11-12 | 2018-11-12 | 167 | 2018-11-12 | 2018-11-12 | 0d | 272d | 0d | Oi |  |
| 169 | 2.4.3 | Realizar Treinamento |  | 2d | 2018-11-13 | 2018-11-14 | 168 | 2018-11-13 | 2018-11-14 | 2d | 272d | 0d | WeDo; Oi | 32h |
| 170 | 2.4.4 | Treinamento Usuário Finalizado | milestone | 0d | 2018-11-14 | 2018-11-14 | 169 | 2018-11-14 | 2018-11-14 | 0d | 272d |  |  |  |
| 171 | 2.5 | **ONDA 15: Alarmes Externos** |  | 30d | 2019-01-16 | 2019-02-26 |  | 2019-01-16 | 2019-02-26 | 30d | 203d |  |  | 312h |
| 172 | 2.5.1 | Análise (Desenho de Solução, Especificação Técnica, Cenários de Teste e Critérios de Aceitação) |  | 5d | 2019-01-16 | 2019-01-22 | 163 | 2019-01-16 | 2019-01-22 | 5d | 203d | 0d | WeDo; Oi | 80h |
| 173 | 2.5.2 | Construção e Testes Unitários |  | 12d | 2019-01-23 | 2019-02-07 | 172 | 2019-01-23 | 2019-02-07 | 12d | 203d | 0d | WeDo | 96h |
| 174 | 2.5.3 | Elaborar Runbook |  | 2d | 2019-02-08 | 2019-02-11 | 173 | 2019-02-08 | 2019-02-11 | 2d | 214d |  | WeDo | 16h |
| 175 | 2.5.4 | Testes de Sistema |  | 3d | 2019-02-08 | 2019-02-12 | 173 | 2019-02-08 | 2019-02-12 | 3d | 203d | 0d | WeDo | 24h |
| 176 | 2.5.5 | Testes Integrados |  | 1d | 2019-02-13 | 2019-02-13 | 175 | 2019-02-13 | 2019-02-13 | 1d | 203d | 0d | WeDo; Oi | 16h |
| 177 | 2.5.6 | UAT |  | 3d | 2019-02-14 | 2019-02-18 | 176 | 2019-02-14 | 2019-02-18 | 3d | 209d |  | WeDo; Oi | 48h |
| 178 | 2.5.7 | Elaborar PLIM |  | 2d | 2019-02-14 | 2019-02-15 | 176 | 2019-02-14 | 2019-02-15 | 2d | 203d | 0d | WeDo | 16h |
| 179 | 2.5.8 | Implantação |  | 2d | 2019-02-18 | 2019-02-19 | 178 | 2019-02-18 | 2019-02-19 | 2d | 203d | 0d | WeDo | 16h |
| 180 | 2.5.9 | Operação Assistida |  | 5d | 2019-02-20 | 2019-02-26 | 179 | 2019-02-20 | 2019-02-26 | 5d | 203d | 0d |  |  |
| 181 | 2.5.10 | Onda 15 - Alarmes Externos - Finalizado | milestone | 0d | 2019-02-26 | 2019-02-26 | 180 | 2019-02-26 | 2019-02-26 | 0d | 203d |  |  |  |
| 182 | 2.6 | **ONDAS 16 e 18: Carga + Motor Uso - Tráfego (Móvel, Fixa, VOD, VoIP, TV)** |  | 105d | 2018-10-18 | 2019-03-25 |  | 2018-10-18 | 2019-03-25 | 105d | 0d |  |  | 1168h |
| 183 | 2.6.1 | Análise (Desenho de Solução, Especificação Técnica, Cenários de Teste e Critérios de Aceitação) |  | 15d | 2018-10-18 | 2018-11-08 | 156SS | 2018-10-18 | 2018-11-08 | 15d | 0d |  | WeDo; Oi | 240h |
| 184 | 2.6.2 | Construção e Testes Unitários |  | 60d | 2018-11-09 | 2019-02-07 | 183 | 2018-11-09 | 2019-02-07 | 60d | 0d |  | WeDo | 480h |
| 185 | 2.6.3 | Elaborar Runbook |  | 2d | 2019-02-08 | 2019-02-11 | 184 | 2019-02-08 | 2019-02-11 | 2d | 214d |  | WeDo | 16h |
| 186 | 2.6.4 | Testes de Sistema |  | 10d | 2019-02-08 | 2019-02-21 | 184 | 2019-02-08 | 2019-02-21 | 10d | 0d |  | WeDo | 80h |
| 187 | 2.6.5 | Testes Integrados |  | 10d | 2019-02-22 | 2019-03-11 | 186 | 2019-02-22 | 2019-03-11 | 10d | 0d |  | WeDo; Oi | 160h |
| 188 | 2.6.6 | UAT |  | 10d | 2019-03-12 | 2019-03-25 | 187 | 2019-03-12 | 2019-03-25 | 10d | 186d |  | WeDo; Oi | 160h |
| 189 | 2.6.7 | Elaborar PLIM |  | 2d | 2019-03-12 | 2019-03-13 | 187 | 2019-03-12 | 2019-03-13 | 2d | 0d |  | WeDo | 16h |
| 190 | 2.6.8 | Implantação |  | 2d | 2019-03-14 | 2019-03-15 | 189 | 2019-03-14 | 2019-03-15 | 2d | 0d |  | WeDo | 16h |
| 191 | 2.6.9 | ONDAS 16 e 18: Carga + Motor Uso - Tráfego (Móvel, Fixa, VOD, VoIP, TV) - Finalizada | milestone | 0d | 2019-03-15 | 2019-03-15 | 190 | 2019-03-15 | 2019-03-15 | 0d | 0d |  |  |  |

Notes:
- 171: Tratamento de eventos de risco (ver planilha de macro requisitos)
- 182: validar com Jaca motor (mesmo da móvel)

| ID | WBS | Task | Type | Duration | Start | Finish | Predecessors | Baseline start | Baseline finish | Baseline duration | Total slack | Free slack | Resources | Work |
| --- | --- | --- | --- | --- | --- | --- | --- | --- | --- | --- | --- | --- | --- | --- |
| 192 | 2.7 | **ONDA 17: Motor Detecção - Tráfego** |  | 49d | 2019-03-18 | 2019-05-24 |  | 2019-03-18 | 2019-05-24 | 49d | 0d |  |  | 544h |
| 193 | 2.7.1 | Análise (Desenho de Solução, Especificação Técnica, Cenários de Teste e Critérios de Aceitação) |  | 10d | 2019-03-18 | 2019-03-29 | 191, 179 | 2019-03-18 | 2019-03-29 | 10d | 0d |  | WeDo; Oi | 160h |
| 194 | 2.7.2 | Construção e Testes Unitários |  | 23d | 2019-04-01 | 2019-05-02 | 193 | 2019-04-01 | 2019-05-02 | 23d | 0d |  | WeDo | 184h |
| 195 | 2.7.3 | Elaborar Runbook |  | 2d | 2019-05-03 | 2019-05-06 | 194 | 2019-05-03 | 2019-05-06 | 2d | 157d |  | WeDo | 16h |
| 196 | 2.7.4 | Testes de Sistema |  | 5d | 2019-05-03 | 2019-05-09 | 194 | 2019-05-03 | 2019-05-09 | 5d | 0d |  | WeDo | 40h |
| 197 | 2.7.5 | Testes Integrados |  | 2d | 2019-05-10 | 2019-05-13 | 196 | 2019-05-10 | 2019-05-13 | 2d | 0d |  | WeDo; Oi | 32h |
| 198 | 2.7.6 | UAT |  | 5d | 2019-05-14 | 2019-05-20 | 197 | 2019-05-14 | 2019-05-20 | 5d | 147d |  | WeDo; Oi | 80h |
| 199 | 2.7.7 | Elaborar PLIM |  | 2d | 2019-05-14 | 2019-05-15 | 197 | 2019-05-14 | 2019-05-15 | 2d | 0d |  | WeDo | 16h |
| 200 | 2.7.8 | Implantação |  | 2d | 2019-05-16 | 2019-05-17 | 199 | 2019-05-16 | 2019-05-17 | 2d | 0d |  | WeDo | 16h |
| 201 | 2.7.9 | Operação Assistida |  | 5d | 2019-05-20 | 2019-05-24 | 200 | 2019-05-20 | 2019-05-24 | 5d | 0d |  |  |  |
| 202 | 2.7.10 | Onda 17 - Motor Detecção - Tráfego | milestone | 0d | 2019-05-24 | 2019-05-24 | 201, 200 | 2019-05-24 | 2019-05-24 | 0d | 0d |  |  |  |
| 203 | 2.8 | **ONDA 19: Recargas Pre-Pago** |  | 15d | 2019-05-27 | 2019-06-14 |  | 2019-05-27 | 2019-06-14 | 15d | 0d |  |  | 176h |
| 204 | 2.8.1 | Análise (Desenho de Solução, Especificação Técnica, Cenários de Teste e Critérios de Aceitação) |  | 3d | 2019-05-27 | 2019-05-29 | 202 | 2019-05-27 | 2019-05-29 | 3d | 0d |  | WeDo; Oi | 48h |
| 205 | 2.8.2 | Construção e Testes Unitários |  | 8d | 2019-05-30 | 2019-06-10 | 204 | 2019-05-30 | 2019-06-10 | 8d | 0d |  | WeDo | 64h |
| 206 | 2.8.3 | Elaborar Runbook |  | 1d | 2019-06-11 | 2019-06-11 | 205 | 2019-06-11 | 2019-06-11 | 1d | 131d |  | WeDo | 8h |
| 207 | 2.8.4 | Testes de Sistema |  | 1d | 2019-06-11 | 2019-06-11 | 205 | 2019-06-11 | 2019-06-11 | 1d | 0d |  | WeDo | 8h |
| 208 | 2.8.5 | Testes Integrados |  | 1d | 2019-06-12 | 2019-06-12 | 207 | 2019-06-12 | 2019-06-12 | 1d | 0d |  | WeDo; Oi | 16h |
| 209 | 2.8.6 | UAT |  | 1d | 2019-06-13 | 2019-06-13 | 208 | 2019-06-13 | 2019-06-13 | 1d | 129d |  | WeDo; Oi | 16h |
| 210 | 2.8.7 | Elaborar PLIM |  | 1d | 2019-06-13 | 2019-06-13 | 208 | 2019-06-13 | 2019-06-13 | 1d | 0d |  | WeDo | 8h |
| 211 | 2.8.8 | Implantação |  | 1d | 2019-06-14 | 2019-06-14 | 210 | 2019-06-14 | 2019-06-14 | 1d | 0d |  | WeDo | 8h |
| 212 | 2.8.9 | Onda 19 - Recargas Pre-Pago - Finalizada | milestone | 0d | 2019-06-14 | 2019-06-14 | 211 | 2019-06-14 | 2019-06-14 | 0d | 128d |  |  |  |
| 213 | 2.9 | **ONDA 20: Criação de telas para operação (detecção de fraude Fixa R1, detecção de fraude Fixa R2, detecção de fraude TV, detecção de fraude Movel e Oi Total** |  | 55d | 2019-06-17 | 2019-09-02 |  | 2019-06-17 | 2019-09-02 | 55d | 0d |  |  | 712h |
| 214 | 2.9.1 | Análise (Desenho de Solução, Especificação Técnica, Cenários de Teste e Critérios de Aceitação) |  | 10d | 2019-06-17 | 2019-07-01 | 211, 212 | 2019-06-17 | 2019-07-01 | 10d | 0d |  | WeDo; Oi | 160h |
| 215 | 2.9.2 | Construção e Testes Unitários |  | 24d | 2019-07-02 | 2019-08-02 | 214 | 2019-07-02 | 2019-08-02 | 24d | 0d |  | WeDo | 192h |
| 216 | 2.9.3 | Elaborar Runbook |  | 2d | 2019-08-05 | 2019-08-06 | 215 | 2019-08-05 | 2019-08-06 | 2d | 92d |  | WeDo | 16h |
| 217 | 2.9.4 | Testes de Sistema |  | 5d | 2019-08-05 | 2019-08-09 | 215 | 2019-08-05 | 2019-08-09 | 5d | 0d |  | WeDo | 40h |
| 218 | 2.9.5 | Testes Integrados |  | 2d | 2019-08-12 | 2019-08-13 | 217 | 2019-08-12 | 2019-08-13 | 2d | 0d |  | WeDo; Oi | 32h |
| 219 | 2.9.6 | UAT |  | 5d | 2019-08-14 | 2019-08-20 | 218 | 2019-08-14 | 2019-08-20 | 5d | 82d |  | WeDo; Oi | 80h |
| 220 | 2.9.7 | Elaborar PLIM |  | 2d | 2019-08-14 | 2019-08-15 | 218 | 2019-08-14 | 2019-08-15 | 2d | 0d |  | WeDo | 16h |
| 221 | 2.9.8 | Implantação |  | 2d | 2019-08-16 | 2019-08-19 | 220 | 2019-08-16 | 2019-08-19 | 2d | 0d |  | WeDo | 16h |
| 222 | 2.9.9 | Operação Assistida |  | 10d | 2019-08-20 | 2019-09-02 | 221 | 2019-08-20 | 2019-09-02 | 10d | 73d | 0d | WeDo; Oi | 160h |
| 223 | 2.9.10 | Onda 20 - Criação de telas para operação (detecção de fraude Fixa R1, detecção de fraude Fixa R2, detecção de fraude TV, detecção de fraude Movel e Oi Total - Finalizada | milestone | 0d | 2019-09-02 | 2019-09-02 | 222 | 2019-09-02 | 2019-09-02 | 0d | 73d |  |  |  |

Notes:
- 192: validar com Jaca motor (mesmo da fixa) - atividade paralelizada com onda 16

| ID | WBS | Task | Type | Duration | Start | Finish | Predecessors | Baseline start | Baseline finish | Baseline duration | Total slack | Free slack | Resources | Work |
| --- | --- | --- | --- | --- | --- | --- | --- | --- | --- | --- | --- | --- | --- | --- |
| 224 | 2.10 | **ONDA 21: Pós Tratamento da Fraude (Regras de Desbloqueio)** |  | 40d | 2019-08-20 | 2019-10-14 |  | 2019-08-20 | 2019-10-14 | 40d | 0d |  |  | 544h |
| 225 | 2.10.1 | Análise (Desenho de Solução, Especificação Técnica, Cenários de Teste e Critérios de Aceitação) |  | 5d | 2019-08-20 | 2019-08-26 | 221 | 2019-08-20 | 2019-08-26 | 5d | 0d |  | WeDo; Oi | 80h |
| 226 | 2.10.2 | Construção e Testes Unitários |  | 15d | 2019-08-27 | 2019-09-16 | 225 | 2019-08-27 | 2019-09-16 | 15d | 0d |  | WeDo | 120h |
| 227 | 2.10.3 | Elaborar Runbook |  | 2d | 2019-09-17 | 2019-09-18 | 226 | 2019-09-17 | 2019-09-18 | 2d | 61d |  | WeDo | 16h |
| 228 | 2.10.4 | Testes de Sistema |  | 4d | 2019-09-17 | 2019-09-20 | 226 | 2019-09-17 | 2019-09-20 | 4d | 0d |  | WeDo | 32h |
| 229 | 2.10.5 | Testes Integrados |  | 3d | 2019-09-23 | 2019-09-25 | 228 | 2019-09-23 | 2019-09-25 | 3d | 0d |  | WeDo; Oi | 48h |
| 230 | 2.10.6 | UAT |  | 4d | 2019-09-26 | 2019-10-01 | 229 | 2019-09-26 | 2019-10-01 | 4d | 52d |  | WeDo; Oi | 64h |
| 231 | 2.10.7 | Elaborar PLIM |  | 2d | 2019-09-26 | 2019-09-27 | 229 | 2019-09-26 | 2019-09-27 | 2d | 0d |  | WeDo | 16h |
| 232 | 2.10.8 | Implantação |  | 1d | 2019-09-30 | 2019-09-30 | 231 | 2019-09-30 | 2019-09-30 | 1d | 0d |  | WeDo | 8h |
| 233 | 2.10.9 | Operação Assistida |  | 10d | 2019-10-01 | 2019-10-14 | 232 | 2019-10-01 | 2019-10-14 | 10d | 43d | 0d | WeDo; Oi | 160h |
| 234 | 2.10.10 | Onda 21 - Pos Tratamento da Fraude Regras de desbloqueio - Finalizada | milestone | 0d | 2019-10-14 | 2019-10-14 | 233 | 2019-10-14 | 2019-10-14 | 0d | 43d |  |  |  |
| 235 | 2.11 | **ONDA 22: Pós Tratamento da Fraude (Integração Fat, Cob e Contest)** |  | 50d | 2019-10-01 | 2019-12-11 |  | 2019-10-01 | 2019-12-11 | 50d | 0d |  |  | 520h |
| 236 | 2.11.1 | Análise (Desenho de Solução, Especificação Técnica, Cenários de Teste e Critérios de Aceitação) |  | 10d | 2019-10-01 | 2019-10-14 | 232 | 2019-10-01 | 2019-10-14 | 10d | 0d |  | WeDo; Oi | 160h |
| 237 | 2.11.2 | Construção e Testes Unitários |  | 25d | 2019-10-15 | 2019-11-20 | 236 | 2019-10-15 | 2019-11-20 | 25d | 0d |  | WeDo | 200h |
| 238 | 2.11.3 | Elaborar Runbook |  | 2d | 2019-11-21 | 2019-11-22 | 237 | 2019-11-21 | 2019-11-22 | 2d | 16d |  | WeDo | 16h |
| 239 | 2.11.4 | Testes de Sistema |  | 4d | 2019-11-21 | 2019-11-26 | 237 | 2019-11-21 | 2019-11-26 | 4d | 3d | 0d | WeDo | 32h |
| 240 | 2.11.5 | Testes Integrados |  | 2d | 2019-11-27 | 2019-11-28 | 239 | 2019-11-27 | 2019-11-28 | 2d | 3d | 0d | WeDo; Oi | 32h |
| 241 | 2.11.6 | UAT |  | 3d | 2019-11-29 | 2019-12-03 | 240 | 2019-11-29 | 2019-12-03 | 3d | 9d |  | WeDo; Oi | 48h |
| 242 | 2.11.7 | Elaborar PLIM |  | 2d | 2019-11-29 | 2019-12-02 | 240 | 2019-11-29 | 2019-12-02 | 2d | 3d | 0d | WeDo | 16h |
| 243 | 2.11.8 | Implantação |  | 2d | 2019-12-03 | 2019-12-04 | 242 | 2019-12-03 | 2019-12-04 | 2d | 3d | 0d | WeDo | 16h |
| 244 | 2.11.9 | Operação Assistida |  | 5d | 2019-12-05 | 2019-12-11 | 243 | 2019-12-05 | 2019-12-11 | 5d | 3d | 0d |  |  |
| 245 | 2.11.10 | Onda 22 - Pos Tratamento da Fraude - Finalizada | milestone | 0d | 2019-12-11 | 2019-12-11 | 244 | 2019-12-11 | 2019-12-11 | 0d | 3d |  |  |  |
| 246 | 2.12 | **Treinamento Help Desk (FMS-06)** |  | 3d | 2019-11-21 | 2019-11-25 |  | 2019-11-21 | 2019-11-25 | 3d | 0d |  |  | 40h |
| 247 | 2.12.1 | Elaborar material |  | 1d | 2019-11-21 | 2019-11-21 | 237 | 2019-11-21 | 2019-11-21 | 1d | 0d |  | WeDo | 8h |
| 248 | 2.12.2 | Ambiente disponibilizado | milestone | 0d | 2019-11-21 | 2019-11-21 | 247 | 2019-11-21 | 2019-11-21 | 0d | 0d |  | Oi |  |
| 249 | 2.12.3 | Realizar Treinamento |  | 2d | 2019-11-22 | 2019-11-25 | 248 | 2019-11-22 | 2019-11-25 | 2d | 0d |  | WeDo; Oi | 32h |
| 250 | 2.12.4 | Treinamento Usuário Finalizado | milestone | 0d | 2019-11-25 | 2019-11-25 | 249 | 2019-11-25 | 2019-11-25 | 0d | 0d |  |  |  |

Notes:
- 246: SERÁ MANTIDO? PODE SER SEQUENCIAL APOS A ULTIMA ONDA?

| ID | WBS | Task | Type | Duration | Start | Finish | Predecessors | Baseline start | Baseline finish | Baseline duration | Total slack | Resources | Work |
| --- | --- | --- | --- | --- | --- | --- | --- | --- | --- | --- | --- | --- | --- |
| 251 | 2.13 | **Treinamento Administração Funcional (FMS-03)** |  | 5d | 2019-11-26 | 2019-12-02 |  | 2019-11-26 | 2019-12-02 | 5d | 0d |  | 64h |
| 252 | 2.13.1 | Elaborar material |  | 2d | 2019-11-26 | 2019-11-27 | 250 | 2019-11-26 | 2019-11-27 | 2d | 0d | WeDo | 16h |
| 253 | 2.13.2 | Ambiente disponibilizado | milestone | 0d | 2019-11-27 | 2019-11-27 | 252 | 2019-11-27 | 2019-11-27 | 0d | 0d | Oi |  |
| 254 | 2.13.3 | Realizar Treinamento |  | 3d | 2019-11-28 | 2019-12-02 | 253 | 2019-11-28 | 2019-12-02 | 3d | 0d | WeDo; Oi | 48h |
| 255 | 2.13.4 | Treinamento Administração Funcional Finalizado | milestone | 0d | 2019-12-02 | 2019-12-02 | 254 | 2019-12-02 | 2019-12-02 | 0d | 0d |  |  |
| 256 | 2.14 | **Treinamento Administração Técnica (FMS-02)** |  | 6d | 2019-12-03 | 2019-12-10 |  | 2019-12-03 | 2019-12-10 | 6d | 0d |  | 72h |
| 257 | 2.14.1 | Elaborar material |  | 3d | 2019-12-03 | 2019-12-05 | 255 | 2019-12-03 | 2019-12-05 | 3d | 0d | WeDo | 24h |
| 258 | 2.14.2 | Ambiente disponibilizado | milestone | 0d | 2019-12-05 | 2019-12-05 | 257 | 2019-12-05 | 2019-12-05 | 0d | 0d | Oi |  |
| 259 | 2.14.3 | Realizar Treinamento |  | 3d | 2019-12-06 | 2019-12-10 | 258 | 2019-12-06 | 2019-12-10 | 3d | 0d | WeDo; Oi | 48h |
| 260 | 2.14.4 | Treinamento Administração Técnica Finalizado | milestone | 0d | 2019-12-10 | 2019-12-10 | 259 | 2019-12-10 | 2019-12-10 | 0d | 0d |  |  |
| 261 | 2.15 | **Treinamento Usuário (FMS-04)** |  | 4d | 2019-12-11 | 2019-12-16 |  | 2019-12-11 | 2019-12-16 | 4d | 0d |  | 48h |
| 262 | 2.15.1 | Elaborar material |  | 2d | 2019-12-11 | 2019-12-12 | 260 | 2019-12-11 | 2019-12-12 | 2d | 0d | WeDo | 16h |
| 263 | 2.15.2 | Ambiente disponibilizado | milestone | 0d | 2019-12-12 | 2019-12-12 | 262 | 2019-12-12 | 2019-12-12 | 0d | 0d | Oi |  |
| 264 | 2.15.3 | Realizar Treinamento |  | 2d | 2019-12-13 | 2019-12-16 | 263 | 2019-12-13 | 2019-12-16 | 2d | 0d | WeDo; Oi | 32h |
| 265 | 2.15.4 | Treinamento Usuário Finalizado | milestone | 0d | 2019-12-16 | 2019-12-16 | 264 | 2019-12-16 | 2019-12-16 | 0d | 0d |  |  |
