# MPP_BR.A.16.POI.039.00 - PROJETO FRAUDE OI

Schedule from MS Project, 2017-09-04 to 2020-01-24, status date 2018-01-26, A marks actual dates.
SSI

## Calendars

- Standard: Mon-Fri 08:00-12:00, 13:00-17:00; Sat-Sun off. Exceptions (off unless hours are given): 2017-09-07 to 2020-09-07 (Feriado Sete Setembro, recurring), 2017-10-12 to 2020-10-12 (Nsa Aparecida, recurring), 2017-10-16 to 2019-10-16 (Dia do Informática, recurring), 2017-11-02 to 2020-11-02 (Finados, recurring), 2017-11-15 to 2020-11-15 (Republica, recurring), 2017-12-25 to 2020-12-25 (Natal, recurring), 2017-12-31 to 2019-12-31 (Vespera Ano Novo, recurring), 2018-01-01 to 2021-01-01 (Ano Novo, recurring), 2018-02-12 to 2018-02-13 (Carnaval 2018), 2018-03-30 (Semana Santa), 2018-04-21 to 2019-04-21 (Tiradentes, recurring), 2018-05-01 to 2020-05-01 (Dia do Trabalho, recurring), 2018-05-31 (Corpus Christi 2018), 2018-12-24 to 2020-12-24 (Vespera Natal, recurring), 2019-03-04 to 2019-03-05 (Carnaval 2019), 2019-06-20 (Corpus Christi 2019).

## Resources

| Resource |
| --- |
| Andre Jacomino |
| Nuno Pestana |
| WeDo |
| Oi |
| Fraude |
| Ti |
| Oi/DIEO/WEDO |
| Operações |
| WeDO/Operações |
| DIEO |
| Oi-Operações |
| WeDO/Oi-Operações |
| Oi-TI |
| Oi-Fraude/TI |
| Oi-Fraude |
| Oi-DIEO |
| Jacomino |
| Giullyan |
| Mariá Sumienski |
| Plácido Cavalcante |
| WAC |

## Schedule

| ID | WBS | Task | Type | Duration | Start | Finish | Predecessors | Complete | Remaining | Actual finish | Baseline start | Baseline finish | Baseline duration | Baseline 1 start | Baseline 1 finish | Total slack | Free slack | Constraint | Resources | Work | Actual work |
| --- | --- | --- | --- | --- | --- | --- | --- | --- | --- | --- | --- | --- | --- | --- | --- | --- | --- | --- | --- | --- | --- |
| 1 | 1 | **Projeto RAID FMS OI - Programa 1** |  | 341d | 2017-09-04 A | 2019-01-22 |  | 42% | 197.72d |  | 2017-09-04 | 2019-01-03 | 328d | 2017-09-04 | 2019-01-03 | 253d |  |  |  | 9881h | 5394.94h |
| 2 | 1.1 | **Aquisição de Infra-estrutura** |  | 235d | 2017-09-18 A | 2018-08-27 |  | 75% | 58.75d |  | 2017-09-18 | 2018-08-27 | 235d | 2017-09-18 | 2018-08-27 | 350d |  |  |  | 552h | 376h |
| 3 | 1.1.1 | **Acessos Lógicos** |  | 10d | 2017-09-18 A | 2017-09-29 A |  | 100% |  |  | 2017-09-18 | 2017-09-29 | 10d | 2017-09-18 | 2017-09-29 |  |  |  |  | 80h | 80h |
| 4 | 1.1.1.1 | Enviar dados de acesso e contas de serviço |  | 3d | 2017-09-18 A | 2017-09-20 A |  | 100% |  |  | 2017-09-18 | 2017-09-20 | 3d | 2017-09-18 | 2017-09-20 |  |  |  | WeDo | 24h | 24h |
| 5 | 1.1.1.2 | Liberar acessos |  | 7d | 2017-09-21 A | 2017-09-29 A | 4 | 100% |  |  | 2017-09-21 | 2017-09-29 | 7d | 2017-09-21 | 2017-09-29 |  |  |  | Oi | 56h | 56h |
| 6 | 1.1.1.3 | Acessos Lógicos Liberados | milestone | 0d | 2017-09-29 A | 2017-09-29 A | 5 | 100% |  |  | 2017-09-29 | 2017-09-29 | 0d | 2017-09-29 | 2017-09-29 |  |  |  |  |  |  |
| 7 | 1.1.2 | Ambiente de DEV disponível (RAID FMS) |  | 18d | 2017-12-04 A | 2017-12-29 A |  | 100% |  |  | 2017-11-29 | 2017-11-29 | 1d | 2017-11-29 | 2017-11-29 |  |  | start no earlier than 2017-12-04 | Oi-TI | 144h | 144h |
| 8 | 1.1.3 | Instalação Vanila Ambiente DEV (RAID FMS) |  | 3d | 2017-12-29 A | 2018-01-04 A | 7 | 100% |  |  | 2017-11-30 | 2017-12-05 | 4d | 2017-11-30 | 2017-12-05 |  |  | start no earlier than 2017-12-11 | Giullyan; Jacomino | 48h | 48h |
| 9 | 1.1.4 | Ambiente de DEV contingência disponível (RAID UC - HML) |  | 1d | 2017-10-30 A | 2017-10-30 A |  | 100% |  |  | 2017-10-27 | 2017-10-27 | 1d | 2017-10-27 | 2017-10-27 |  |  | must finish on 2017-10-26 | Oi-TI | 8h | 8h |
| 10 | 1.1.5 | Instalação Vanila DEV contingência (RAID UC - HML) |  | 4d | 2017-10-30 A | 2017-11-03 A | 9 | 100% |  |  | 2017-10-30 | 2017-11-03 | 4d | 2017-10-30 | 2017-11-03 |  |  |  | WeDo; Giullyan; Jacomino | 96h | 96h |
| 11 | 1.1.6 | Ambiente de HML disponível (RAID FMS) |  | 1d | 2018-05-15 | 2018-05-15 |  |  |  |  | 2018-05-15 | 2018-05-15 | 1d | 2018-05-15 | 2018-05-15 | 418d | 0d | start no earlier than 2018-05-15 | Oi-TI | 8h |  |
| 12 | 1.1.7 | Instalação Vanila Ambiente HML (RAID FMS) |  | 5d | 2018-05-16 | 2018-05-22 | 11 |  |  |  | 2018-05-16 | 2018-05-22 | 5d | 2018-05-16 | 2018-05-22 | 418d |  |  | Giullyan; Jacomino | 80h |  |
| 13 | 1.1.8 | Ambiente de PRD disponível (RAID FMS) |  | 1d | 2018-08-20 | 2018-08-20 |  |  |  |  | 2018-08-20 | 2018-08-20 | 1d | 2018-08-20 | 2018-08-20 | 350d | 0d | start no earlier than 2018-08-20 | Oi-TI | 8h |  |
| 14 | 1.1.9 | Instalação Vanila Ambiente PRD (RAID FMS) |  | 5d | 2018-08-21 | 2018-08-27 | 13 |  |  |  | 2018-08-21 | 2018-08-27 | 5d | 2018-08-21 | 2018-08-27 | 350d |  |  | Giullyan; Jacomino | 80h |  |
| 15 | 1.2 | **ONDA 0: Planejamento e Setup** |  | 90.12d | 2017-09-18 A | 2018-01-30 |  | 99% | 0d |  | 2017-09-18 | 2017-11-09 | 36d | 2017-09-18 | 2017-11-09 | 494.88d |  |  |  | 240h | 240h |
| 16 | 1.2.1 | Acessos Físicos Liberados | milestone | 0d | 2017-09-18 A | 2017-09-18 A |  | 100% |  |  | 2017-09-18 | 2017-09-18 | 0d | 2017-09-18 | 2017-09-18 |  |  |  | Oi; WeDo |  |  |
| 17 | 1.2.2 | Elaborar Plano de Desenvolvimento do Projeto (PDP) |  | 26d | 2017-09-26 A | 2017-11-03 A |  | 100% |  |  | 2017-09-26 | 2017-10-13 | 13d | 2017-09-26 | 2017-10-13 |  |  | finish no earlier than 2017-11-03 | Plácido Cavalcante | 208h | 208h |
| 18 | 1.2.3 | Elaborar Material kick-off | manual | 4d | 2017-10-09 A | 2017-10-13 A |  | 100% |  |  | 2017-10-09 | 2017-10-13 | 4d | 2017-10-09 | 2017-10-13 |  |  |  | Oi | 32h | 32h |
| 19 | 1.2.4 | Reunião de Kick-off | milestone | 0d | 2018-01-30 | 2018-01-30 | 17, 18 |  |  |  | 2017-11-09 | 2017-11-09 | 1d | 2017-11-09 | 2017-11-09 | 0d |  | must start on 2018-01-30 | WeDo; Oi |  |  |
| 20 | 1.2.5 | Onda 0 - Planejamento e Setup - Finalizada | milestone | 0d | 2018-01-30 | 2018-01-30 | 19 |  |  |  | 2017-11-09 | 2017-11-09 | 0d | 2017-11-09 | 2017-11-09 | 494.88d |  |  |  |  |  |
| 21 | 1.3 | **Treinamento - Conceitos Básicos - Teoria (FMS-01)** |  | 6d | 2017-10-10 A | 2017-10-19 |  | 100% |  | 2017-10-18 | 2017-10-10 | 2017-10-19 | 6d | 2017-10-10 | 2017-10-19 |  |  |  |  | 40h | 40h |
| 22 | 1.3.1 | Elaborar material |  | 4d | 2017-10-10 A | 2017-10-17 A |  | 100% |  |  | 2017-10-10 | 2017-10-17 | 4d | 2017-10-10 | 2017-10-17 |  |  |  | Giullyan | 32h | 32h |
| 23 | 1.3.2 | Ambiente disponibilizado | milestone | 0d | 2017-10-17 A | 2017-10-17 A | 22 | 100% |  |  | 2017-10-17 | 2017-10-17 | 0d | 2017-10-17 | 2017-10-17 |  |  |  | Oi |  |  |
| 24 | 1.3.3 | Realizar Treinamento |  | 1d | 2017-10-18 A | 2017-10-18 A | 23 | 100% |  |  | 2017-10-18 | 2017-10-18 | 1d | 2017-10-18 | 2017-10-18 |  |  |  | Giullyan | 8h | 8h |
| 25 | 1.3.4 | Treinamento Finalizado | milestone | 0d | 2017-10-18 A | 2017-10-18 A | 24 | 100% |  |  | 2017-10-18 | 2017-10-18 | 0d | 2017-10-18 | 2017-10-18 |  |  |  |  |  |  |

Notes:
- 7: Contingencia será ambiente RAID UC (aguardando chegada do serv. novo)

| ID | WBS | Task | Type | Duration | Start | Finish | Predecessors | Complete | Remaining | Actual start | Baseline start | Baseline finish | Baseline duration | Baseline 1 start | Baseline 1 finish | Total slack | Free slack | Constraint | Resources | Work | Actual work |
| --- | --- | --- | --- | --- | --- | --- | --- | --- | --- | --- | --- | --- | --- | --- | --- | --- | --- | --- | --- | --- | --- |
| 26 | 1.4 | **ONDA 2: TV Offline (Quick Wins - Motor de Fraude)** |  | 87d | 2017-10-04 A | 2018-02-09 |  | 95% | 4.28d |  | 2017-10-04 | 2018-02-05 | 83d | 2017-10-04 | 2018-02-05 |  |  |  |  | 4985h | 4633.94h |
| 27 | 1.4.1 | **Detalhamento de regras de negócio e critérios de aceitação** |  | 12d | 2017-10-04 A | 2017-10-23 A |  | 100% |  |  | 2017-10-04 | 2017-10-23 | 12d | 2017-10-04 | 2017-10-23 |  |  |  |  | 104h | 104h |
| 28 | 1.4.1.1 | 1o lote de regras para validação TI/WEDO (fontes de dados ainda indefinidas) |  | 3d | 2017-10-04 A | 2017-10-06 A |  | 100% |  |  | 2017-10-04 | 2017-10-06 | 3d | 2017-10-04 | 2017-10-06 |  |  |  | Oi-Fraude/TI | 24h | 24h |
| 29 | 1.4.1.2 | 2o lote de regras para validação TI/WEDO |  | 8d | 2017-10-04 A | 2017-10-17 A | 28 | 100% |  |  | 2017-10-04 | 2017-10-17 | 8d | 2017-10-04 | 2017-10-17 |  |  |  | Oi-Fraude/TI | 64h | 64h |
| 30 | 1.4.1.3 | Entrega versão final da documentação de regras (Definir entregas Onda) |  | 1d | 2017-10-23 A | 2017-10-23 A | 29 | 100% |  |  | 2017-10-23 | 2017-10-23 | 1d | 2017-10-23 | 2017-10-23 |  |  | start no earlier than 2017-10-23 | Oi-Fraude/TI; WeDo | 16h | 16h |
| 31 | 1.4.2 | Validação do detalhamento de regras e criterios de aceitação |  | 3d | 2017-10-24 A | 2017-10-26 A | 29 | 100% |  |  | 2017-10-24 | 2017-10-26 | 3d | 2017-10-24 | 2017-10-26 |  |  | start no earlier than 2017-10-24 | Oi-Fraude | 24h | 24h |
| 32 | 1.4.3 | Elaboração DAS de Arquitetura-Oi |  | 8d | 2017-10-13 A | 2017-10-25 A |  | 100% |  |  | 2017-10-17 | 2017-10-25 | 7d | 2017-10-17 | 2017-10-25 |  |  | start no earlier than 2017-10-17 | Oi-TI | 64h | 64h |
| 33 | 1.4.4 | **Análise (Desenho de Solução, Plano de Testes e Critérios de Aceitação)** |  | 22d | 2017-10-23 A | 2017-11-23 |  | 99% | 0d |  | 2017-10-23 | 2017-11-14 | 16d | 2017-10-23 | 2017-11-14 |  |  | start no earlier than 2017-10-23 | WeDo; Oi-TI | 536h | 424.94h |
| 34 | 1.4.4.1 | Elaboração de DSOL |  | 12d | 2017-10-23 A | 2017-11-08 A |  | 100% |  |  | 2017-10-23 | 2017-11-08 | 12d | 2017-10-23 | 2017-11-08 |  |  |  | Giullyan; Jacomino | 96h | 96h |
| 35 | 1.4.4.2 | Aprovação de DSOL |  | 1d | 2017-11-08 A | 2017-11-09 A | 34FF | 100% |  |  | 2017-11-08 | 2017-11-08 | 1d | 2017-11-08 | 2017-11-08 |  |  |  | Oi-Fraude/TI | 8h | 8h |
| 36 | 1.4.4.3 | Elaboração de Plano de Testes Consolidado |  | 8d | 2017-11-09 A | 2017-11-21 A | 34, 30 | 100% |  |  | 2017-11-09 | 2017-11-13 | 3d | 2017-11-09 | 2017-11-13 |  |  |  | Mariá Sumienski | 64h | 64h |
| 37 | 1.4.4.4 | Aprovação de Plano de Testes Consolidado |  | 2d | 2017-11-22 A | 2017-11-23 A | 36 | 100% |  |  | 2017-11-14 | 2017-11-14 | 1d | 2017-11-14 | 2017-11-14 |  |  |  | Oi-Fraude/TI | 16h | 16h |
| 38 | 1.4.5 | **Construção e Testes Unitários (DEV contingência - RAID UC/HML)** |  | 31d | 2017-11-13 A | 2017-12-27 A | 10, 35, 33 | 100% |  |  |  |  |  |  |  |  |  | start no earlier than 2017-11-13 |  | 2976h | 2976h |
| 39 | 1.4.5.1 | Carregamentos | manual | 31d | 2017-11-13 A | 2017-12-27 A |  | 100% |  |  |  |  |  |  |  |  |  |  | Nuno Pestana; Jacomino; Giullyan | 744h | 744h |
| 40 | 1.4.5.2 | Motor de Fraude | manual | 31d | 2017-11-13 A | 2017-12-27 A |  | 100% |  |  |  |  |  |  |  |  |  |  | Nuno Pestana; Jacomino; Giullyan | 744h | 744h |
| 41 | 1.4.5.3 | Front End & Workflow | manual | 31d | 2017-11-13 A | 2017-12-27 A |  | 100% |  |  |  |  |  |  |  |  |  |  | Nuno Pestana; Jacomino; Giullyan | 744h | 744h |
| 42 | 1.4.5.4 | Relatórios | manual | 31d | 2017-11-13 A | 2017-12-27 A |  | 100% |  |  |  |  |  |  |  |  |  |  | Nuno Pestana; Jacomino; Giullyan | 744h | 744h |
| 43 | 1.4.6 | Atualização de Servidores DEV Definitivo no CMDB [agente DISCOVER] |  | 4d | 2017-12-04 A | 2017-12-08 A |  | 100% |  |  | 2017-11-30 | 2017-12-06 | 5d | 2017-11-30 | 2017-12-06 |  |  | start no earlier than 2017-12-04 | Oi-TI | 32h | 32h |
| 44 | 1.4.7 | Testes de Sistema (DEV contingência - RAID UC / HML) |  | 7d | 2017-12-29 A | 2018-01-09 A | 38FS+1d | 100% |  |  | 2018-01-02 | 2018-01-05 | 4d | 2018-01-02 | 2018-01-05 |  |  |  | Mariá Sumienski | 56h | 56h |
| 45 | 1.4.8 | Pacote de Implantação (Criação e Instalação: DEV - RAID FMS) |  | 2d | 2018-01-08 A | 2018-01-09 A | 44FF | 100% |  |  | 2018-01-04 | 2018-01-05 | 2d | 2018-01-04 | 2018-01-05 |  |  |  | Jacomino; Giullyan | 32h | 32h |
| 46 | 1.4.9 | UAT (DEV - RAID FMS) |  | 10d | 2018-01-10 A | 2018-01-23 A | 8, 44, 45 | 100% |  |  | 2018-01-08 | 2018-01-11 | 4d | 2018-01-08 | 2018-01-11 |  |  |  | Jacomino; Giullyan | 160h | 160h |
| 47 | 1.4.10 | **Pré-Implantação** |  | 41d | 2017-12-04 A | 2018-02-01 |  | 89% | 4.47d |  | 2017-11-30 | 2018-02-05 | 46d | 2017-11-30 | 2018-02-05 | 6.88d |  |  |  | 913h | 761h |
| 48 | 1.4.10.1 | **Definição responsabilidades N1/N2 [WEDO/Operações]** |  | 12.12d | 2018-01-02 | 2018-01-18 |  | 99% | 0d | 2017-12-28 | 2018-01-02 | 2018-01-15 | 10d | 2018-01-02 | 2018-01-15 |  |  |  | Oi/DIEO/WEDO | 577h | 480h |
| 49 | 1.4.10.1.1 | Definição de arvore de atendimento remedy [CCO/N1/N2/N3] |  | 4d | 2017-12-28 A | 2018-01-04 A | 38 | 100% |  |  | 2018-01-02 | 2018-01-08 | 5d | 2018-01-02 | 2018-01-08 |  |  | start no earlier than 2017-12-28 | WeDo; Oi-Operações; Oi-TI | 96h | 96h |
| 50 | 1.4.10.1.2 | Elaboração de matrix RACI [responsáveis x atividades] |  | 4d | 2017-12-28 A | 2018-01-04 A | 38 | 100% |  |  | 2018-01-02 | 2018-01-08 | 5d | 2018-01-02 | 2018-01-08 |  |  | start no earlier than 2017-12-28 | WeDO/Oi-Operações | 32h | 32h |
| 51 | 1.4.10.1.3 | Elaboração Runbook |  | 4d | 2017-12-28 A | 2018-01-04 A | 38 | 100% |  |  | 2018-01-02 | 2018-01-08 | 5d | 2018-01-02 | 2018-01-08 |  |  | start no earlier than 2017-12-28 | Giullyan; Jacomino | 64h | 64h |
| 52 | 1.4.10.1.4 | Validar/Aprovar Runbook |  | 4d | 2018-01-05 A | 2018-01-11 A | 51 | 100% |  |  | 2018-01-09 | 2018-01-15 | 5d | 2018-01-09 | 2018-01-15 |  |  | start no earlier than 2018-01-05 | Oi-TI; Oi-Operações | 64h | 64h |
| 53 | 1.4.10.1.5 | Elaboração de MOP |  | 13d | 2017-12-28 A | 2018-01-17 A | 38 | 100% |  |  | 2018-01-02 | 2018-01-08 | 5d | 2018-01-02 | 2018-01-08 |  |  | start no earlier than 2017-12-28 | Giullyan; Jacomino | 208h | 208h |
| 54 | 1.4.10.1.6 | Workshop com Operações |  | 1d | 2018-01-17 A | 2018-01-18 A | 53 | 100% |  |  | 2018-01-09 | 2018-01-09 | 1d | 2018-01-09 | 2018-01-09 |  |  | finish no earlier than 2018-01-05 | Oi-TI; Oi-Operações | 16h | 16h |
| 55 | 1.4.10.2 | Construção de Scripts de Monitoração (RAID ou Control-M?) |  | 14d | 2018-01-12 A | 2018-02-01 | 52 | 71% | 4d |  | 2018-01-16 | 2018-02-05 | 15d | 2018-01-16 | 2018-02-05 | 6.88d |  | start no earlier than 2018-01-12 | Oi-Operações | 112h | 80h |
| 56 | 1.4.10.3 | Testes de Conectividade e Transmissão [liberação portas de firewall e gestão de acesso] |  | 4d | 2017-12-04 A | 2017-12-08 A |  | 100% |  |  | 2017-11-30 | 2017-12-06 | 5d | 2017-11-30 | 2017-12-06 |  |  | start no earlier than 2017-12-04 | Oi-TI; Oi-Operações | 64h | 64h |
| 57 | 1.4.10.4 | Elaborar PLIM |  | 2d | 2018-01-10 A | 2018-01-11 A | 44 | 100% |  |  | 2018-01-08 | 2018-01-09 | 2d | 2018-01-08 | 2018-01-09 |  |  |  | Giullyan; Jacomino | 32h | 32h |
| 58 | 1.4.10.5 | Validar/Aprovar PLIM | milestone | 0d | 2018-01-11 A | 2018-01-11 A | 57 | 100% |  |  | 2018-01-09 | 2018-01-09 | 0d | 2018-01-09 | 2018-01-09 |  |  |  | Oi-TI; Oi-Operações |  |  |
| 59 | 1.4.10.6 | Abrir de CRQ |  | 1d | 2018-01-11 A | 2018-01-11 A | 58FF | 100% |  |  | 2018-01-09 | 2018-01-09 | 1d | 2018-01-09 | 2018-01-09 |  |  |  | Oi-TI; Oi-Operações | 16h | 16h |
| 60 | 1.4.10.7 | Aprovar de CRQ |  | 5d | 2018-01-12 A | 2018-01-18 A | 59 | 100% |  |  | 2018-01-10 | 2018-01-16 | 5d | 2018-01-10 | 2018-01-16 |  |  |  | Oi-DIEO | 40h | 40h |
| 61 | 1.4.10.8 | Planejamento/Aprovação de GMUD |  | 5d | 2018-01-24 A | 2018-01-30 | 60, 46 | 43% | 2.88d |  | 2018-01-17 | 2018-01-23 | 5d | 2018-01-17 | 2018-01-23 | 1d | 0d |  | Oi-DIEO | 40h | 17h |
| 62 | 1.4.10.9 | Pacote de Implantação (Criação e Instalação: DEV - RAID FMS) |  | 2d | 2018-01-24 A | 2018-01-25 A | 46 | 100% |  |  | 2018-01-12 | 2018-01-15 | 2d | 2018-01-12 | 2018-01-15 |  |  |  | Giullyan; Jacomino | 32h | 32h |

Notes:
- 27: Data de termino não estava alinhada com atividade 29 / Prazo de 12 passou para 14 dias.
- 28: Antecipei p dia 2, entretanto já está atrasado. / Wedo irá resonder e-mail do Kleyton sobre detalhamento de regras.
- 29: Antecipei p dia 2, junto com atividade anterior.
- 30: Definida a predecessora a atividade 30. / Será o marco para inicio da atividade de Análise/Wedo / Validar escopo e definir requisitos da entrega (Ti/Wedo) - ver com Jacomino melhor data
- 31: Não estava respeitando os links (atividade 28) / Será desconsiderada para inicio da etapa de Análise, por impactar no prazo de inicio (de 23 para 26.out)
- 32: Não estava respeitando o link com a atividade 30.
- 33: Atividade 32 empurrando inicio da atividade de Análise da Wedo para 26.out / Wedo planejou inicio em 23.out, por isso considera a atividade 31 como predecessora. / Impacto no inicio da atividade planejada pela Wedo (23.out) com Wedo/Pt já mobilizada. / Esforço da wedo previsto para 12 dias e não 16 (incluidas atividades de testes com prazo total de 4 dias). Esforços para plano de testes/aprovaçao precisam ser revisados.
- 35: Aprovação do DSOL ágil (finish to finish com elaboração). Deve terminar junto com atividade 35)
- 36: Esforço precisar ser revisto/reduzido durante o processo
- 37: Esforço precisar ser revisto/reduzido
- 45: Atividade removida. Não necessita TI na Onda 2.
- 46: Considerando o término dos Testes de Sistemas + Ambiente DEV - contingência / *** Trazer milestone financeiro para UAT (ao inves PRD) / *** Iniciar a Onda 3 em seguida

| ID | WBS | Task | Type | Duration | Start | Finish | Predecessors | Complete | Remaining | Baseline start | Baseline finish | Baseline duration | Baseline 1 start | Baseline 1 finish | Total slack | Free slack | Resources | Work | Actual work |
| --- | --- | --- | --- | --- | --- | --- | --- | --- | --- | --- | --- | --- | --- | --- | --- | --- | --- | --- | --- |
| 63 | 1.4.11 | **Implantação** |  | 7d | 2018-01-31 | 2018-02-08 |  |  |  | 2018-01-24 | 2018-02-02 | 8d | 2018-01-24 | 2018-02-02 | 1d |  |  | 88h |  |
| 64 | 1.4.11.1 | Entrada em Produção (DEV - RAID FMS) |  | 1d | 2018-01-31 | 2018-01-31 | 62, 61, 46, 8 |  |  | 2018-01-24 | 2018-01-25 | 2d | 2018-01-24 | 2018-01-25 | 1d | 0d | WeDo | 8h |  |
| 65 | 1.4.11.2 | Operação Assistida |  | 5d | 2018-02-02 | 2018-02-08 | 64FS+1d |  |  | 2018-01-29 | 2018-02-02 | 5d | 2018-01-29 | 2018-02-02 | 1d | 0d | WeDo; Oi | 80h |  |
| 66 | 1.5 | Entrega da Especificação Técnica |  | 5d | 2018-02-02 | 2018-02-08 | 65SS |  |  | 2018-01-29 | 2018-01-29 | 0d | 2018-01-29 | 2018-01-29 | 487d | 0d | Giullyan; Jacomino | 80h |  |
| 67 | 1.6 | Onda 2 - TV off line - Finalizada | milestone | 0d | 2018-02-08 | 2018-02-08 | 66, 65 |  |  | 2018-02-02 | 2018-02-02 | 0d | 2018-02-02 | 2018-02-02 | 487d |  |  |  |  |
| 68 | 1.7 | WAC - Criação de Modelos (calibragem dos pesos para geração do score) |  | 35d | 2018-02-01 | 2018-03-23 | 64 |  |  | 2018-02-05 | 2018-03-27 | 35d | 2018-02-05 | 2018-03-27 | 458d |  | WAC | 280h |  |
| 69 | 1.8 | **ONDA 3: Oi Total 2P + Fixa R1 2P** |  | 44d | 2018-01-24 A | 2018-03-28 |  | 4% | 42.05d | 2018-01-12 | 2018-03-09 | 39d | 2018-01-12 | 2018-03-09 | 455d |  |  | 464h | 17h |
| 70 | 1.8.1 | **Especificação Funcional** |  | 12d | 2018-01-24 A | 2018-02-08 | 46 | 18% | 9.88d |  |  |  |  |  | 0d |  |  | 168h | 17h |
| 71 | 1.8.1.1 | Análise (Desenho de Solução, Especificação Técnica, Cenários de Teste e Critérios de Aceitação) |  | 9d | 2018-01-29 | 2018-02-08 | 72 |  |  | 2018-01-17 | 2018-01-22 | 4d | 2018-01-17 | 2018-01-22 | 0d |  | WeDo; Oi | 144h |  |
| 72 | 1.8.1.2 | Análise Transact |  | 3d | 2018-01-24 A | 2018-01-26 | 46 | 71% | 0.88d | 2018-01-12 | 2018-01-16 | 3d | 2018-01-12 | 2018-01-16 | 0d |  | WeDo | 24h | 17h |
| 73 | 1.8.2 | Construção e Testes Unitários |  | 8d | 2018-02-09 | 2018-02-22 | 71 |  |  | 2018-01-23 | 2018-02-01 | 8d | 2018-01-23 | 2018-02-01 | 0d |  | WeDo | 64h |  |
| 74 | 1.8.3 | Construção e Testes Unitários - Transact |  | 7d | 2018-02-23 | 2018-03-05 | 73 |  |  | 2018-02-02 | 2018-02-14 | 7d | 2018-02-02 | 2018-02-14 | 0d |  | WeDo | 56h |  |
| 75 | 1.8.4 | Elaborar Runbook |  | 2d | 2018-03-06 | 2018-03-07 | 74 |  |  | 2018-02-15 | 2018-02-16 | 2d | 2018-02-15 | 2018-02-16 | 470d |  | WeDo | 16h |  |
| 76 | 1.8.5 | Testes de Sistema |  | 4d | 2018-03-06 | 2018-03-09 | 74 |  |  | 2018-02-15 | 2018-02-20 | 4d | 2018-02-15 | 2018-02-20 | 0d |  | WeDo | 32h |  |
| 77 | 1.8.6 | Testes Integrados |  | 3d | 2018-03-12 | 2018-03-14 | 76 |  |  | 2018-02-21 | 2018-02-23 | 3d | 2018-02-21 | 2018-02-23 | 0d |  | WeDo; Oi | 48h |  |
| 78 | 1.8.7 | UAT |  | 3d | 2018-03-15 | 2018-03-19 | 77 |  |  | 2018-02-26 | 2018-02-28 | 3d | 2018-02-26 | 2018-02-28 | 0d |  | WeDo; Oi | 48h |  |
| 79 | 1.8.8 | Elaborar PLIM |  | 2d | 2018-03-15 | 2018-03-16 | 77 |  |  | 2018-02-26 | 2018-02-27 | 2d | 2018-02-26 | 2018-02-27 | 463d |  | WeDo | 16h |  |
| 80 | 1.8.9 | Implantação |  | 2d | 2018-03-20 | 2018-03-21 | 78 |  |  | 2018-03-01 | 2018-03-02 | 2d | 2018-03-01 | 2018-03-02 | 0d |  | WeDo | 16h |  |
| 81 | 1.8.10 | Operação Assistida |  | 5d | 2018-03-22 | 2018-03-28 | 80 |  |  | 2018-03-05 | 2018-03-09 | 5d | 2018-03-05 | 2018-03-09 | 455d | 0d |  |  |  |
| 82 | 1.8.11 | Onda 3 - Oi Total 2P + Fixa R1 1P - Finalizada | milestone | 0d | 2018-03-28 | 2018-03-28 | 81 |  |  | 2018-03-09 | 2018-03-09 | 0d | 2018-03-09 | 2018-03-09 | 455d |  |  |  |  |
| 83 | 1.9 | WAC - Analytics (construção dos modelos) | manual | 35d | 2018-02-07 | 2018-03-29 |  |  |  | 2018-02-07 | 2018-03-29 | 35d | 2018-02-07 | 2018-03-29 |  |  | WeDo | 280h |  |
| 84 | 1.10 | **Treinamento Usuário (FMS-04)** |  | 8d | 2018-02-16 | 2018-02-27 |  |  |  | 2018-01-26 | 2018-02-06 | 8d | 2018-01-26 | 2018-02-06 | 476d |  |  | 40h |  |
| 85 | 1.10.1 | Elaborar material |  | 5d | 2018-02-16 | 2018-02-22 | 73SS+3d |  |  | 2018-01-26 | 2018-02-01 | 5d | 2018-01-26 | 2018-02-01 | 476d | 0d | WeDo | 40h |  |
| 86 | 1.10.2 | Ambiente disponibilizado | milestone | 0d | 2018-02-22 | 2018-02-22 | 85 |  |  | 2018-02-01 | 2018-02-01 | 0d | 2018-02-01 | 2018-02-01 | 476d | 0d | Oi |  |  |
| 87 | 1.10.3 | Realizar Treinamento |  | 3d | 2018-02-23 | 2018-02-27 | 86 |  |  | 2018-02-02 | 2018-02-06 | 3d | 2018-02-02 | 2018-02-06 | 476d | 0d |  |  |  |
| 88 | 1.10.4 | Treinamento Usuário Finalizado | milestone | 0d | 2018-02-27 | 2018-02-27 | 87 |  |  | 2018-02-06 | 2018-02-06 | 0d | 2018-02-06 | 2018-02-06 | 476d |  |  |  |  |

Notes:
- 68: A questao do faseamento aqui, precisa ver 2 coisas: / 1. Forma de Atuação (local e remota) / 2. Foram planejadas 4 atuações no Programa 1 (precisar revisar as outras para fasear a Onda 2)
- 69: Modelos estatísticos devem devem estar prontos para entrada do online (risco alto)
- 71: Definir como sequencial, após "Análise Transact"
- 72: Wedo espera iniciar ao término do UAT da Onda 2, ao invés de iniciar ao término da Implantação (Onda 2). Motivo: tempo de inatividade Wedo até entrega do HW definitivo-Oi / Será incluida atividade de entrega, validação das regras de negócio, DAS e etc? / Ver com Jaca Analise Transact (historico da atividade)

| ID | WBS | Task | Type | Duration | Start | Finish | Predecessors | Baseline start | Baseline finish | Baseline duration | Baseline 1 start | Baseline 1 finish | Total slack | Resources | Work |
| --- | --- | --- | --- | --- | --- | --- | --- | --- | --- | --- | --- | --- | --- | --- | --- |
| 89 | 1.11 | **ONDAS 4, 5 e 6: Oi Total (3P) + Móvel Puro Online + Oi Total Online (4P)** |  | 34d | 2018-03-22 | 2018-05-10 |  | 2018-03-05 | 2018-04-20 | 34d | 2018-03-05 | 2018-04-20 | 0d |  | 408h |
| 90 | 1.11.1 | Análise (Desenho de Solução, Especificação Técnica, Cenários de Teste e Critérios de Aceitação) |  | 7d | 2018-03-22 | 2018-04-02 | 80 | 2018-03-05 | 2018-03-13 | 7d | 2018-03-05 | 2018-03-13 | 0d | WeDo; Oi | 112h |
| 91 | 1.11.2 | Construção e Testes Unitários |  | 15d | 2018-04-03 | 2018-04-23 | 90 | 2018-03-14 | 2018-04-04 | 15d | 2018-03-14 | 2018-04-04 | 0d | WeDo | 120h |
| 92 | 1.11.3 | Elaborar Runbook |  | 2d | 2018-04-24 | 2018-04-25 | 91 | 2018-04-05 | 2018-04-06 | 2d | 2018-04-05 | 2018-04-06 | 436d | WeDo | 16h |
| 93 | 1.11.4 | Testes de Sistema |  | 4d | 2018-04-24 | 2018-04-27 | 91 | 2018-04-05 | 2018-04-10 | 4d | 2018-04-05 | 2018-04-10 | 0d | WeDo | 32h |
| 94 | 1.11.5 | Testes Integrados |  | 2d | 2018-04-30 | 2018-05-02 | 93 | 2018-04-11 | 2018-04-12 | 2d | 2018-04-11 | 2018-04-12 | 0d | WeDo; Oi | 32h |
| 95 | 1.11.6 | UAT |  | 4d | 2018-05-03 | 2018-05-08 | 94 | 2018-04-13 | 2018-04-18 | 4d | 2018-04-13 | 2018-04-18 | 0d | WeDo; Oi | 64h |
| 96 | 1.11.7 | Elaborar PLIM |  | 2d | 2018-05-03 | 2018-05-04 | 94 | 2018-04-13 | 2018-04-16 | 2d | 2018-04-13 | 2018-04-16 | 430d | WeDo | 16h |
| 97 | 1.11.8 | Implantação |  | 2d | 2018-05-09 | 2018-05-10 | 95 | 2018-04-19 | 2018-04-20 | 2d | 2018-04-19 | 2018-04-20 | 0d | WeDo | 16h |
| 98 | 1.11.9 | Ondas 4, 5 e 6 - Oi Total 3P + Móvel Puro Online + Oi Total Online - Finalizada | milestone | 0d | 2018-05-10 | 2018-05-10 | 97 | 2018-04-20 | 2018-04-20 | 0d | 2018-04-20 | 2018-04-20 | 0d |  |  |
| 99 | 1.12 | **ONDA 7.1: Integração Bases de Dados (CRM)** |  | 57d | 2018-05-11 | 2018-07-31 |  | 2018-04-23 | 2018-07-12 | 57d | 2018-04-23 | 2018-07-12 | 0d |  | 688h |
| 100 | 1.12.1 | Análise (Desenho de Solução, Especificação Técnica, Cenários de Teste e Critérios de Aceitação) |  | 10d | 2018-05-11 | 2018-05-24 | 98 | 2018-04-23 | 2018-05-07 | 10d | 2018-04-23 | 2018-05-07 | 0d | WeDo; Oi | 160h |
| 101 | 1.12.2 | Construção e Testes Unitários |  | 25d | 2018-05-25 | 2018-06-29 | 100 | 2018-05-08 | 2018-06-12 | 25d | 2018-05-08 | 2018-06-12 | 0d | WeDo | 200h |
| 102 | 1.12.3 | Elaborar Runbook |  | 2d | 2018-07-02 | 2018-07-03 | 101 | 2018-06-13 | 2018-06-14 | 2d | 2018-06-13 | 2018-06-14 | 389d | WeDo | 16h |
| 103 | 1.12.4 | Testes de Sistema |  | 5d | 2018-07-02 | 2018-07-06 | 101 | 2018-06-13 | 2018-06-19 | 5d | 2018-06-13 | 2018-06-19 | 0d | WeDo | 40h |
| 104 | 1.12.5 | Testes Integrados - Plano e Execução |  | 10d | 2018-07-09 | 2018-07-20 | 103 | 2018-06-20 | 2018-07-03 | 10d | 2018-06-20 | 2018-07-03 | 0d | WeDo; Oi | 160h |
| 105 | 1.12.6 | UAT |  | 5d | 2018-07-23 | 2018-07-27 | 104 | 2018-07-04 | 2018-07-10 | 5d | 2018-07-04 | 2018-07-10 | 0d | WeDo; Oi | 80h |
| 106 | 1.12.7 | Elaborar PLIM |  | 2d | 2018-07-23 | 2018-07-24 | 104 | 2018-07-04 | 2018-07-05 | 2d | 2018-07-04 | 2018-07-05 | 374d | WeDo | 16h |
| 107 | 1.12.8 | Implantação |  | 2d | 2018-07-30 | 2018-07-31 | 105 | 2018-07-11 | 2018-07-12 | 2d | 2018-07-11 | 2018-07-12 | 0d | WeDo | 16h |
| 108 | 1.12.9 | Onda 7.1 - Integração Bases de Dados - Finalizada | milestone | 0d | 2018-07-31 | 2018-07-31 | 107 | 2018-07-12 | 2018-07-12 | 0d | 2018-07-12 | 2018-07-12 | 0d |  |  |
| 109 | 1.13 | **ONDA 7.2: Integração Bases de Dados (Inadimplência e Recargas)** |  | 31d | 2018-08-01 | 2018-09-13 |  | 2018-07-13 | 2018-08-24 | 31d | 2018-07-13 | 2018-08-24 | 0d |  | 368h |
| 110 | 1.13.1 | Análise (Desenho de Solução, Especificação Técnica, Cenários de Teste e Critérios de Aceitação) |  | 5d | 2018-08-01 | 2018-08-07 | 108 | 2018-07-13 | 2018-07-19 | 5d | 2018-07-13 | 2018-07-19 | 0d | WeDo; Oi | 80h |
| 111 | 1.13.2 | Construção e Testes Unitários |  | 15d | 2018-08-08 | 2018-08-28 | 110 | 2018-07-20 | 2018-08-09 | 15d | 2018-07-20 | 2018-08-09 | 0d | WeDo | 120h |
| 112 | 1.13.3 | Elaborar Runbook |  | 2d | 2018-08-29 | 2018-08-30 | 111 | 2018-08-10 | 2018-08-13 | 2d | 2018-08-10 | 2018-08-13 | 347d | WeDo | 16h |
| 113 | 1.13.4 | Testes de Sistema |  | 3d | 2018-08-29 | 2018-08-31 | 111 | 2018-08-10 | 2018-08-14 | 3d | 2018-08-10 | 2018-08-14 | 0d | WeDo | 24h |
| 114 | 1.13.5 | Testes Integrados - Plano e Execução |  | 3d | 2018-09-03 | 2018-09-05 | 113 | 2018-08-15 | 2018-08-17 | 3d | 2018-08-15 | 2018-08-17 | 0d | WeDo; Oi | 48h |
| 115 | 1.13.6 | UAT |  | 3d | 2018-09-06 | 2018-09-11 | 114 | 2018-08-20 | 2018-08-22 | 3d | 2018-08-20 | 2018-08-22 | 0d | WeDo; Oi | 48h |
| 116 | 1.13.7 | Elaborar PLIM |  | 2d | 2018-09-06 | 2018-09-10 | 114 | 2018-08-20 | 2018-08-21 | 2d | 2018-08-20 | 2018-08-21 | 341d | WeDo | 16h |
| 117 | 1.13.8 | Implantação |  | 2d | 2018-09-12 | 2018-09-13 | 115 | 2018-08-23 | 2018-08-24 | 2d | 2018-08-23 | 2018-08-24 | 0d | WeDo | 16h |
| 118 | 1.13.9 | Onda 7.2 - Integração Bases de Dados - Finalizada | milestone | 0d | 2018-09-13 | 2018-09-13 | 117 | 2018-08-24 | 2018-08-24 | 0d | 2018-08-24 | 2018-08-24 | 338d |  |  |

| ID | WBS | Task | Type | Duration | Start | Finish | Predecessors | Complete | Baseline start | Baseline finish | Baseline duration | Baseline 1 start | Baseline 1 finish | Total slack | Free slack | Resources | Work | Actual work |
| --- | --- | --- | --- | --- | --- | --- | --- | --- | --- | --- | --- | --- | --- | --- | --- | --- | --- | --- |
| 119 | 1.14 | **Treinamento Administração Técnica (FMS-02)** |  | 8d | 2018-08-08 | 2018-08-17 |  |  | 2018-07-20 | 2018-07-31 | 8d | 2018-07-20 | 2018-07-31 | 356d |  |  | 88h |  |
| 120 | 1.14.1 | Elaborar material |  | 5d | 2018-08-08 | 2018-08-14 | 111SS |  | 2018-07-20 | 2018-07-26 | 5d | 2018-07-20 | 2018-07-26 | 356d | 0d | WeDo | 40h |  |
| 121 | 1.14.2 | Ambiente disponibilizado | milestone | 0d | 2018-08-14 | 2018-08-14 | 120 |  | 2018-07-26 | 2018-07-26 | 0d | 2018-07-26 | 2018-07-26 | 356d | 0d | Oi |  |  |
| 122 | 1.14.3 | Realizar Treinamento |  | 3d | 2018-08-15 | 2018-08-17 | 121 |  | 2018-07-27 | 2018-07-31 | 3d | 2018-07-27 | 2018-07-31 | 356d | 0d | WeDo; Oi | 48h |  |
| 123 | 1.14.4 | Treinamento Administração Técnica Finalizado | milestone | 0d | 2018-08-17 | 2018-08-17 | 122 |  | 2018-07-31 | 2018-07-31 | 0d | 2018-07-31 | 2018-07-31 | 356d |  |  |  |  |
| 124 | 1.15 | **Treinamento Administração Funcional (FMS-03)** |  | 8d | 2017-09-04 A | 2017-09-14 A |  | 100% | 2017-09-04 | 2017-09-14 | 8d | 2017-09-04 | 2017-09-14 |  |  |  | 88h | 88h |
| 125 | 1.15.1 | Elaborar material |  | 5d | 2017-09-04 A | 2017-09-11 A |  | 100% | 2017-09-04 | 2017-09-11 | 5d | 2017-09-04 | 2017-09-11 |  |  | WeDo | 40h | 40h |
| 126 | 1.15.2 | Ambiente disponibilizado | milestone | 0d | 2017-09-11 A | 2017-09-11 A | 125 | 100% | 2017-09-11 | 2017-09-11 | 0d | 2017-09-11 | 2017-09-11 |  |  | Oi |  |  |
| 127 | 1.15.3 | Realizar Treinamento |  | 3d | 2017-09-12 A | 2017-09-14 A | 126 | 100% | 2017-09-12 | 2017-09-14 | 3d | 2017-09-12 | 2017-09-14 |  |  | WeDo; Oi | 48h | 48h |
| 128 | 1.15.4 | Treinamento Administração Funcional Finalizado | milestone | 0d | 2017-09-14 A | 2017-09-14 A | 127 | 100% | 2017-09-14 | 2017-09-14 | 0d | 2017-09-14 | 2017-09-14 |  |  |  |  |  |
| 129 | 1.16 | **ONDA 9: Telas para Operação de Crédito** |  | 38d | 2018-09-14 | 2018-11-09 |  |  | 2018-08-27 | 2018-10-22 | 38d | 2018-08-27 | 2018-10-22 | 300d |  |  |  |  |
| 130 | 1.16.1 | Análise (Desenho de Solução, Especificação Técnica, Cenários de Teste e Critérios de Aceitação) |  | 5d | 2018-09-14 | 2018-09-20 | 117 |  | 2018-08-27 | 2018-08-31 | 5d | 2018-08-27 | 2018-08-31 | 300d | 0d |  |  |  |
| 131 | 1.16.2 | Construção e Testes Unitários |  | 15d | 2018-09-21 | 2018-10-11 | 130 |  | 2018-09-03 | 2018-09-24 | 15d | 2018-09-03 | 2018-09-24 | 300d | 0d |  |  |  |
| 132 | 1.16.3 | Elaborar Runbook |  | 2d | 2018-10-15 | 2018-10-17 | 131 |  | 2018-09-25 | 2018-09-26 | 2d | 2018-09-25 | 2018-09-26 | 316d |  |  |  |  |
| 133 | 1.16.4 | Testes de Sistema |  | 5d | 2018-10-15 | 2018-10-22 | 131 |  | 2018-09-25 | 2018-10-01 | 5d | 2018-09-25 | 2018-10-01 | 300d | 0d |  |  |  |
| 134 | 1.16.5 | Testes Integrados |  | 1d | 2018-10-23 | 2018-10-23 | 133 |  | 2018-10-02 | 2018-10-02 | 1d | 2018-10-02 | 2018-10-02 | 300d | 0d |  |  |  |
| 135 | 1.16.6 | UAT |  | 5d | 2018-10-24 | 2018-10-30 | 134 |  | 2018-10-03 | 2018-10-09 | 5d | 2018-10-03 | 2018-10-09 | 300d | 0d |  |  |  |
| 136 | 1.16.7 | Elaborar PLIM |  | 2d | 2018-10-24 | 2018-10-25 | 134 |  | 2018-10-03 | 2018-10-04 | 2d | 2018-10-03 | 2018-10-04 | 310d |  |  |  |  |
| 137 | 1.16.8 | Implantação |  | 2d | 2018-10-31 | 2018-11-01 | 135 |  | 2018-10-10 | 2018-10-11 | 2d | 2018-10-10 | 2018-10-11 | 300d | 0d |  |  |  |
| 138 | 1.16.9 | Operação Assistida |  | 5d | 2018-11-05 | 2018-11-09 | 137 |  | 2018-10-15 | 2018-10-22 | 5d | 2018-10-15 | 2018-10-22 | 300d | 0d |  |  |  |
| 139 | 1.16.10 | Onda 9 - Telas para Operação de Crédito - Finalizada | milestone | 0d | 2018-11-09 | 2018-11-09 | 138 |  | 2018-10-22 | 2018-10-22 | 0d | 2018-10-22 | 2018-10-22 | 300d |  |  |  |  |
| 140 | 1.17 | **ONDA 10: Oi Controle Sem Fatura Online** |  | 45d | 2018-09-14 | 2018-11-21 |  |  | 2018-08-27 | 2018-10-31 | 45d | 2018-08-27 | 2018-10-31 | 0d |  |  | 584h |  |
| 141 | 1.17.1 | Análise (Desenho de Solução, Especificação Técnica, Cenários de Teste e Critérios de Aceitação) |  | 10d | 2018-09-14 | 2018-09-27 | 117 |  | 2018-08-27 | 2018-09-10 | 10d | 2018-08-27 | 2018-09-10 | 0d |  | WeDo; Oi | 160h |  |
| 142 | 1.17.2 | Construção e Testes Unitários |  | 18d | 2018-09-28 | 2018-10-25 | 141 |  | 2018-09-11 | 2018-10-04 | 18d | 2018-09-11 | 2018-10-04 | 0d |  | WeDo | 144h |  |
| 143 | 1.17.3 | Elaborar Runbook |  | 2d | 2018-10-26 | 2018-10-29 | 142 |  | 2018-10-05 | 2018-10-08 | 2d | 2018-10-05 | 2018-10-08 | 308d |  | WeDo | 16h |  |
| 144 | 1.17.4 | Testes de Sistema |  | 4d | 2018-10-26 | 2018-10-31 | 142 |  | 2018-10-05 | 2018-10-10 | 4d | 2018-10-05 | 2018-10-10 | 0d |  | WeDo | 32h |  |
| 145 | 1.17.5 | Testes Integrados |  | 3d | 2018-11-01 | 2018-11-06 | 144 |  | 2018-10-11 | 2018-10-17 | 3d | 2018-10-11 | 2018-10-17 | 0d |  | WeDo; Oi | 48h |  |
| 146 | 1.17.6 | UAT |  | 4d | 2018-11-07 | 2018-11-12 | 145 |  | 2018-10-18 | 2018-10-23 | 4d | 2018-10-18 | 2018-10-23 | 299d |  | WeDo; Oi | 64h |  |
| 147 | 1.17.7 | Elaborar PLIM |  | 2d | 2018-11-07 | 2018-11-08 | 145 |  | 2018-10-18 | 2018-10-19 | 2d | 2018-10-18 | 2018-10-19 | 0d |  | WeDo | 16h |  |
| 148 | 1.17.8 | Implantação |  | 3d | 2018-11-09 | 2018-11-13 | 147 |  | 2018-10-22 | 2018-10-24 | 3d | 2018-10-22 | 2018-10-24 | 0d |  | WeDo | 24h |  |
| 149 | 1.17.9 | Operação Assistida |  | 5d | 2018-11-14 | 2018-11-21 | 148 |  | 2018-10-25 | 2018-10-31 | 5d | 2018-10-25 | 2018-10-31 | 293d | 0d | WeDo; Oi | 80h |  |
| 150 | 1.17.10 | Onda 10 - Oi Controle Sem Fatura Online - Finalizada | milestone | 0d | 2018-11-21 | 2018-11-21 | 149 |  | 2018-10-31 | 2018-10-31 | 0d | 2018-10-31 | 2018-10-31 | 293d |  |  |  |  |

| ID | WBS | Task | Type | Duration | Start | Finish | Predecessors | Baseline start | Baseline finish | Baseline duration | Baseline 1 start | Baseline 1 finish | Total slack | Free slack | Resources | Work |
| --- | --- | --- | --- | --- | --- | --- | --- | --- | --- | --- | --- | --- | --- | --- | --- | --- |
| 151 | 1.18 | **ONDA 8: Oi Fibra Online** |  | 10d | 2018-11-14 | 2018-11-28 |  | 2018-10-25 | 2018-11-08 | 10d | 2018-10-25 | 2018-11-08 | 288d |  |  | 104h |
| 152 | 1.18.1 | Análise (Desenho de Solução, Especificação Técnica, Cenários de Teste e Critérios de Aceitação) |  | 3d | 2018-11-14 | 2018-11-19 | 148 | 2018-10-25 | 2018-10-29 | 3d | 2018-10-25 | 2018-10-29 | 288d | 0d | WeDo | 24h |
| 153 | 1.18.2 | Construção e Testes Unitários |  | 3d | 2018-11-20 | 2018-11-22 | 152 | 2018-10-30 | 2018-11-01 | 3d | 2018-10-30 | 2018-11-01 | 288d | 0d | WeDo | 24h |
| 154 | 1.18.3 | Elaborar Runbook |  | 1d | 2018-11-20 | 2018-11-20 | 152 | 2018-10-30 | 2018-10-30 | 1d | 2018-10-30 | 2018-10-30 | 294d |  | WeDo | 8h |
| 155 | 1.18.4 | Testes de Sistema |  | 1d | 2018-11-23 | 2018-11-23 | 153 | 2018-11-05 | 2018-11-05 | 1d | 2018-11-05 | 2018-11-05 | 288d | 0d | WeDo; Oi | 16h |
| 156 | 1.18.5 | Testes Integrados |  | 1d | 2018-11-26 | 2018-11-26 | 155 | 2018-11-06 | 2018-11-06 | 1d | 2018-11-06 | 2018-11-06 | 288d | 0d | WeDo; Oi | 16h |
| 157 | 1.18.6 | UAT |  | 1d | 2018-11-27 | 2018-11-27 | 156 | 2018-11-07 | 2018-11-07 | 1d | 2018-11-07 | 2018-11-07 | 289d |  | WeDo | 8h |
| 158 | 1.18.7 | Elaborar PLIM |  | 1d | 2018-11-27 | 2018-11-27 | 156 | 2018-11-07 | 2018-11-07 | 1d | 2018-11-07 | 2018-11-07 | 288d | 0d | WeDo | 8h |
| 159 | 1.18.8 | Implantação |  | 1d | 2018-11-28 | 2018-11-28 | 158 | 2018-11-08 | 2018-11-08 | 1d | 2018-11-08 | 2018-11-08 | 288d | 0d |  |  |
| 160 | 1.18.9 | Onda 8 - Oi Fibra Online - Finalizada | milestone | 0d | 2018-11-28 | 2018-11-28 | 159 | 2018-11-08 | 2018-11-08 | 0d | 2018-11-08 | 2018-11-08 | 288d |  |  |  |
| 161 | 1.19 | **ONDA 11: Fixa R2 Offline** |  | 25d | 2018-11-14 | 2018-12-19 |  | 2018-10-25 | 2018-11-30 | 25d | 2018-10-25 | 2018-11-30 | 253d |  |  | 320h |
| 162 | 1.19.1 | Análise (Desenho de Solução, Especificação Técnica, Cenários de Teste e Critérios de Aceitação) |  | 5d | 2018-11-14 | 2018-11-21 | 148 | 2018-10-25 | 2018-10-31 | 5d | 2018-10-25 | 2018-10-31 | 253d | 0d | WeDo; Oi | 80h |
| 163 | 1.19.2 | Construção e Testes Unitários |  | 10d | 2018-11-22 | 2018-12-05 | 162 | 2018-11-01 | 2018-11-16 | 10d | 2018-11-01 | 2018-11-16 | 253d | 0d | WeDo | 80h |
| 164 | 1.19.3 | Elaborar Runbook |  | 2d | 2018-12-06 | 2018-12-07 | 163 | 2018-11-19 | 2018-11-20 | 2d | 2018-11-19 | 2018-11-20 | 281d |  | WeDo | 16h |
| 165 | 1.19.4 | Testes de Sistema |  | 4d | 2018-12-06 | 2018-12-11 | 163 | 2018-11-19 | 2018-11-22 | 4d | 2018-11-19 | 2018-11-22 | 253d | 0d | WeDo | 32h |
| 166 | 1.19.5 | Testes Integrados |  | 2d | 2018-12-12 | 2018-12-13 | 165 | 2018-11-23 | 2018-11-26 | 2d | 2018-11-23 | 2018-11-26 | 253d | 0d | WeDo; Oi | 32h |
| 167 | 1.19.6 | UAT |  | 3d | 2018-12-14 | 2018-12-18 | 166 | 2018-11-27 | 2018-11-29 | 3d | 2018-11-27 | 2018-11-29 | 274d |  | WeDo; Oi | 48h |
| 168 | 1.19.7 | Elaborar PLIM |  | 2d | 2018-12-14 | 2018-12-17 | 166 | 2018-11-27 | 2018-11-28 | 2d | 2018-11-27 | 2018-11-28 | 253d | 0d | WeDo | 16h |
| 169 | 1.19.8 | Implantação |  | 2d | 2018-12-18 | 2018-12-19 | 168 | 2018-11-29 | 2018-11-30 | 2d | 2018-11-29 | 2018-11-30 | 253d | 0d | WeDo | 16h |
| 170 | 1.19.9 | Onda 11 - Fixa R2 Offline - Finalizada | milestone | 0d | 2018-12-19 | 2018-12-19 | 169 | 2018-11-30 | 2018-11-30 | 0d | 2018-11-30 | 2018-11-30 | 253d | 0d |  |  |
| 171 | 1.20 | **ONDA 12: Fixa R2 Online** |  | 20d | 2018-12-20 | 2019-01-22 |  | 2018-12-03 | 2019-01-03 | 20d | 2018-12-03 | 2019-01-03 | 253d |  |  | 272h |
| 172 | 1.20.1 | Análise (Desenho de Solução, Especificação Técnica, Cenários de Teste e Critérios de Aceitação) |  | 5d | 2018-12-20 | 2018-12-28 | 170 | 2018-12-03 | 2018-12-07 | 5d | 2018-12-03 | 2018-12-07 | 253d | 0d | WeDo; Oi | 80h |
| 173 | 1.20.2 | Construção e Testes Unitários |  | 7d | 2019-01-02 | 2019-01-10 | 172 | 2018-12-10 | 2018-12-18 | 7d | 2018-12-10 | 2018-12-18 | 253d | 0d | WeDo | 56h |
| 174 | 1.20.3 | Elaborar Runbook |  | 2d | 2019-01-11 | 2019-01-14 | 173 | 2018-12-19 | 2018-12-20 | 2d | 2018-12-19 | 2018-12-20 | 259d |  | WeDo | 16h |
| 175 | 1.20.4 | Testes de Sistema |  | 3d | 2019-01-11 | 2019-01-15 | 173 | 2018-12-19 | 2018-12-21 | 3d | 2018-12-19 | 2018-12-21 | 253d | 0d | WeDo | 24h |
| 176 | 1.20.5 | Testes Integrados |  | 1d | 2019-01-16 | 2019-01-16 | 175 | 2018-12-26 | 2018-12-26 | 1d | 2018-12-26 | 2018-12-26 | 253d | 0d | WeDo; Oi | 16h |
| 177 | 1.20.6 | UAT |  | 3d | 2019-01-17 | 2019-01-21 | 176 | 2018-12-27 | 2019-01-02 | 3d | 2018-12-27 | 2019-01-02 | 254d |  | WeDo; Oi | 48h |
| 178 | 1.20.7 | Elaborar PLIM |  | 2d | 2019-01-17 | 2019-01-18 | 176 | 2018-12-27 | 2018-12-28 | 2d | 2018-12-27 | 2018-12-28 | 253d | 0d | WeDo | 16h |
| 179 | 1.20.8 | Implantação |  | 2d | 2019-01-21 | 2019-01-22 | 178 | 2019-01-02 | 2019-01-03 | 2d | 2019-01-02 | 2019-01-03 | 253d | 0d | WeDo | 16h |
| 180 | 1.20.9 | Operação Assistida | milestone | 0d | 2019-01-22 | 2019-01-22 | 179 | 2019-01-03 | 2019-01-03 | 0d | 2019-01-03 | 2019-01-03 | 253d | 0d | WeDo; Oi |  |
| 181 | 1.20.10 | Onda 12 - Fixa R2 Online - Finalizada | milestone | 0d | 2019-01-22 | 2019-01-22 | 180 | 2019-01-03 | 2019-01-03 | 0d | 2019-01-03 | 2019-01-03 | 253d |  |  |  |

Notes:
- 161: Depende UNIFICA ou CRM Unico - ver Cezar
- 171: Depende UNIFICA - ver Cezar

| ID | WBS | Task | Type | Duration | Start | Finish | Predecessors | Baseline start | Baseline finish | Baseline duration | Baseline 1 start | Baseline 1 finish | Total slack | Free slack | Resources | Work |
| --- | --- | --- | --- | --- | --- | --- | --- | --- | --- | --- | --- | --- | --- | --- | --- | --- |
| 182 | 2 | **Projeto RAID FMS OI - Programa 2** |  | 317d | 2018-10-17 | 2020-01-24 |  | 2018-10-17 | 2020-01-07 | 304d | 2018-10-17 | 2020-01-07 | 0d |  |  | 5704h |
| 183 | 2.1 | **ONDA 1: Planejamento e Setup** |  | 7d | 2018-11-14 | 2018-11-23 |  | 2018-10-25 | 2018-11-05 | 7d | 2018-10-25 | 2018-11-05 | 0d |  |  | 224h |
| 184 | 2.1.1 | Detalhamento (Macro Requisitos) |  | 7d | 2018-11-14 | 2018-11-23 | 148 | 2018-10-25 | 2018-11-05 | 7d | 2018-10-25 | 2018-11-05 | 291d |  | Oi | 56h |
| 185 | 2.1.2 | Revisão do Cronograma |  | 7d | 2018-11-14 | 2018-11-23 | 148 | 2018-10-25 | 2018-11-05 | 7d | 2018-10-25 | 2018-11-05 | 291d |  | WeDo; Oi | 112h |
| 186 | 2.1.3 | Atualização PDP |  | 7d | 2018-11-14 | 2018-11-23 | 148 | 2018-10-25 | 2018-11-05 | 7d | 2018-10-25 | 2018-11-05 | 0d |  | WeDo | 56h |
| 187 | 2.2 | **ONDA 1.1: Configuração Ambiente** |  | 30d | 2018-10-17 | 2018-11-29 |  | 2018-10-17 | 2018-11-29 | 30d | 2018-10-17 | 2018-11-29 | 0d |  |  | 480h |
| 188 | 2.2.1 | Integração Hadoop | manual | 30d | 2018-10-17 | 2018-11-29 | 148 | 2018-10-17 | 2018-11-29 | 30d | 2018-10-17 | 2018-11-29 |  |  | WeDo; Oi | 480h |
| 189 | 2.3 | **ONDAS 13 e 14: Fraude LDI + Roaming internacional Near Real Time** |  | 63d | 2018-11-26 | 2019-02-26 |  | 2018-11-06 | 2019-02-07 | 63d | 2018-11-06 | 2019-02-07 | 0d |  |  | 752h |
| 190 | 2.3.1 | Análise (Desenho de Solução, Especificação Técnica, Cenários de Teste e Critérios de Aceitação) |  | 12d | 2018-11-26 | 2018-12-11 | 186 | 2018-11-06 | 2018-11-22 | 12d | 2018-11-06 | 2018-11-22 | 0d |  | WeDo; Oi | 192h |
| 191 | 2.3.2 | Construção e Testes Unitários |  | 29d | 2018-12-12 | 2019-01-25 | 190 | 2018-11-23 | 2019-01-08 | 29d | 2018-11-23 | 2019-01-08 | 203d | 0d | WeDo | 232h |
| 192 | 2.3.3 | Elaborar Runbook |  | 3d | 2019-01-28 | 2019-01-30 | 191 | 2019-01-09 | 2019-01-11 | 3d | 2019-01-09 | 2019-01-11 | 247d |  | WeDo | 24h |
| 193 | 2.3.4 | Testes de Sistema |  | 6d | 2019-01-28 | 2019-02-04 | 191 | 2019-01-09 | 2019-01-16 | 6d | 2019-01-09 | 2019-01-16 | 203d | 0d | WeDo | 48h |
| 194 | 2.3.5 | Testes Integrados |  | 3d | 2019-02-05 | 2019-02-07 | 193 | 2019-01-17 | 2019-01-21 | 3d | 2019-01-17 | 2019-01-21 | 203d | 0d | WeDo; Oi | 48h |
| 195 | 2.3.6 | UAT |  | 6d | 2019-02-08 | 2019-02-15 | 194 | 2019-01-22 | 2019-01-29 | 6d | 2019-01-22 | 2019-01-29 | 203d | 0d | WeDo; Oi | 96h |
| 196 | 2.3.7 | Elaborar PLIM |  | 2d | 2019-02-08 | 2019-02-11 | 194 | 2019-01-22 | 2019-01-23 | 2d | 2019-01-22 | 2019-01-23 | 239d |  | WeDo | 16h |
| 197 | 2.3.8 | Implantação |  | 2d | 2019-02-18 | 2019-02-19 | 195 | 2019-01-30 | 2019-01-31 | 2d | 2019-01-30 | 2019-01-31 | 203d | 0d | WeDo | 16h |
| 198 | 2.3.9 | Operação Assistida |  | 5d | 2019-02-20 | 2019-02-26 | 197 | 2019-02-01 | 2019-02-07 | 5d | 2019-02-01 | 2019-02-07 | 228d | 0d | WeDo; Oi | 80h |
| 199 | 2.3.10 | ONDAS 13 e 14: Fraude LDI + Roaming internacional Near Real Time - Finalizado | milestone | 0d | 2019-02-26 | 2019-02-26 | 198 | 2019-02-07 | 2019-02-07 | 0d | 2019-02-07 | 2019-02-07 | 228d |  |  |  |
| 200 | 2.4 | **Treinamento Help Desk (FMS-06)** |  | 4d | 2018-12-17 | 2018-12-20 |  | 2018-11-28 | 2018-12-03 | 4d | 2018-11-28 | 2018-12-03 | 272d |  |  | 48h |
| 201 | 2.4.1 | Elaborar material |  | 2d | 2018-12-17 | 2018-12-18 | 191SS+3d | 2018-11-28 | 2018-11-29 | 2d | 2018-11-28 | 2018-11-29 | 272d | 0d | WeDo | 16h |
| 202 | 2.4.2 | Ambiente disponibilizado | milestone | 0d | 2018-12-18 | 2018-12-18 | 201 | 2018-11-29 | 2018-11-29 | 0d | 2018-11-29 | 2018-11-29 | 272d | 0d | Oi |  |
| 203 | 2.4.3 | Realizar Treinamento |  | 2d | 2018-12-19 | 2018-12-20 | 202 | 2018-11-30 | 2018-12-03 | 2d | 2018-11-30 | 2018-12-03 | 272d | 0d | WeDo; Oi | 32h |
| 204 | 2.4.4 | Treinamento Usuário Finalizado | milestone | 0d | 2018-12-20 | 2018-12-20 | 203 | 2018-12-03 | 2018-12-03 | 0d | 2018-12-03 | 2018-12-03 | 272d |  |  |  |
| 205 | 2.5 | **ONDA 15: Alarmes Externos** |  | 30d | 2019-02-20 | 2019-04-04 |  | 2019-02-01 | 2019-03-18 | 30d | 2019-02-01 | 2019-03-18 | 203d |  |  | 312h |
| 206 | 2.5.1 | Análise (Desenho de Solução, Especificação Técnica, Cenários de Teste e Critérios de Aceitação) |  | 5d | 2019-02-20 | 2019-02-26 | 197 | 2019-02-01 | 2019-02-07 | 5d | 2019-02-01 | 2019-02-07 | 203d | 0d | WeDo; Oi | 80h |
| 207 | 2.5.2 | Construção e Testes Unitários |  | 12d | 2019-02-27 | 2019-03-18 | 206 | 2019-02-08 | 2019-02-25 | 12d | 2019-02-08 | 2019-02-25 | 203d | 0d | WeDo | 96h |
| 208 | 2.5.3 | Elaborar Runbook |  | 2d | 2019-03-19 | 2019-03-20 | 207 | 2019-02-26 | 2019-02-27 | 2d | 2019-02-26 | 2019-02-27 | 214d |  | WeDo | 16h |
| 209 | 2.5.4 | Testes de Sistema |  | 3d | 2019-03-19 | 2019-03-21 | 207 | 2019-02-26 | 2019-02-28 | 3d | 2019-02-26 | 2019-02-28 | 203d | 0d | WeDo | 24h |
| 210 | 2.5.5 | Testes Integrados |  | 1d | 2019-03-22 | 2019-03-22 | 209 | 2019-03-01 | 2019-03-01 | 1d | 2019-03-01 | 2019-03-01 | 203d | 0d | WeDo; Oi | 16h |
| 211 | 2.5.6 | UAT |  | 3d | 2019-03-25 | 2019-03-27 | 210 | 2019-03-06 | 2019-03-08 | 3d | 2019-03-06 | 2019-03-08 | 209d |  | WeDo; Oi | 48h |
| 212 | 2.5.7 | Elaborar PLIM |  | 2d | 2019-03-25 | 2019-03-26 | 210 | 2019-03-06 | 2019-03-07 | 2d | 2019-03-06 | 2019-03-07 | 203d | 0d | WeDo | 16h |
| 213 | 2.5.8 | Implantação |  | 2d | 2019-03-27 | 2019-03-28 | 212 | 2019-03-08 | 2019-03-11 | 2d | 2019-03-08 | 2019-03-11 | 203d | 0d | WeDo | 16h |
| 214 | 2.5.9 | Operação Assistida |  | 5d | 2019-03-29 | 2019-04-04 | 213 | 2019-03-12 | 2019-03-18 | 5d | 2019-03-12 | 2019-03-18 | 203d | 0d |  |  |
| 215 | 2.5.10 | Onda 15 - Alarmes Externos - Finalizado | milestone | 0d | 2019-04-04 | 2019-04-04 | 214 | 2019-03-18 | 2019-03-18 | 0d | 2019-03-18 | 2019-03-18 | 203d |  |  |  |

Notes:
- 184: parelizado com término da ONDA 10
- 205: Tratamento de eventos de risco (ver planilha de macro requisitos)

| ID | WBS | Task | Type | Duration | Start | Finish | Predecessors | Baseline start | Baseline finish | Baseline duration | Baseline 1 start | Baseline 1 finish | Total slack | Resources | Work |
| --- | --- | --- | --- | --- | --- | --- | --- | --- | --- | --- | --- | --- | --- | --- | --- |
| 216 | 2.6 | **ONDAS 16 e 18: Carga + Motor Uso - Tráfego (Móvel, Fixa, VOD, VoIP, TV)** |  | 105d | 2018-11-26 | 2019-04-29 |  | 2018-11-06 | 2019-04-10 | 105d | 2018-11-06 | 2019-04-10 | 0d |  | 1168h |
| 217 | 2.6.1 | Análise (Desenho de Solução, Especificação Técnica, Cenários de Teste e Critérios de Aceitação) |  | 15d | 2018-11-26 | 2018-12-14 | 190SS | 2018-11-06 | 2018-11-27 | 15d | 2018-11-06 | 2018-11-27 | 0d | WeDo; Oi | 240h |
| 218 | 2.6.2 | Construção e Testes Unitários |  | 60d | 2018-12-17 | 2019-03-18 | 217 | 2018-11-28 | 2019-02-25 | 60d | 2018-11-28 | 2019-02-25 | 0d | WeDo | 480h |
| 219 | 2.6.3 | Elaborar Runbook |  | 2d | 2019-03-19 | 2019-03-20 | 218 | 2019-02-26 | 2019-02-27 | 2d | 2019-02-26 | 2019-02-27 | 214d | WeDo | 16h |
| 220 | 2.6.4 | Testes de Sistema |  | 10d | 2019-03-19 | 2019-04-01 | 218 | 2019-02-26 | 2019-03-13 | 10d | 2019-02-26 | 2019-03-13 | 0d | WeDo | 80h |
| 221 | 2.6.5 | Testes Integrados |  | 10d | 2019-04-02 | 2019-04-15 | 220 | 2019-03-14 | 2019-03-27 | 10d | 2019-03-14 | 2019-03-27 | 0d | WeDo; Oi | 160h |
| 222 | 2.6.6 | UAT |  | 10d | 2019-04-16 | 2019-04-29 | 221 | 2019-03-28 | 2019-04-10 | 10d | 2019-03-28 | 2019-04-10 | 186d | WeDo; Oi | 160h |
| 223 | 2.6.7 | Elaborar PLIM |  | 2d | 2019-04-16 | 2019-04-17 | 221 | 2019-03-28 | 2019-03-29 | 2d | 2019-03-28 | 2019-03-29 | 0d | WeDo | 16h |
| 224 | 2.6.8 | Implantação |  | 2d | 2019-04-18 | 2019-04-19 | 223 | 2019-04-01 | 2019-04-02 | 2d | 2019-04-01 | 2019-04-02 | 0d | WeDo | 16h |
| 225 | 2.6.9 | ONDAS 16 e 18: Carga + Motor Uso - Tráfego (Móvel, Fixa, VOD, VoIP, TV) - Finalizada | milestone | 0d | 2019-04-19 | 2019-04-19 | 224 | 2019-04-02 | 2019-04-02 | 0d | 2019-04-02 | 2019-04-02 | 0d |  |  |
| 226 | 2.7 | **ONDA 17: Motor Detecção - Tráfego** |  | 49d | 2019-04-22 | 2019-07-01 |  | 2019-04-03 | 2019-06-11 | 49d | 2019-04-03 | 2019-06-11 | 0d |  | 544h |
| 227 | 2.7.1 | Análise (Desenho de Solução, Especificação Técnica, Cenários de Teste e Critérios de Aceitação) |  | 10d | 2019-04-22 | 2019-05-06 | 225 | 2019-04-03 | 2019-04-16 | 10d | 2019-04-03 | 2019-04-16 | 0d | WeDo; Oi | 160h |
| 228 | 2.7.2 | Construção e Testes Unitários |  | 23d | 2019-05-07 | 2019-06-06 | 227 | 2019-04-17 | 2019-05-20 | 23d | 2019-04-17 | 2019-05-20 | 0d | WeDo | 184h |
| 229 | 2.7.3 | Elaborar Runbook |  | 2d | 2019-06-07 | 2019-06-10 | 228 | 2019-05-21 | 2019-05-22 | 2d | 2019-05-21 | 2019-05-22 | 157d | WeDo | 16h |
| 230 | 2.7.4 | Testes de Sistema |  | 5d | 2019-06-07 | 2019-06-13 | 228 | 2019-05-21 | 2019-05-27 | 5d | 2019-05-21 | 2019-05-27 | 0d | WeDo | 40h |
| 231 | 2.7.5 | Testes Integrados |  | 2d | 2019-06-14 | 2019-06-17 | 230 | 2019-05-28 | 2019-05-29 | 2d | 2019-05-28 | 2019-05-29 | 0d | WeDo; Oi | 32h |
| 232 | 2.7.6 | UAT |  | 5d | 2019-06-18 | 2019-06-25 | 231 | 2019-05-30 | 2019-06-05 | 5d | 2019-05-30 | 2019-06-05 | 147d | WeDo; Oi | 80h |
| 233 | 2.7.7 | Elaborar PLIM |  | 2d | 2019-06-18 | 2019-06-19 | 231 | 2019-05-30 | 2019-05-31 | 2d | 2019-05-30 | 2019-05-31 | 0d | WeDo | 16h |
| 234 | 2.7.8 | Implantação |  | 2d | 2019-06-21 | 2019-06-24 | 233 | 2019-06-03 | 2019-06-04 | 2d | 2019-06-03 | 2019-06-04 | 0d | WeDo | 16h |
| 235 | 2.7.9 | Operação Assistida |  | 5d | 2019-06-25 | 2019-07-01 | 234 | 2019-06-05 | 2019-06-11 | 5d | 2019-06-05 | 2019-06-11 | 0d |  |  |
| 236 | 2.7.10 | Onda 17 - Motor Detecção - Tráfego | milestone | 0d | 2019-07-01 | 2019-07-01 | 235 | 2019-06-11 | 2019-06-11 | 0d | 2019-06-11 | 2019-06-11 | 0d |  |  |
| 237 | 2.8 | **ONDA 19: Recargas Pre-Pago** |  | 15d | 2019-07-02 | 2019-07-22 |  | 2019-06-12 | 2019-07-03 | 15d | 2019-06-12 | 2019-07-03 | 0d |  | 176h |
| 238 | 2.8.1 | Análise (Desenho de Solução, Especificação Técnica, Cenários de Teste e Critérios de Aceitação) |  | 3d | 2019-07-02 | 2019-07-04 | 236 | 2019-06-12 | 2019-06-14 | 3d | 2019-06-12 | 2019-06-14 | 0d | WeDo; Oi | 48h |
| 239 | 2.8.2 | Construção e Testes Unitários |  | 8d | 2019-07-05 | 2019-07-16 | 238 | 2019-06-17 | 2019-06-27 | 8d | 2019-06-17 | 2019-06-27 | 0d | WeDo | 64h |
| 240 | 2.8.3 | Elaborar Runbook |  | 1d | 2019-07-17 | 2019-07-17 | 239 | 2019-06-28 | 2019-06-28 | 1d | 2019-06-28 | 2019-06-28 | 131d | WeDo | 8h |
| 241 | 2.8.4 | Testes de Sistema |  | 1d | 2019-07-17 | 2019-07-17 | 239 | 2019-06-28 | 2019-06-28 | 1d | 2019-06-28 | 2019-06-28 | 0d | WeDo | 8h |
| 242 | 2.8.5 | Testes Integrados |  | 1d | 2019-07-18 | 2019-07-18 | 241 | 2019-07-01 | 2019-07-01 | 1d | 2019-07-01 | 2019-07-01 | 0d | WeDo; Oi | 16h |
| 243 | 2.8.6 | UAT |  | 1d | 2019-07-19 | 2019-07-19 | 242 | 2019-07-02 | 2019-07-02 | 1d | 2019-07-02 | 2019-07-02 | 129d | WeDo; Oi | 16h |
| 244 | 2.8.7 | Elaborar PLIM |  | 1d | 2019-07-19 | 2019-07-19 | 242 | 2019-07-02 | 2019-07-02 | 1d | 2019-07-02 | 2019-07-02 | 0d | WeDo | 8h |
| 245 | 2.8.8 | Implantação |  | 1d | 2019-07-22 | 2019-07-22 | 244 | 2019-07-03 | 2019-07-03 | 1d | 2019-07-03 | 2019-07-03 | 0d | WeDo | 8h |
| 246 | 2.8.9 | Onda 19 - Recargas Pre-Pago - Finalizada | milestone | 0d | 2019-07-22 | 2019-07-22 | 245 | 2019-07-03 | 2019-07-03 | 0d | 2019-07-03 | 2019-07-03 | 128d |  |  |

Notes:
- 216: validar com Jaca motor (mesmo da móvel)
- 226: validar com Jaca motor (mesmo da fixa) - atividade paralelizada com onda 16

| ID | WBS | Task | Type | Duration | Start | Finish | Predecessors | Baseline start | Baseline finish | Baseline duration | Baseline 1 start | Baseline 1 finish | Total slack | Free slack | Resources | Work |
| --- | --- | --- | --- | --- | --- | --- | --- | --- | --- | --- | --- | --- | --- | --- | --- | --- |
| 247 | 2.9 | **ONDA 20: Criação de telas para operação (detecção de fraude Fixa R1, detecção de fraude Fixa R2, detecção de fraude TV, detecção de fraude Movel e Oi Total** |  | 55d | 2019-07-23 | 2019-10-07 |  | 2019-07-04 | 2019-09-18 | 55d | 2019-07-04 | 2019-09-18 | 0d |  |  | 712h |
| 248 | 2.9.1 | Análise (Desenho de Solução, Especificação Técnica, Cenários de Teste e Critérios de Aceitação) |  | 10d | 2019-07-23 | 2019-08-05 | 245 | 2019-07-04 | 2019-07-17 | 10d | 2019-07-04 | 2019-07-17 | 0d |  | WeDo; Oi | 160h |
| 249 | 2.9.2 | Construção e Testes Unitários |  | 24d | 2019-08-06 | 2019-09-06 | 248 | 2019-07-18 | 2019-08-20 | 24d | 2019-07-18 | 2019-08-20 | 0d |  | WeDo | 192h |
| 250 | 2.9.3 | Elaborar Runbook |  | 2d | 2019-09-09 | 2019-09-10 | 249 | 2019-08-21 | 2019-08-22 | 2d | 2019-08-21 | 2019-08-22 | 92d |  | WeDo | 16h |
| 251 | 2.9.4 | Testes de Sistema |  | 5d | 2019-09-09 | 2019-09-13 | 249 | 2019-08-21 | 2019-08-27 | 5d | 2019-08-21 | 2019-08-27 | 0d |  | WeDo | 40h |
| 252 | 2.9.5 | Testes Integrados |  | 2d | 2019-09-16 | 2019-09-17 | 251 | 2019-08-28 | 2019-08-29 | 2d | 2019-08-28 | 2019-08-29 | 0d |  | WeDo; Oi | 32h |
| 253 | 2.9.6 | UAT |  | 5d | 2019-09-18 | 2019-09-24 | 252 | 2019-08-30 | 2019-09-05 | 5d | 2019-08-30 | 2019-09-05 | 82d |  | WeDo; Oi | 80h |
| 254 | 2.9.7 | Elaborar PLIM |  | 2d | 2019-09-18 | 2019-09-19 | 252 | 2019-08-30 | 2019-09-02 | 2d | 2019-08-30 | 2019-09-02 | 0d |  | WeDo | 16h |
| 255 | 2.9.8 | Implantação |  | 2d | 2019-09-20 | 2019-09-23 | 254 | 2019-09-03 | 2019-09-04 | 2d | 2019-09-03 | 2019-09-04 | 0d |  | WeDo | 16h |
| 256 | 2.9.9 | Operação Assistida |  | 10d | 2019-09-24 | 2019-10-07 | 255 | 2019-09-05 | 2019-09-18 | 10d | 2019-09-05 | 2019-09-18 | 73d | 0d | WeDo; Oi | 160h |
| 257 | 2.9.10 | Onda 20 - Criação de telas para operação (detecção de fraude Fixa R1, detecção de fraude Fixa R2, detecção de fraude TV, detecção de fraude Movel e Oi Total - Finalizada | milestone | 0d | 2019-10-07 | 2019-10-07 | 256 | 2019-09-18 | 2019-09-18 | 0d | 2019-09-18 | 2019-09-18 | 73d |  |  |  |
| 258 | 2.10 | **ONDA 21: Pós Tratamento da Fraude (Regras de Desbloqueio)** |  | 40d | 2019-09-24 | 2019-11-20 |  | 2019-09-05 | 2019-10-31 | 40d | 2019-09-05 | 2019-10-31 | 0d |  |  | 544h |
| 259 | 2.10.1 | Análise (Desenho de Solução, Especificação Técnica, Cenários de Teste e Critérios de Aceitação) |  | 5d | 2019-09-24 | 2019-09-30 | 255 | 2019-09-05 | 2019-09-11 | 5d | 2019-09-05 | 2019-09-11 | 0d |  | WeDo; Oi | 80h |
| 260 | 2.10.2 | Construção e Testes Unitários |  | 15d | 2019-10-01 | 2019-10-22 | 259 | 2019-09-12 | 2019-10-02 | 15d | 2019-09-12 | 2019-10-02 | 0d |  | WeDo | 120h |
| 261 | 2.10.3 | Elaborar Runbook |  | 2d | 2019-10-23 | 2019-10-24 | 260 | 2019-10-03 | 2019-10-04 | 2d | 2019-10-03 | 2019-10-04 | 61d |  | WeDo | 16h |
| 262 | 2.10.4 | Testes de Sistema |  | 4d | 2019-10-23 | 2019-10-28 | 260 | 2019-10-03 | 2019-10-08 | 4d | 2019-10-03 | 2019-10-08 | 0d |  | WeDo | 32h |
| 263 | 2.10.5 | Testes Integrados |  | 3d | 2019-10-29 | 2019-10-31 | 262 | 2019-10-09 | 2019-10-11 | 3d | 2019-10-09 | 2019-10-11 | 0d |  | WeDo; Oi | 48h |
| 264 | 2.10.6 | UAT |  | 4d | 2019-11-01 | 2019-11-06 | 263 | 2019-10-14 | 2019-10-18 | 4d | 2019-10-14 | 2019-10-18 | 52d |  | WeDo; Oi | 64h |
| 265 | 2.10.7 | Elaborar PLIM |  | 2d | 2019-11-01 | 2019-11-04 | 263 | 2019-10-14 | 2019-10-15 | 2d | 2019-10-14 | 2019-10-15 | 0d |  | WeDo | 16h |
| 266 | 2.10.8 | Implantação |  | 1d | 2019-11-05 | 2019-11-05 | 265 | 2019-10-17 | 2019-10-17 | 1d | 2019-10-17 | 2019-10-17 | 0d |  | WeDo | 8h |
| 267 | 2.10.9 | Operação Assistida |  | 10d | 2019-11-06 | 2019-11-20 | 266 | 2019-10-18 | 2019-10-31 | 10d | 2019-10-18 | 2019-10-31 | 43d | 0d | WeDo; Oi | 160h |
| 268 | 2.10.10 | Onda 21 - Pos Tratamento da Fraude Regras de desbloqueio - Finalizada | milestone | 0d | 2019-11-20 | 2019-11-20 | 267 | 2019-10-31 | 2019-10-31 | 0d | 2019-10-31 | 2019-10-31 | 43d |  |  |  |
| 269 | 2.11 | **ONDA 22: Pós Tratamento da Fraude (Integração Fat, Cob e Contest)** |  | 50d | 2019-11-06 | 2020-01-21 |  | 2019-10-18 | 2020-01-02 | 50d | 2019-10-18 | 2020-01-02 | 0d |  |  | 520h |
| 270 | 2.11.1 | Análise (Desenho de Solução, Especificação Técnica, Cenários de Teste e Critérios de Aceitação) |  | 10d | 2019-11-06 | 2019-11-20 | 266 | 2019-10-18 | 2019-10-31 | 10d | 2019-10-18 | 2019-10-31 | 0d |  | WeDo; Oi | 160h |
| 271 | 2.11.2 | Construção e Testes Unitários |  | 25d | 2019-11-21 | 2019-12-27 | 270 | 2019-11-01 | 2019-12-06 | 25d | 2019-11-01 | 2019-12-06 | 0d |  | WeDo | 200h |
| 272 | 2.11.3 | Elaborar Runbook |  | 2d | 2019-12-30 | 2020-01-02 | 271 | 2019-12-09 | 2019-12-10 | 2d | 2019-12-09 | 2019-12-10 | 16d |  | WeDo | 16h |
| 273 | 2.11.4 | Testes de Sistema |  | 4d | 2019-12-30 | 2020-01-06 | 271 | 2019-12-09 | 2019-12-12 | 4d | 2019-12-09 | 2019-12-12 | 3d | 0d | WeDo | 32h |
| 274 | 2.11.5 | Testes Integrados |  | 2d | 2020-01-07 | 2020-01-08 | 273 | 2019-12-13 | 2019-12-16 | 2d | 2019-12-13 | 2019-12-16 | 3d | 0d | WeDo; Oi | 32h |
| 275 | 2.11.6 | UAT |  | 3d | 2020-01-09 | 2020-01-13 | 274 | 2019-12-17 | 2019-12-19 | 3d | 2019-12-17 | 2019-12-19 | 9d |  | WeDo; Oi | 48h |
| 276 | 2.11.7 | Elaborar PLIM |  | 2d | 2020-01-09 | 2020-01-10 | 274 | 2019-12-17 | 2019-12-18 | 2d | 2019-12-17 | 2019-12-18 | 3d | 0d | WeDo | 16h |
| 277 | 2.11.8 | Implantação |  | 2d | 2020-01-13 | 2020-01-14 | 276 | 2019-12-19 | 2019-12-20 | 2d | 2019-12-19 | 2019-12-20 | 3d | 0d | WeDo | 16h |
| 278 | 2.11.9 | Operação Assistida |  | 5d | 2020-01-15 | 2020-01-21 | 277 | 2019-12-23 | 2020-01-02 | 5d | 2019-12-23 | 2020-01-02 | 3d | 0d |  |  |
| 279 | 2.11.10 | Onda 22 - Pos Tratamento da Fraude - Finalizada | milestone | 0d | 2020-01-21 | 2020-01-21 | 278 | 2020-01-02 | 2020-01-02 | 0d | 2020-01-02 | 2020-01-02 | 3d |  |  |  |

| ID | WBS | Task | Type | Duration | Start | Finish | Predecessors | Baseline start | Baseline finish | Baseline duration | Baseline 1 start | Baseline 1 finish | Total slack | Resources | Work |
| --- | --- | --- | --- | --- | --- | --- | --- | --- | --- | --- | --- | --- | --- | --- | --- |
| 280 | 2.12 | **Treinamento Help Desk (FMS-06)** |  | 3d | 2019-12-30 | 2020-01-03 |  | 2019-12-09 | 2019-12-11 | 3d | 2019-12-09 | 2019-12-11 | 0d |  | 40h |
| 281 | 2.12.1 | Elaborar material |  | 1d | 2019-12-30 | 2019-12-30 | 271 | 2019-12-09 | 2019-12-09 | 1d | 2019-12-09 | 2019-12-09 | 0d | WeDo | 8h |
| 282 | 2.12.2 | Ambiente disponibilizado | milestone | 0d | 2019-12-30 | 2019-12-30 | 281 | 2019-12-09 | 2019-12-09 | 0d | 2019-12-09 | 2019-12-09 | 0d | Oi |  |
| 283 | 2.12.3 | Realizar Treinamento |  | 2d | 2020-01-02 | 2020-01-03 | 282 | 2019-12-10 | 2019-12-11 | 2d | 2019-12-10 | 2019-12-11 | 0d | WeDo; Oi | 32h |
| 284 | 2.12.4 | Treinamento Usuário Finalizado | milestone | 0d | 2020-01-03 | 2020-01-03 | 283 | 2019-12-11 | 2019-12-11 | 0d | 2019-12-11 | 2019-12-11 | 0d |  |  |
| 285 | 2.13 | **Treinamento Administração Funcional (FMS-03)** |  | 5d | 2020-01-06 | 2020-01-10 |  | 2019-12-12 | 2019-12-18 | 5d | 2019-12-12 | 2019-12-18 | 0d |  | 64h |
| 286 | 2.13.1 | Elaborar material |  | 2d | 2020-01-06 | 2020-01-07 | 284 | 2019-12-12 | 2019-12-13 | 2d | 2019-12-12 | 2019-12-13 | 0d | WeDo | 16h |
| 287 | 2.13.2 | Ambiente disponibilizado | milestone | 0d | 2020-01-07 | 2020-01-07 | 286 | 2019-12-13 | 2019-12-13 | 0d | 2019-12-13 | 2019-12-13 | 0d | Oi |  |
| 288 | 2.13.3 | Realizar Treinamento |  | 3d | 2020-01-08 | 2020-01-10 | 287 | 2019-12-16 | 2019-12-18 | 3d | 2019-12-16 | 2019-12-18 | 0d | WeDo; Oi | 48h |
| 289 | 2.13.4 | Treinamento Administração Funcional Finalizado | milestone | 0d | 2020-01-10 | 2020-01-10 | 288 | 2019-12-18 | 2019-12-18 | 0d | 2019-12-18 | 2019-12-18 | 0d |  |  |
| 290 | 2.14 | **Treinamento Administração Técnica (FMS-02)** |  | 6d | 2020-01-13 | 2020-01-20 |  | 2019-12-19 | 2019-12-30 | 6d | 2019-12-19 | 2019-12-30 | 0d |  | 72h |
| 291 | 2.14.1 | Elaborar material |  | 3d | 2020-01-13 | 2020-01-15 | 289 | 2019-12-19 | 2019-12-23 | 3d | 2019-12-19 | 2019-12-23 | 0d | WeDo | 24h |
| 292 | 2.14.2 | Ambiente disponibilizado | milestone | 0d | 2020-01-15 | 2020-01-15 | 291 | 2019-12-23 | 2019-12-23 | 0d | 2019-12-23 | 2019-12-23 | 0d | Oi |  |
| 293 | 2.14.3 | Realizar Treinamento |  | 3d | 2020-01-16 | 2020-01-20 | 292 | 2019-12-26 | 2019-12-30 | 3d | 2019-12-26 | 2019-12-30 | 0d | WeDo; Oi | 48h |
| 294 | 2.14.4 | Treinamento Administração Técnica Finalizado | milestone | 0d | 2020-01-20 | 2020-01-20 | 293 | 2019-12-30 | 2019-12-30 | 0d | 2019-12-30 | 2019-12-30 | 0d |  |  |
| 295 | 2.15 | **Treinamento Usuário (FMS-04)** |  | 4d | 2020-01-21 | 2020-01-24 |  | 2020-01-02 | 2020-01-07 | 4d | 2020-01-02 | 2020-01-07 | 0d |  | 48h |
| 296 | 2.15.1 | Elaborar material |  | 2d | 2020-01-21 | 2020-01-22 | 294 | 2020-01-02 | 2020-01-03 | 2d | 2020-01-02 | 2020-01-03 | 0d | WeDo | 16h |
| 297 | 2.15.2 | Ambiente disponibilizado | milestone | 0d | 2020-01-22 | 2020-01-22 | 296 | 2020-01-03 | 2020-01-03 | 0d | 2020-01-03 | 2020-01-03 | 0d | Oi |  |
| 298 | 2.15.3 | Realizar Treinamento |  | 2d | 2020-01-23 | 2020-01-24 | 297 | 2020-01-06 | 2020-01-07 | 2d | 2020-01-06 | 2020-01-07 | 0d | WeDo; Oi | 32h |
| 299 | 2.15.4 | Treinamento Usuário Finalizado | milestone | 0d | 2020-01-24 | 2020-01-24 | 298 | 2020-01-07 | 2020-01-07 | 0d | 2020-01-07 | 2020-01-07 | 0d |  |  |

Notes:
- 280: SERÁ MANTIDO? PODE SER SEQUENCIAL APOS A ULTIMA ONDA?
