# MPP_BR.A.16.POI.039.00 - PROJETO FRAUDE OI

Schedule from MS Project, 2017-09-04 to 2020-01-24, status date 2018-01-19, A marks actual dates.
SSI

## Calendars

- Standard: Mon-Fri 08:00-12:00, 13:00-17:00; Sat-Sun off. Exceptions (off unless hours are given): 2017-09-07 to 2020-09-07 (Feriado Sete Setembro, recurring), 2017-10-12 to 2020-10-12 (Nsa Aparecida, recurring), 2017-10-16 to 2019-10-16 (Dia do Informática, recurring), 2017-11-02 to 2020-11-02 (Finados, recurring), 2017-11-15 to 2020-11-15 (Republica, recurring), 2017-12-25 to 2020-12-25 (Natal, recurring), 2017-12-31 to 2019-12-31 (Vespera Ano Novo, recurring), 2018-01-01 to 2021-01-01 (Ano Novo, recurring), 2018-02-12 to 2018-02-13 (Carnaval 2018), 2018-03-30 (Semana Santa), 2018-04-21 to 2019-04-21 (Tiradentes, recurring), 2018-05-01 to 2020-05-01 (Dia do Trabalho, recurring), 2018-05-31 (Corpus Christi 2018), 2018-12-24 to 2020-12-24 (Vespera Natal, recurring), 2019-03-04 to 2019-03-05 (Carnaval 2019), 2019-06-20 (Corpus Christi 2019).

## Resources

| Resource |
| --- |
| Andre Jacomino |
| Nuno Pestana |
| WeDo |
| Oi |
| Fraude |
| Ti |
| Oi/DIEO/WEDO |
| Operações |
| WeDO/Operações |
| DIEO |
| Oi-Operações |
| WeDO/Oi-Operações |
| Oi-TI |
| Oi-Fraude/TI |
| Oi-Fraude |
| Oi-DIEO |
| Jacomino |
| Giullyan |
| Mariá Sumienski |
| Plácido Cavalcante |
| WAC |

## Schedule

| ID | WBS | Task | Type | Duration | Start | Finish | Predecessors | Complete | Remaining | Actual finish | Baseline start | Baseline finish | Baseline duration | Baseline 1 start | Baseline 1 finish | Total slack | Free slack | Constraint | Resources | Work | Actual work |
| --- | --- | --- | --- | --- | --- | --- | --- | --- | --- | --- | --- | --- | --- | --- | --- | --- | --- | --- | --- | --- | --- |
| 1 | 1 | **Projeto RAID FMS OI - Programa 1** |  | 341d | 2017-09-04 A | 2019-01-22 |  | 35% | 219.96d |  | 2017-09-04 | 2019-01-03 | 328d | 2017-09-04 | 2019-01-03 | 253d |  |  |  | 9881h | 4804.94h |
| 2 | 1.1 | **Aquisição de Infra-estrutura** |  | 235d | 2017-09-18 A | 2018-08-27 |  | 75% | 58.75d |  | 2017-09-18 | 2018-08-27 | 235d | 2017-09-18 | 2018-08-27 | 350d |  |  |  | 552h | 376h |
| 3 | 1.1.1 | **Acessos Lógicos** |  | 10d | 2017-09-18 A | 2017-09-29 A |  | 100% |  |  | 2017-09-18 | 2017-09-29 | 10d | 2017-09-18 | 2017-09-29 |  |  |  |  | 80h | 80h |
| 4 | 1.1.1.1 | Enviar dados de acesso e contas de serviço |  | 3d | 2017-09-18 A | 2017-09-20 A |  | 100% |  |  | 2017-09-18 | 2017-09-20 | 3d | 2017-09-18 | 2017-09-20 |  |  |  | WeDo | 24h | 24h |
| 5 | 1.1.1.2 | Liberar acessos |  | 7d | 2017-09-21 A | 2017-09-29 A | 4 | 100% |  |  | 2017-09-21 | 2017-09-29 | 7d | 2017-09-21 | 2017-09-29 |  |  |  | Oi | 56h | 56h |
| 6 | 1.1.1.3 | Acessos Lógicos Liberados | milestone | 0d | 2017-09-29 A | 2017-09-29 A | 5 | 100% |  |  | 2017-09-29 | 2017-09-29 | 0d | 2017-09-29 | 2017-09-29 |  |  |  |  |  |  |
| 7 | 1.1.2 | Ambiente de DEV disponível (RAID FMS) |  | 18d | 2017-12-04 A | 2017-12-29 A |  | 100% |  |  | 2017-11-29 | 2017-11-29 | 1d | 2017-11-29 | 2017-11-29 |  |  | start no earlier than 2017-12-04 | Oi-TI | 144h | 144h |
| 8 | 1.1.3 | Instalação Vanila Ambiente DEV (RAID FMS) |  | 3d | 2017-12-29 A | 2018-01-04 A | 7 | 100% |  |  | 2017-11-30 | 2017-12-05 | 4d | 2017-11-30 | 2017-12-05 |  |  | start no earlier than 2017-12-11 | Giullyan; Jacomino | 48h | 48h |
| 9 | 1.1.4 | Ambiente de DEV contingência disponível (RAID UC - HML) |  | 1d | 2017-10-30 A | 2017-10-30 A |  | 100% |  |  | 2017-10-27 | 2017-10-27 | 1d | 2017-10-27 | 2017-10-27 |  |  | must finish on 2017-10-26 | Oi-TI | 8h | 8h |
| 10 | 1.1.5 | Instalação Vanila DEV contingência (RAID UC - HML) |  | 4d | 2017-10-30 A | 2017-11-03 A | 9 | 100% |  |  | 2017-10-30 | 2017-11-03 | 4d | 2017-10-30 | 2017-11-03 |  |  |  | WeDo; Giullyan; Jacomino | 96h | 96h |
| 11 | 1.1.6 | Ambiente de HML disponível (RAID FMS) |  | 1d | 2018-05-15 | 2018-05-15 |  |  |  |  | 2018-05-15 | 2018-05-15 | 1d | 2018-05-15 | 2018-05-15 | 418d | 0d | start no earlier than 2018-05-15 | Oi-TI | 8h |  |
| 12 | 1.1.7 | Instalação Vanila Ambiente HML (RAID FMS) |  | 5d | 2018-05-16 | 2018-05-22 | 11 |  |  |  | 2018-05-16 | 2018-05-22 | 5d | 2018-05-16 | 2018-05-22 | 418d |  |  | Giullyan; Jacomino | 80h |  |
| 13 | 1.1.8 | Ambiente de PRD disponível (RAID FMS) |  | 1d | 2018-08-20 | 2018-08-20 |  |  |  |  | 2018-08-20 | 2018-08-20 | 1d | 2018-08-20 | 2018-08-20 | 350d | 0d | start no earlier than 2018-08-20 | Oi-TI | 8h |  |
| 14 | 1.1.9 | Instalação Vanila Ambiente PRD (RAID FMS) |  | 5d | 2018-08-21 | 2018-08-27 | 13 |  |  |  | 2018-08-21 | 2018-08-27 | 5d | 2018-08-21 | 2018-08-27 | 350d |  |  | Giullyan; Jacomino | 80h |  |
| 15 | 1.2 | **ONDA 0: Planejamento e Setup** |  | 90.12d | 2017-09-18 A | 2018-01-30 |  | 99% | 0d |  | 2017-09-18 | 2017-11-09 | 36d | 2017-09-18 | 2017-11-09 | 494.88d |  |  |  | 240h | 240h |
| 16 | 1.2.1 | Acessos Físicos Liberados | milestone | 0d | 2017-09-18 A | 2017-09-18 A |  | 100% |  |  | 2017-09-18 | 2017-09-18 | 0d | 2017-09-18 | 2017-09-18 |  |  |  | Oi; WeDo |  |  |
| 17 | 1.2.2 | Elaborar Plano de Desenvolvimento do Projeto (PDP) |  | 26d | 2017-09-26 A | 2017-11-03 A |  | 100% |  |  | 2017-09-26 | 2017-10-13 | 13d | 2017-09-26 | 2017-10-13 |  |  | finish no earlier than 2017-11-03 | Plácido Cavalcante | 208h | 208h |
| 18 | 1.2.3 | Elaborar Material kick-off | manual | 4d | 2017-10-09 A | 2017-10-13 A |  | 100% |  |  | 2017-10-09 | 2017-10-13 | 4d | 2017-10-09 | 2017-10-13 |  |  |  | Oi | 32h | 32h |
| 19 | 1.2.4 | Reunião de Kick-off | milestone | 0d | 2018-01-30 | 2018-01-30 | 17, 18 |  |  |  | 2017-11-09 | 2017-11-09 | 1d | 2017-11-09 | 2017-11-09 | 0d |  | must start on 2018-01-30 | WeDo; Oi |  |  |
| 20 | 1.2.5 | Onda 0 - Planejamento e Setup - Finalizada | milestone | 0d | 2018-01-30 | 2018-01-30 | 19 |  |  |  | 2017-11-09 | 2017-11-09 | 0d | 2017-11-09 | 2017-11-09 | 494.88d |  |  |  |  |  |
| 21 | 1.3 | **Treinamento - Conceitos Básicos - Teoria (FMS-01)** |  | 6d | 2017-10-10 A | 2017-10-19 |  | 100% |  | 2017-10-18 | 2017-10-10 | 2017-10-19 | 6d | 2017-10-10 | 2017-10-19 |  |  |  |  | 40h | 40h |
| 22 | 1.3.1 | Elaborar material |  | 4d | 2017-10-10 A | 2017-10-17 A |  | 100% |  |  | 2017-10-10 | 2017-10-17 | 4d | 2017-10-10 | 2017-10-17 |  |  |  | Giullyan | 32h | 32h |
| 23 | 1.3.2 | Ambiente disponibilizado | milestone | 0d | 2017-10-17 A | 2017-10-17 A | 22 | 100% |  |  | 2017-10-17 | 2017-10-17 | 0d | 2017-10-17 | 2017-10-17 |  |  |  | Oi |  |  |
| 24 | 1.3.3 | Realizar Treinamento |  | 1d | 2017-10-18 A | 2017-10-18 A | 23 | 100% |  |  | 2017-10-18 | 2017-10-18 | 1d | 2017-10-18 | 2017-10-18 |  |  |  | Giullyan | 8h | 8h |
| 25 | 1.3.4 | Treinamento Finalizado | milestone | 0d | 2017-10-18 A | 2017-10-18 A | 24 | 100% |  |  | 2017-10-18 | 2017-10-18 | 0d | 2017-10-18 | 2017-10-18 |  |  |  |  |  |  |

Notes:
- 7: Contingencia será ambiente RAID UC (aguardando chegada do serv. novo)

| ID | WBS | Task | Type | Duration | Start | Finish | Predecessors | Complete | Remaining | Actual start | Baseline start | Baseline finish | Baseline duration | Baseline 1 start | Baseline 1 finish | Total slack | Free slack | Constraint | Resources | Work | Actual work |
| --- | --- | --- | --- | --- | --- | --- | --- | --- | --- | --- | --- | --- | --- | --- | --- | --- | --- | --- | --- | --- | --- |
| 26 | 1.4 | **ONDA 2: TV Offline (Quick Wins - Motor de Fraude)** |  | 87d | 2017-10-04 A | 2018-02-09 |  | 79% | 17.93d |  | 2017-10-04 | 2018-02-05 | 83d | 2017-10-04 | 2018-02-05 |  |  |  |  | 4985h | 4148.94h |
| 27 | 1.4.1 | **Detalhamento de regras de negócio e critérios de aceitação** |  | 12d | 2017-10-04 A | 2017-10-23 A |  | 100% |  |  | 2017-10-04 | 2017-10-23 | 12d | 2017-10-04 | 2017-10-23 |  |  |  |  | 104h | 104h |
| 28 | 1.4.1.1 | 1o lote de regras para validação TI/WEDO (fontes de dados ainda indefinidas) |  | 3d | 2017-10-04 A | 2017-10-06 A |  | 100% |  |  | 2017-10-04 | 2017-10-06 | 3d | 2017-10-04 | 2017-10-06 |  |  |  | Oi-Fraude/TI | 24h | 24h |
| 29 | 1.4.1.2 | 2o lote de regras para validação TI/WEDO |  | 8d | 2017-10-04 A | 2017-10-17 A | 28 | 100% |  |  | 2017-10-04 | 2017-10-17 | 8d | 2017-10-04 | 2017-10-17 |  |  |  | Oi-Fraude/TI | 64h | 64h |
| 30 | 1.4.1.3 | Entrega versão final da documentação de regras (Definir entregas Onda) |  | 1d | 2017-10-23 A | 2017-10-23 A | 29 | 100% |  |  | 2017-10-23 | 2017-10-23 | 1d | 2017-10-23 | 2017-10-23 |  |  | start no earlier than 2017-10-23 | Oi-Fraude/TI; WeDo | 16h | 16h |
| 31 | 1.4.2 | Validação do detalhamento de regras e criterios de aceitação |  | 3d | 2017-10-24 A | 2017-10-26 A | 29 | 100% |  |  | 2017-10-24 | 2017-10-26 | 3d | 2017-10-24 | 2017-10-26 |  |  | start no earlier than 2017-10-24 | Oi-Fraude | 24h | 24h |
| 32 | 1.4.3 | Elaboração DAS de Arquitetura-Oi |  | 8d | 2017-10-13 A | 2017-10-25 A |  | 100% |  |  | 2017-10-17 | 2017-10-25 | 7d | 2017-10-17 | 2017-10-25 |  |  | start no earlier than 2017-10-17 | Oi-TI | 64h | 64h |
| 33 | 1.4.4 | **Análise (Desenho de Solução, Plano de Testes e Critérios de Aceitação)** |  | 22d | 2017-10-23 A | 2017-11-23 |  | 98% | 0.48d |  | 2017-10-23 | 2017-11-14 | 16d | 2017-10-23 | 2017-11-14 |  |  | start no earlier than 2017-10-23 | WeDo; Oi-TI | 536h | 420.94h |
| 34 | 1.4.4.1 | Elaboração de DSOL |  | 12d | 2017-10-23 A | 2017-11-08 A |  | 100% |  |  | 2017-10-23 | 2017-11-08 | 12d | 2017-10-23 | 2017-11-08 |  |  |  | Giullyan; Jacomino | 96h | 96h |
| 35 | 1.4.4.2 | Aprovação de DSOL |  | 1d | 2017-11-08 A | 2017-11-09 A | 34FF | 100% |  |  | 2017-11-08 | 2017-11-08 | 1d | 2017-11-08 | 2017-11-08 |  |  |  | Oi-Fraude/TI | 8h | 8h |
| 36 | 1.4.4.3 | Elaboração de Plano de Testes Consolidado |  | 8d | 2017-11-09 A | 2017-11-21 | 34, 30 | 95% | 0.4d |  | 2017-11-09 | 2017-11-13 | 3d | 2017-11-09 | 2017-11-13 | 1.9d | 0d |  | Mariá Sumienski | 64h | 60.8h |
| 37 | 1.4.4.4 | Aprovação de Plano de Testes Consolidado |  | 2d | 2017-11-22 A | 2017-11-23 | 36 | 95% | 0.1d |  | 2017-11-14 | 2017-11-14 | 1d | 2017-11-14 | 2017-11-14 | 0d |  |  | Oi-Fraude/TI | 16h | 15.2h |
| 38 | 1.4.5 | **Construção e Testes Unitários (DEV contingência - RAID UC/HML)** |  | 31d | 2017-11-13 A | 2017-12-27 A | 10, 35, 33 | 100% |  |  |  |  |  |  |  |  |  | start no earlier than 2017-11-13 |  | 2976h | 2976h |
| 39 | 1.4.5.1 | Carregamentos | manual | 31d | 2017-11-13 A | 2017-12-27 A |  | 100% |  |  |  |  |  |  |  |  |  |  | Nuno Pestana; Jacomino; Giullyan | 744h | 744h |
| 40 | 1.4.5.2 | Motor de Fraude | manual | 31d | 2017-11-13 A | 2017-12-27 A |  | 100% |  |  |  |  |  |  |  |  |  |  | Nuno Pestana; Jacomino; Giullyan | 744h | 744h |
| 41 | 1.4.5.3 | Front End & Workflow | manual | 31d | 2017-11-13 A | 2017-12-27 A |  | 100% |  |  |  |  |  |  |  |  |  |  | Nuno Pestana; Jacomino; Giullyan | 744h | 744h |
| 42 | 1.4.5.4 | Relatórios | manual | 31d | 2017-11-13 A | 2017-12-27 A |  | 100% |  |  |  |  |  |  |  |  |  |  | Nuno Pestana; Jacomino; Giullyan | 744h | 744h |
| 43 | 1.4.6 | Atualização de Servidores DEV Definitivo no CMDB [agente DISCOVER] |  | 4d | 2017-12-04 | 2017-12-08 |  |  |  |  | 2017-11-30 | 2017-12-06 | 5d | 2017-11-30 | 2017-12-06 | 529.88d |  | start no earlier than 2017-12-04 | Oi-TI | 32h |  |
| 44 | 1.4.7 | Testes de Sistema (DEV contingência - RAID UC / HML) |  | 7d | 2017-12-29 A | 2018-01-09 A | 38FS+1d | 100% |  |  | 2018-01-02 | 2018-01-05 | 4d | 2018-01-02 | 2018-01-05 |  |  |  | Mariá Sumienski | 56h | 56h |
| 45 | 1.4.8 | Pacote de Implantação (Criação e Instalação: DEV - RAID FMS) |  | 2d | 2018-01-08 A | 2018-01-09 A | 44FF | 100% |  |  | 2018-01-04 | 2018-01-05 | 2d | 2018-01-04 | 2018-01-05 |  |  |  | Jacomino; Giullyan | 32h | 32h |
| 46 | 1.4.9 | UAT (DEV - RAID FMS) |  | 10d | 2018-01-10 A | 2018-01-23 | 8, 44, 45 | 95% | 0.5d |  | 2018-01-08 | 2018-01-11 | 4d | 2018-01-08 | 2018-01-11 | 0d |  |  | Jacomino; Giullyan | 160h | 152h |
| 47 | 1.4.10 | **Pré-Implantação** |  | 41d | 2017-12-04 A | 2018-02-01 |  | 32% | 27.98d |  | 2017-11-30 | 2018-02-05 | 46d | 2017-11-30 | 2018-02-05 | 492.88d |  |  |  | 913h | 320h |
| 48 | 1.4.10.1 | **Definição responsabilidades N1/N2 [WEDO/Operações]** |  | 12.12d | 2018-01-02 | 2018-01-18 |  | 57% | 5.25d | 2017-12-28 | 2018-01-02 | 2018-01-15 | 10d | 2018-01-02 | 2018-01-15 |  |  |  | Oi/DIEO/WEDO | 577h | 272h |
| 49 | 1.4.10.1.1 | Definição de arvore de atendimento remedy [CCO/N1/N2/N3] |  | 4d | 2017-12-28 | 2018-01-04 | 38 |  |  |  | 2018-01-02 | 2018-01-08 | 5d | 2018-01-02 | 2018-01-08 | 512.88d |  | start no earlier than 2017-12-28 | WeDo; Oi-Operações; Oi-TI | 96h |  |
| 50 | 1.4.10.1.2 | Elaboração de matrix RACI [responsáveis x atividades] |  | 4d | 2017-12-28 | 2018-01-04 | 38 |  |  |  | 2018-01-02 | 2018-01-08 | 5d | 2018-01-02 | 2018-01-08 | 512.88d |  | start no earlier than 2017-12-28 | WeDO/Oi-Operações | 32h |  |
| 51 | 1.4.10.1.3 | Elaboração Runbook |  | 4d | 2017-12-28 A | 2018-01-04 A | 38 | 100% |  |  | 2018-01-02 | 2018-01-08 | 5d | 2018-01-02 | 2018-01-08 |  |  | start no earlier than 2017-12-28 | Giullyan; Jacomino | 64h | 64h |
| 52 | 1.4.10.1.4 | Validar/Aprovar Runbook |  | 4d | 2018-01-05 | 2018-01-11 | 51 |  |  |  | 2018-01-09 | 2018-01-15 | 5d | 2018-01-09 | 2018-01-15 | 7.88d | 1d | start no earlier than 2018-01-05 | Oi-TI; Oi-Operações | 64h |  |
| 53 | 1.4.10.1.5 | Elaboração de MOP |  | 13d | 2017-12-28 A | 2018-01-17 A | 38 | 100% |  |  | 2018-01-02 | 2018-01-08 | 5d | 2018-01-02 | 2018-01-08 |  |  | start no earlier than 2017-12-28 | Giullyan; Jacomino | 208h | 208h |
| 54 | 1.4.10.1.6 | Workshop com Operações |  | 1d | 2018-01-17 | 2018-01-18 | 53 |  |  |  | 2018-01-09 | 2018-01-09 | 1d | 2018-01-09 | 2018-01-09 | 502.88d |  | finish no earlier than 2018-01-05 | Oi-TI; Oi-Operações | 16h |  |
| 55 | 1.4.10.2 | Construção de Scripts de Monitoração (RAID ou Control-M?) |  | 14d | 2018-01-12 | 2018-02-01 | 52 |  |  |  | 2018-01-16 | 2018-02-05 | 15d | 2018-01-16 | 2018-02-05 | 6.88d |  | start no earlier than 2018-01-12 | Oi-Operações | 112h |  |
| 56 | 1.4.10.3 | Testes de Conectividade e Transmissão [liberação portas de firewall e gestão de acesso] |  | 4d | 2017-12-04 | 2017-12-08 |  |  |  |  | 2017-11-30 | 2017-12-06 | 5d | 2017-11-30 | 2017-12-06 | 43.88d |  | start no earlier than 2017-12-04 | Oi-TI; Oi-Operações | 64h |  |
| 57 | 1.4.10.4 | Elaborar PLIM |  | 2d | 2018-01-10 A | 2018-01-11 A | 44 | 100% |  |  | 2018-01-08 | 2018-01-09 | 2d | 2018-01-08 | 2018-01-09 |  |  |  | Giullyan; Jacomino | 32h | 32h |
| 58 | 1.4.10.5 | Validar/Aprovar PLIM | milestone | 0d | 2018-01-11 A | 2018-01-11 A | 57 | 100% |  |  | 2018-01-09 | 2018-01-09 | 0d | 2018-01-09 | 2018-01-09 |  |  |  | Oi-TI; Oi-Operações |  |  |
| 59 | 1.4.10.6 | Abrir de CRQ |  | 1d | 2018-01-11 A | 2018-01-11 A | 58FF | 100% |  |  | 2018-01-09 | 2018-01-09 | 1d | 2018-01-09 | 2018-01-09 |  |  |  | Oi-TI; Oi-Operações | 16h | 16h |
| 60 | 1.4.10.7 | Aprovar de CRQ |  | 5d | 2018-01-12 | 2018-01-18 | 59 |  |  |  | 2018-01-10 | 2018-01-16 | 5d | 2018-01-10 | 2018-01-16 | 4d | 3d |  | Oi-DIEO | 40h |  |
| 61 | 1.4.10.8 | Planejamento/Aprovação de GMUD |  | 5d | 2018-01-24 | 2018-01-30 | 60, 46 |  |  |  | 2018-01-17 | 2018-01-23 | 5d | 2018-01-17 | 2018-01-23 | 1d | 0d |  | Oi-DIEO | 40h |  |
| 62 | 1.4.10.9 | Pacote de Implantação (Criação e Instalação: DEV - RAID FMS) |  | 2d | 2018-01-24 | 2018-01-25 | 46 |  |  |  | 2018-01-12 | 2018-01-15 | 2d | 2018-01-12 | 2018-01-15 | 4d | 3d |  | Giullyan; Jacomino | 32h |  |

Notes:
- 27: Data de termino não estava alinhada com atividade 29 / Prazo de 12 passou para 14 dias.
- 28: Antecipei p dia 2, entretanto já está atrasado. / Wedo irá resonder e-mail do Kleyton sobre detalhamento de regras.
- 29: Antecipei p dia 2, junto com atividade anterior.
- 30: Definida a predecessora a atividade 30. / Será o marco para inicio da atividade de Análise/Wedo / Validar escopo e definir requisitos da entrega (Ti/Wedo) - ver com Jacomino melhor data
- 31: Não estava respeitando os links (atividade 28) / Será desconsiderada para inicio da etapa de Análise, por impactar no prazo de inicio (de 23 para 26.out)
- 32: Não estava respeitando o link com a atividade 30.
- 33: Atividade 32 empurrando inicio da atividade de Análise da Wedo para 26.out / Wedo planejou inicio em 23.out, por isso considera a atividade 31 como predecessora. / Impacto no inicio da atividade planejada pela Wedo (23.out) com Wedo/Pt já mobilizada. / Esforço da wedo previsto para 12 dias e não 16 (incluidas atividades de testes com prazo total de 4 dias). Esforços para plano de testes/aprovaçao precisam ser revisados.
- 35: Aprovação do DSOL ágil (finish to finish com elaboração). Deve terminar junto com atividade 35)
- 36: Esforço precisar ser revisto/reduzido durante o processo
- 37: Esforço precisar ser revisto/reduzido
- 45: Atividade removida. Não necessita TI na Onda 2.
- 46: Considerando o término dos Testes de Sistemas + Ambiente DEV - contingência / *** Trazer milestone financeiro para UAT (ao inves PRD) / *** Iniciar a Onda 3 em seguida

| ID | WBS | Task | Type | Duration | Start | Finish | Predecessors | Baseline start | Baseline finish | Baseline duration | Baseline 1 start | Baseline 1 finish | Total slack | Free slack | Resources | Work |
| --- | --- | --- | --- | --- | --- | --- | --- | --- | --- | --- | --- | --- | --- | --- | --- | --- |
| 63 | 1.4.11 | **Implantação** |  | 7d | 2018-01-31 | 2018-02-08 |  | 2018-01-24 | 2018-02-02 | 8d | 2018-01-24 | 2018-02-02 | 1d |  |  | 88h |
| 64 | 1.4.11.1 | Entrada em Produção (DEV - RAID FMS) |  | 1d | 2018-01-31 | 2018-01-31 | 62, 61, 46, 8 | 2018-01-24 | 2018-01-25 | 2d | 2018-01-24 | 2018-01-25 | 1d | 0d | WeDo | 8h |
| 65 | 1.4.11.2 | Operação Assistida |  | 5d | 2018-02-02 | 2018-02-08 | 64FS+1d | 2018-01-29 | 2018-02-02 | 5d | 2018-01-29 | 2018-02-02 | 1d | 0d | WeDo; Oi | 80h |
| 66 | 1.5 | Entrega da Especificação Técnica |  | 5d | 2018-02-02 | 2018-02-08 | 65SS | 2018-01-29 | 2018-01-29 | 0d | 2018-01-29 | 2018-01-29 | 487d | 0d | Giullyan; Jacomino | 80h |
| 67 | 1.6 | Onda 2 - TV off line - Finalizada | milestone | 0d | 2018-02-08 | 2018-02-08 | 66, 65 | 2018-02-02 | 2018-02-02 | 0d | 2018-02-02 | 2018-02-02 | 487d |  |  |  |
| 68 | 1.7 | WAC - Criação de Modelos (calibragem dos pesos para geração do score) |  | 35d | 2018-02-01 | 2018-03-23 | 64 | 2018-02-05 | 2018-03-27 | 35d | 2018-02-05 | 2018-03-27 | 458d |  | WAC | 280h |
| 69 | 1.8 | **ONDA 3: Oi Total 2P + Fixa R1 2P** |  | 44d | 2018-01-24 | 2018-03-28 |  | 2018-01-12 | 2018-03-09 | 39d | 2018-01-12 | 2018-03-09 | 0d |  |  | 464h |
| 70 | 1.8.1 | Análise (Desenho de Solução, Especificação Técnica, Cenários de Teste e Critérios de Aceitação) |  | 9d | 2018-01-29 | 2018-02-08 | 71 | 2018-01-17 | 2018-01-22 | 4d | 2018-01-17 | 2018-01-22 | 0d |  | WeDo; Oi | 144h |
| 71 | 1.8.2 | Análise Transact |  | 3d | 2018-01-24 | 2018-01-26 | 46 | 2018-01-12 | 2018-01-16 | 3d | 2018-01-12 | 2018-01-16 | 0d |  | WeDo | 24h |
| 72 | 1.8.3 | Construção e Testes Unitários |  | 8d | 2018-02-09 | 2018-02-22 | 70 | 2018-01-23 | 2018-02-01 | 8d | 2018-01-23 | 2018-02-01 | 0d |  | WeDo | 64h |
| 73 | 1.8.4 | Construção e Testes Unitários - Transact |  | 7d | 2018-02-23 | 2018-03-05 | 72 | 2018-02-02 | 2018-02-14 | 7d | 2018-02-02 | 2018-02-14 | 0d |  | WeDo | 56h |
| 74 | 1.8.5 | Elaborar Runbook |  | 2d | 2018-03-06 | 2018-03-07 | 73 | 2018-02-15 | 2018-02-16 | 2d | 2018-02-15 | 2018-02-16 | 470d |  | WeDo | 16h |
| 75 | 1.8.6 | Testes de Sistema |  | 4d | 2018-03-06 | 2018-03-09 | 73 | 2018-02-15 | 2018-02-20 | 4d | 2018-02-15 | 2018-02-20 | 0d |  | WeDo | 32h |
| 76 | 1.8.7 | Testes Integrados |  | 3d | 2018-03-12 | 2018-03-14 | 75 | 2018-02-21 | 2018-02-23 | 3d | 2018-02-21 | 2018-02-23 | 0d |  | WeDo; Oi | 48h |
| 77 | 1.8.8 | UAT |  | 3d | 2018-03-15 | 2018-03-19 | 76 | 2018-02-26 | 2018-02-28 | 3d | 2018-02-26 | 2018-02-28 | 0d |  | WeDo; Oi | 48h |
| 78 | 1.8.9 | Elaborar PLIM |  | 2d | 2018-03-15 | 2018-03-16 | 76 | 2018-02-26 | 2018-02-27 | 2d | 2018-02-26 | 2018-02-27 | 463d |  | WeDo | 16h |
| 79 | 1.8.10 | Implantação |  | 2d | 2018-03-20 | 2018-03-21 | 77 | 2018-03-01 | 2018-03-02 | 2d | 2018-03-01 | 2018-03-02 | 0d |  | WeDo | 16h |
| 80 | 1.8.11 | Operação Assistida |  | 5d | 2018-03-22 | 2018-03-28 | 79 | 2018-03-05 | 2018-03-09 | 5d | 2018-03-05 | 2018-03-09 | 455d | 0d |  |  |
| 81 | 1.8.12 | Onda 3 - Oi Total 2P + Fixa R1 1P - Finalizada | milestone | 0d | 2018-03-28 | 2018-03-28 | 80 | 2018-03-09 | 2018-03-09 | 0d | 2018-03-09 | 2018-03-09 | 455d |  |  |  |
| 82 | 1.9 | WAC - Analytics (construção dos modelos) | manual | 35d | 2018-02-07 | 2018-03-29 |  | 2018-02-07 | 2018-03-29 | 35d | 2018-02-07 | 2018-03-29 |  |  | WeDo | 280h |
| 83 | 1.10 | **Treinamento Usuário (FMS-04)** |  | 8d | 2018-02-16 | 2018-02-27 |  | 2018-01-26 | 2018-02-06 | 8d | 2018-01-26 | 2018-02-06 | 476d |  |  | 40h |
| 84 | 1.10.1 | Elaborar material |  | 5d | 2018-02-16 | 2018-02-22 | 72SS+3d | 2018-01-26 | 2018-02-01 | 5d | 2018-01-26 | 2018-02-01 | 476d | 0d | WeDo | 40h |
| 85 | 1.10.2 | Ambiente disponibilizado | milestone | 0d | 2018-02-22 | 2018-02-22 | 84 | 2018-02-01 | 2018-02-01 | 0d | 2018-02-01 | 2018-02-01 | 476d | 0d | Oi |  |
| 86 | 1.10.3 | Realizar Treinamento |  | 3d | 2018-02-23 | 2018-02-27 | 85 | 2018-02-02 | 2018-02-06 | 3d | 2018-02-02 | 2018-02-06 | 476d | 0d |  |  |
| 87 | 1.10.4 | Treinamento Usuário Finalizado | milestone | 0d | 2018-02-27 | 2018-02-27 | 86 | 2018-02-06 | 2018-02-06 | 0d | 2018-02-06 | 2018-02-06 | 476d |  |  |  |

Notes:
- 68: A questao do faseamento aqui, precisa ver 2 coisas: / 1. Forma de Atuação (local e remota) / 2. Foram planejadas 4 atuações no Programa 1 (precisar revisar as outras para fasear a Onda 2)
- 69: Modelos estatísticos devem devem estar prontos para entrada do online (risco alto)
- 70: Definir como sequencial, após "Análise Transact"
- 71: Wedo espera iniciar ao término do UAT da Onda 2, ao invés de iniciar ao término da Implantação (Onda 2). Motivo: tempo de inatividade Wedo até entrega do HW definitivo-Oi / Será incluida atividade de entrega, validação das regras de negócio, DAS e etc? / Ver com Jaca Analise Transact (historico da atividade)

| ID | WBS | Task | Type | Duration | Start | Finish | Predecessors | Baseline start | Baseline finish | Baseline duration | Baseline 1 start | Baseline 1 finish | Total slack | Resources | Work |
| --- | --- | --- | --- | --- | --- | --- | --- | --- | --- | --- | --- | --- | --- | --- | --- |
| 88 | 1.11 | **ONDAS 4, 5 e 6: Oi Total (3P) + Móvel Puro Online + Oi Total Online (4P)** |  | 34d | 2018-03-22 | 2018-05-10 |  | 2018-03-05 | 2018-04-20 | 34d | 2018-03-05 | 2018-04-20 | 0d |  | 408h |
| 89 | 1.11.1 | Análise (Desenho de Solução, Especificação Técnica, Cenários de Teste e Critérios de Aceitação) |  | 7d | 2018-03-22 | 2018-04-02 | 79 | 2018-03-05 | 2018-03-13 | 7d | 2018-03-05 | 2018-03-13 | 0d | WeDo; Oi | 112h |
| 90 | 1.11.2 | Construção e Testes Unitários |  | 15d | 2018-04-03 | 2018-04-23 | 89 | 2018-03-14 | 2018-04-04 | 15d | 2018-03-14 | 2018-04-04 | 0d | WeDo | 120h |
| 91 | 1.11.3 | Elaborar Runbook |  | 2d | 2018-04-24 | 2018-04-25 | 90 | 2018-04-05 | 2018-04-06 | 2d | 2018-04-05 | 2018-04-06 | 436d | WeDo | 16h |
| 92 | 1.11.4 | Testes de Sistema |  | 4d | 2018-04-24 | 2018-04-27 | 90 | 2018-04-05 | 2018-04-10 | 4d | 2018-04-05 | 2018-04-10 | 0d | WeDo | 32h |
| 93 | 1.11.5 | Testes Integrados |  | 2d | 2018-04-30 | 2018-05-02 | 92 | 2018-04-11 | 2018-04-12 | 2d | 2018-04-11 | 2018-04-12 | 0d | WeDo; Oi | 32h |
| 94 | 1.11.6 | UAT |  | 4d | 2018-05-03 | 2018-05-08 | 93 | 2018-04-13 | 2018-04-18 | 4d | 2018-04-13 | 2018-04-18 | 0d | WeDo; Oi | 64h |
| 95 | 1.11.7 | Elaborar PLIM |  | 2d | 2018-05-03 | 2018-05-04 | 93 | 2018-04-13 | 2018-04-16 | 2d | 2018-04-13 | 2018-04-16 | 430d | WeDo | 16h |
| 96 | 1.11.8 | Implantação |  | 2d | 2018-05-09 | 2018-05-10 | 94 | 2018-04-19 | 2018-04-20 | 2d | 2018-04-19 | 2018-04-20 | 0d | WeDo | 16h |
| 97 | 1.11.9 | Ondas 4, 5 e 6 - Oi Total 3P + Móvel Puro Online + Oi Total Online - Finalizada | milestone | 0d | 2018-05-10 | 2018-05-10 | 96 | 2018-04-20 | 2018-04-20 | 0d | 2018-04-20 | 2018-04-20 | 0d |  |  |
| 98 | 1.12 | **ONDA 7.1: Integração Bases de Dados (CRM)** |  | 57d | 2018-05-11 | 2018-07-31 |  | 2018-04-23 | 2018-07-12 | 57d | 2018-04-23 | 2018-07-12 | 0d |  | 688h |
| 99 | 1.12.1 | Análise (Desenho de Solução, Especificação Técnica, Cenários de Teste e Critérios de Aceitação) |  | 10d | 2018-05-11 | 2018-05-24 | 97 | 2018-04-23 | 2018-05-07 | 10d | 2018-04-23 | 2018-05-07 | 0d | WeDo; Oi | 160h |
| 100 | 1.12.2 | Construção e Testes Unitários |  | 25d | 2018-05-25 | 2018-06-29 | 99 | 2018-05-08 | 2018-06-12 | 25d | 2018-05-08 | 2018-06-12 | 0d | WeDo | 200h |
| 101 | 1.12.3 | Elaborar Runbook |  | 2d | 2018-07-02 | 2018-07-03 | 100 | 2018-06-13 | 2018-06-14 | 2d | 2018-06-13 | 2018-06-14 | 389d | WeDo | 16h |
| 102 | 1.12.4 | Testes de Sistema |  | 5d | 2018-07-02 | 2018-07-06 | 100 | 2018-06-13 | 2018-06-19 | 5d | 2018-06-13 | 2018-06-19 | 0d | WeDo | 40h |
| 103 | 1.12.5 | Testes Integrados - Plano e Execução |  | 10d | 2018-07-09 | 2018-07-20 | 102 | 2018-06-20 | 2018-07-03 | 10d | 2018-06-20 | 2018-07-03 | 0d | WeDo; Oi | 160h |
| 104 | 1.12.6 | UAT |  | 5d | 2018-07-23 | 2018-07-27 | 103 | 2018-07-04 | 2018-07-10 | 5d | 2018-07-04 | 2018-07-10 | 0d | WeDo; Oi | 80h |
| 105 | 1.12.7 | Elaborar PLIM |  | 2d | 2018-07-23 | 2018-07-24 | 103 | 2018-07-04 | 2018-07-05 | 2d | 2018-07-04 | 2018-07-05 | 374d | WeDo | 16h |
| 106 | 1.12.8 | Implantação |  | 2d | 2018-07-30 | 2018-07-31 | 104 | 2018-07-11 | 2018-07-12 | 2d | 2018-07-11 | 2018-07-12 | 0d | WeDo | 16h |
| 107 | 1.12.9 | Onda 7.1 - Integração Bases de Dados - Finalizada | milestone | 0d | 2018-07-31 | 2018-07-31 | 106 | 2018-07-12 | 2018-07-12 | 0d | 2018-07-12 | 2018-07-12 | 0d |  |  |
| 108 | 1.13 | **ONDA 7.2: Integração Bases de Dados (Inadimplência e Recargas)** |  | 31d | 2018-08-01 | 2018-09-13 |  | 2018-07-13 | 2018-08-24 | 31d | 2018-07-13 | 2018-08-24 | 0d |  | 368h |
| 109 | 1.13.1 | Análise (Desenho de Solução, Especificação Técnica, Cenários de Teste e Critérios de Aceitação) |  | 5d | 2018-08-01 | 2018-08-07 | 107 | 2018-07-13 | 2018-07-19 | 5d | 2018-07-13 | 2018-07-19 | 0d | WeDo; Oi | 80h |
| 110 | 1.13.2 | Construção e Testes Unitários |  | 15d | 2018-08-08 | 2018-08-28 | 109 | 2018-07-20 | 2018-08-09 | 15d | 2018-07-20 | 2018-08-09 | 0d | WeDo | 120h |
| 111 | 1.13.3 | Elaborar Runbook |  | 2d | 2018-08-29 | 2018-08-30 | 110 | 2018-08-10 | 2018-08-13 | 2d | 2018-08-10 | 2018-08-13 | 347d | WeDo | 16h |
| 112 | 1.13.4 | Testes de Sistema |  | 3d | 2018-08-29 | 2018-08-31 | 110 | 2018-08-10 | 2018-08-14 | 3d | 2018-08-10 | 2018-08-14 | 0d | WeDo | 24h |
| 113 | 1.13.5 | Testes Integrados - Plano e Execução |  | 3d | 2018-09-03 | 2018-09-05 | 112 | 2018-08-15 | 2018-08-17 | 3d | 2018-08-15 | 2018-08-17 | 0d | WeDo; Oi | 48h |
| 114 | 1.13.6 | UAT |  | 3d | 2018-09-06 | 2018-09-11 | 113 | 2018-08-20 | 2018-08-22 | 3d | 2018-08-20 | 2018-08-22 | 0d | WeDo; Oi | 48h |
| 115 | 1.13.7 | Elaborar PLIM |  | 2d | 2018-09-06 | 2018-09-10 | 113 | 2018-08-20 | 2018-08-21 | 2d | 2018-08-20 | 2018-08-21 | 341d | WeDo | 16h |
| 116 | 1.13.8 | Implantação |  | 2d | 2018-09-12 | 2018-09-13 | 114 | 2018-08-23 | 2018-08-24 | 2d | 2018-08-23 | 2018-08-24 | 0d | WeDo | 16h |
| 117 | 1.13.9 | Onda 7.2 - Integração Bases de Dados - Finalizada | milestone | 0d | 2018-09-13 | 2018-09-13 | 116 | 2018-08-24 | 2018-08-24 | 0d | 2018-08-24 | 2018-08-24 | 338d |  |  |

| ID | WBS | Task | Type | Duration | Start | Finish | Predecessors | Baseline start | Baseline finish | Baseline duration | Baseline 1 start | Baseline 1 finish | Total slack | Free slack | Resources | Work |
| --- | --- | --- | --- | --- | --- | --- | --- | --- | --- | --- | --- | --- | --- | --- | --- | --- |
| 118 | 1.14 | **Treinamento Administração Técnica (FMS-02)** |  | 8d | 2018-08-08 | 2018-08-17 |  | 2018-07-20 | 2018-07-31 | 8d | 2018-07-20 | 2018-07-31 | 356d |  |  | 88h |
| 119 | 1.14.1 | Elaborar material |  | 5d | 2018-08-08 | 2018-08-14 | 110SS | 2018-07-20 | 2018-07-26 | 5d | 2018-07-20 | 2018-07-26 | 356d | 0d | WeDo | 40h |
| 120 | 1.14.2 | Ambiente disponibilizado | milestone | 0d | 2018-08-14 | 2018-08-14 | 119 | 2018-07-26 | 2018-07-26 | 0d | 2018-07-26 | 2018-07-26 | 356d | 0d | Oi |  |
| 121 | 1.14.3 | Realizar Treinamento |  | 3d | 2018-08-15 | 2018-08-17 | 120 | 2018-07-27 | 2018-07-31 | 3d | 2018-07-27 | 2018-07-31 | 356d | 0d | WeDo; Oi | 48h |
| 122 | 1.14.4 | Treinamento Administração Técnica Finalizado | milestone | 0d | 2018-08-17 | 2018-08-17 | 121 | 2018-07-31 | 2018-07-31 | 0d | 2018-07-31 | 2018-07-31 | 356d |  |  |  |
| 123 | 1.15 | **Treinamento Administração Funcional (FMS-03)** |  | 8d | 2017-09-04 | 2017-09-14 |  | 2017-09-04 | 2017-09-14 | 8d | 2017-09-04 | 2017-09-14 | 586d |  |  | 88h |
| 124 | 1.15.1 | Elaborar material |  | 5d | 2017-09-04 | 2017-09-11 |  | 2017-09-04 | 2017-09-11 | 5d | 2017-09-04 | 2017-09-11 | 586d | 0d | WeDo | 40h |
| 125 | 1.15.2 | Ambiente disponibilizado | milestone | 0d | 2017-09-11 | 2017-09-11 | 124 | 2017-09-11 | 2017-09-11 | 0d | 2017-09-11 | 2017-09-11 | 586d | 0d | Oi |  |
| 126 | 1.15.3 | Realizar Treinamento |  | 3d | 2017-09-12 | 2017-09-14 | 125 | 2017-09-12 | 2017-09-14 | 3d | 2017-09-12 | 2017-09-14 | 586d | 0d | WeDo; Oi | 48h |
| 127 | 1.15.4 | Treinamento Administração Funcional Finalizado | milestone | 0d | 2017-09-14 | 2017-09-14 | 126 | 2017-09-14 | 2017-09-14 | 0d | 2017-09-14 | 2017-09-14 | 586d |  |  |  |
| 128 | 1.16 | **ONDA 9: Telas para Operação de Crédito** |  | 38d | 2018-09-14 | 2018-11-09 |  | 2018-08-27 | 2018-10-22 | 38d | 2018-08-27 | 2018-10-22 | 300d |  |  |  |
| 129 | 1.16.1 | Análise (Desenho de Solução, Especificação Técnica, Cenários de Teste e Critérios de Aceitação) |  | 5d | 2018-09-14 | 2018-09-20 | 116 | 2018-08-27 | 2018-08-31 | 5d | 2018-08-27 | 2018-08-31 | 300d | 0d |  |  |
| 130 | 1.16.2 | Construção e Testes Unitários |  | 15d | 2018-09-21 | 2018-10-11 | 129 | 2018-09-03 | 2018-09-24 | 15d | 2018-09-03 | 2018-09-24 | 300d | 0d |  |  |
| 131 | 1.16.3 | Elaborar Runbook |  | 2d | 2018-10-15 | 2018-10-17 | 130 | 2018-09-25 | 2018-09-26 | 2d | 2018-09-25 | 2018-09-26 | 316d |  |  |  |
| 132 | 1.16.4 | Testes de Sistema |  | 5d | 2018-10-15 | 2018-10-22 | 130 | 2018-09-25 | 2018-10-01 | 5d | 2018-09-25 | 2018-10-01 | 300d | 0d |  |  |
| 133 | 1.16.5 | Testes Integrados |  | 1d | 2018-10-23 | 2018-10-23 | 132 | 2018-10-02 | 2018-10-02 | 1d | 2018-10-02 | 2018-10-02 | 300d | 0d |  |  |
| 134 | 1.16.6 | UAT |  | 5d | 2018-10-24 | 2018-10-30 | 133 | 2018-10-03 | 2018-10-09 | 5d | 2018-10-03 | 2018-10-09 | 300d | 0d |  |  |
| 135 | 1.16.7 | Elaborar PLIM |  | 2d | 2018-10-24 | 2018-10-25 | 133 | 2018-10-03 | 2018-10-04 | 2d | 2018-10-03 | 2018-10-04 | 310d |  |  |  |
| 136 | 1.16.8 | Implantação |  | 2d | 2018-10-31 | 2018-11-01 | 134 | 2018-10-10 | 2018-10-11 | 2d | 2018-10-10 | 2018-10-11 | 300d | 0d |  |  |
| 137 | 1.16.9 | Operação Assistida |  | 5d | 2018-11-05 | 2018-11-09 | 136 | 2018-10-15 | 2018-10-22 | 5d | 2018-10-15 | 2018-10-22 | 300d | 0d |  |  |
| 138 | 1.16.10 | Onda 9 - Telas para Operação de Crédito - Finalizada | milestone | 0d | 2018-11-09 | 2018-11-09 | 137 | 2018-10-22 | 2018-10-22 | 0d | 2018-10-22 | 2018-10-22 | 300d |  |  |  |
| 139 | 1.17 | **ONDA 10: Oi Controle Sem Fatura Online** |  | 45d | 2018-09-14 | 2018-11-21 |  | 2018-08-27 | 2018-10-31 | 45d | 2018-08-27 | 2018-10-31 | 0d |  |  | 584h |
| 140 | 1.17.1 | Análise (Desenho de Solução, Especificação Técnica, Cenários de Teste e Critérios de Aceitação) |  | 10d | 2018-09-14 | 2018-09-27 | 116 | 2018-08-27 | 2018-09-10 | 10d | 2018-08-27 | 2018-09-10 | 0d |  | WeDo; Oi | 160h |
| 141 | 1.17.2 | Construção e Testes Unitários |  | 18d | 2018-09-28 | 2018-10-25 | 140 | 2018-09-11 | 2018-10-04 | 18d | 2018-09-11 | 2018-10-04 | 0d |  | WeDo | 144h |
| 142 | 1.17.3 | Elaborar Runbook |  | 2d | 2018-10-26 | 2018-10-29 | 141 | 2018-10-05 | 2018-10-08 | 2d | 2018-10-05 | 2018-10-08 | 308d |  | WeDo | 16h |
| 143 | 1.17.4 | Testes de Sistema |  | 4d | 2018-10-26 | 2018-10-31 | 141 | 2018-10-05 | 2018-10-10 | 4d | 2018-10-05 | 2018-10-10 | 0d |  | WeDo | 32h |
| 144 | 1.17.5 | Testes Integrados |  | 3d | 2018-11-01 | 2018-11-06 | 143 | 2018-10-11 | 2018-10-17 | 3d | 2018-10-11 | 2018-10-17 | 0d |  | WeDo; Oi | 48h |
| 145 | 1.17.6 | UAT |  | 4d | 2018-11-07 | 2018-11-12 | 144 | 2018-10-18 | 2018-10-23 | 4d | 2018-10-18 | 2018-10-23 | 299d |  | WeDo; Oi | 64h |
| 146 | 1.17.7 | Elaborar PLIM |  | 2d | 2018-11-07 | 2018-11-08 | 144 | 2018-10-18 | 2018-10-19 | 2d | 2018-10-18 | 2018-10-19 | 0d |  | WeDo | 16h |
| 147 | 1.17.8 | Implantação |  | 3d | 2018-11-09 | 2018-11-13 | 146 | 2018-10-22 | 2018-10-24 | 3d | 2018-10-22 | 2018-10-24 | 0d |  | WeDo | 24h |
| 148 | 1.17.9 | Operação Assistida |  | 5d | 2018-11-14 | 2018-11-21 | 147 | 2018-10-25 | 2018-10-31 | 5d | 2018-10-25 | 2018-10-31 | 293d | 0d | WeDo; Oi | 80h |
| 149 | 1.17.10 | Onda 10 - Oi Controle Sem Fatura Online - Finalizada | milestone | 0d | 2018-11-21 | 2018-11-21 | 148 | 2018-10-31 | 2018-10-31 | 0d | 2018-10-31 | 2018-10-31 | 293d |  |  |  |

| ID | WBS | Task | Type | Duration | Start | Finish | Predecessors | Baseline start | Baseline finish | Baseline duration | Baseline 1 start | Baseline 1 finish | Total slack | Free slack | Resources | Work |
| --- | --- | --- | --- | --- | --- | --- | --- | --- | --- | --- | --- | --- | --- | --- | --- | --- |
| 150 | 1.18 | **ONDA 8: Oi Fibra Online** |  | 10d | 2018-11-14 | 2018-11-28 |  | 2018-10-25 | 2018-11-08 | 10d | 2018-10-25 | 2018-11-08 | 288d |  |  | 104h |
| 151 | 1.18.1 | Análise (Desenho de Solução, Especificação Técnica, Cenários de Teste e Critérios de Aceitação) |  | 3d | 2018-11-14 | 2018-11-19 | 147 | 2018-10-25 | 2018-10-29 | 3d | 2018-10-25 | 2018-10-29 | 288d | 0d | WeDo | 24h |
| 152 | 1.18.2 | Construção e Testes Unitários |  | 3d | 2018-11-20 | 2018-11-22 | 151 | 2018-10-30 | 2018-11-01 | 3d | 2018-10-30 | 2018-11-01 | 288d | 0d | WeDo | 24h |
| 153 | 1.18.3 | Elaborar Runbook |  | 1d | 2018-11-20 | 2018-11-20 | 151 | 2018-10-30 | 2018-10-30 | 1d | 2018-10-30 | 2018-10-30 | 294d |  | WeDo | 8h |
| 154 | 1.18.4 | Testes de Sistema |  | 1d | 2018-11-23 | 2018-11-23 | 152 | 2018-11-05 | 2018-11-05 | 1d | 2018-11-05 | 2018-11-05 | 288d | 0d | WeDo; Oi | 16h |
| 155 | 1.18.5 | Testes Integrados |  | 1d | 2018-11-26 | 2018-11-26 | 154 | 2018-11-06 | 2018-11-06 | 1d | 2018-11-06 | 2018-11-06 | 288d | 0d | WeDo; Oi | 16h |
| 156 | 1.18.6 | UAT |  | 1d | 2018-11-27 | 2018-11-27 | 155 | 2018-11-07 | 2018-11-07 | 1d | 2018-11-07 | 2018-11-07 | 289d |  | WeDo | 8h |
| 157 | 1.18.7 | Elaborar PLIM |  | 1d | 2018-11-27 | 2018-11-27 | 155 | 2018-11-07 | 2018-11-07 | 1d | 2018-11-07 | 2018-11-07 | 288d | 0d | WeDo | 8h |
| 158 | 1.18.8 | Implantação |  | 1d | 2018-11-28 | 2018-11-28 | 157 | 2018-11-08 | 2018-11-08 | 1d | 2018-11-08 | 2018-11-08 | 288d | 0d |  |  |
| 159 | 1.18.9 | Onda 8 - Oi Fibra Online - Finalizada | milestone | 0d | 2018-11-28 | 2018-11-28 | 158 | 2018-11-08 | 2018-11-08 | 0d | 2018-11-08 | 2018-11-08 | 288d |  |  |  |
| 160 | 1.19 | **ONDA 11: Fixa R2 Offline** |  | 25d | 2018-11-14 | 2018-12-19 |  | 2018-10-25 | 2018-11-30 | 25d | 2018-10-25 | 2018-11-30 | 253d |  |  | 320h |
| 161 | 1.19.1 | Análise (Desenho de Solução, Especificação Técnica, Cenários de Teste e Critérios de Aceitação) |  | 5d | 2018-11-14 | 2018-11-21 | 147 | 2018-10-25 | 2018-10-31 | 5d | 2018-10-25 | 2018-10-31 | 253d | 0d | WeDo; Oi | 80h |
| 162 | 1.19.2 | Construção e Testes Unitários |  | 10d | 2018-11-22 | 2018-12-05 | 161 | 2018-11-01 | 2018-11-16 | 10d | 2018-11-01 | 2018-11-16 | 253d | 0d | WeDo | 80h |
| 163 | 1.19.3 | Elaborar Runbook |  | 2d | 2018-12-06 | 2018-12-07 | 162 | 2018-11-19 | 2018-11-20 | 2d | 2018-11-19 | 2018-11-20 | 281d |  | WeDo | 16h |
| 164 | 1.19.4 | Testes de Sistema |  | 4d | 2018-12-06 | 2018-12-11 | 162 | 2018-11-19 | 2018-11-22 | 4d | 2018-11-19 | 2018-11-22 | 253d | 0d | WeDo | 32h |
| 165 | 1.19.5 | Testes Integrados |  | 2d | 2018-12-12 | 2018-12-13 | 164 | 2018-11-23 | 2018-11-26 | 2d | 2018-11-23 | 2018-11-26 | 253d | 0d | WeDo; Oi | 32h |
| 166 | 1.19.6 | UAT |  | 3d | 2018-12-14 | 2018-12-18 | 165 | 2018-11-27 | 2018-11-29 | 3d | 2018-11-27 | 2018-11-29 | 274d |  | WeDo; Oi | 48h |
| 167 | 1.19.7 | Elaborar PLIM |  | 2d | 2018-12-14 | 2018-12-17 | 165 | 2018-11-27 | 2018-11-28 | 2d | 2018-11-27 | 2018-11-28 | 253d | 0d | WeDo | 16h |
| 168 | 1.19.8 | Implantação |  | 2d | 2018-12-18 | 2018-12-19 | 167 | 2018-11-29 | 2018-11-30 | 2d | 2018-11-29 | 2018-11-30 | 253d | 0d | WeDo | 16h |
| 169 | 1.19.9 | Onda 11 - Fixa R2 Offline - Finalizada | milestone | 0d | 2018-12-19 | 2018-12-19 | 168 | 2018-11-30 | 2018-11-30 | 0d | 2018-11-30 | 2018-11-30 | 253d | 0d |  |  |
| 170 | 1.20 | **ONDA 12: Fixa R2 Online** |  | 20d | 2018-12-20 | 2019-01-22 |  | 2018-12-03 | 2019-01-03 | 20d | 2018-12-03 | 2019-01-03 | 253d |  |  | 272h |
| 171 | 1.20.1 | Análise (Desenho de Solução, Especificação Técnica, Cenários de Teste e Critérios de Aceitação) |  | 5d | 2018-12-20 | 2018-12-28 | 169 | 2018-12-03 | 2018-12-07 | 5d | 2018-12-03 | 2018-12-07 | 253d | 0d | WeDo; Oi | 80h |
| 172 | 1.20.2 | Construção e Testes Unitários |  | 7d | 2019-01-02 | 2019-01-10 | 171 | 2018-12-10 | 2018-12-18 | 7d | 2018-12-10 | 2018-12-18 | 253d | 0d | WeDo | 56h |
| 173 | 1.20.3 | Elaborar Runbook |  | 2d | 2019-01-11 | 2019-01-14 | 172 | 2018-12-19 | 2018-12-20 | 2d | 2018-12-19 | 2018-12-20 | 259d |  | WeDo | 16h |
| 174 | 1.20.4 | Testes de Sistema |  | 3d | 2019-01-11 | 2019-01-15 | 172 | 2018-12-19 | 2018-12-21 | 3d | 2018-12-19 | 2018-12-21 | 253d | 0d | WeDo | 24h |
| 175 | 1.20.5 | Testes Integrados |  | 1d | 2019-01-16 | 2019-01-16 | 174 | 2018-12-26 | 2018-12-26 | 1d | 2018-12-26 | 2018-12-26 | 253d | 0d | WeDo; Oi | 16h |
| 176 | 1.20.6 | UAT |  | 3d | 2019-01-17 | 2019-01-21 | 175 | 2018-12-27 | 2019-01-02 | 3d | 2018-12-27 | 2019-01-02 | 254d |  | WeDo; Oi | 48h |
| 177 | 1.20.7 | Elaborar PLIM |  | 2d | 2019-01-17 | 2019-01-18 | 175 | 2018-12-27 | 2018-12-28 | 2d | 2018-12-27 | 2018-12-28 | 253d | 0d | WeDo | 16h |
| 178 | 1.20.8 | Implantação |  | 2d | 2019-01-21 | 2019-01-22 | 177 | 2019-01-02 | 2019-01-03 | 2d | 2019-01-02 | 2019-01-03 | 253d | 0d | WeDo | 16h |
| 179 | 1.20.9 | Operação Assistida | milestone | 0d | 2019-01-22 | 2019-01-22 | 178 | 2019-01-03 | 2019-01-03 | 0d | 2019-01-03 | 2019-01-03 | 253d | 0d | WeDo; Oi |  |
| 180 | 1.20.10 | Onda 12 - Fixa R2 Online - Finalizada | milestone | 0d | 2019-01-22 | 2019-01-22 | 179 | 2019-01-03 | 2019-01-03 | 0d | 2019-01-03 | 2019-01-03 | 253d |  |  |  |

Notes:
- 160: Depende UNIFICA ou CRM Unico - ver Cezar
- 170: Depende UNIFICA - ver Cezar

| ID | WBS | Task | Type | Duration | Start | Finish | Predecessors | Baseline start | Baseline finish | Baseline duration | Baseline 1 start | Baseline 1 finish | Total slack | Free slack | Resources | Work |
| --- | --- | --- | --- | --- | --- | --- | --- | --- | --- | --- | --- | --- | --- | --- | --- | --- |
| 181 | 2 | **Projeto RAID FMS OI - Programa 2** |  | 317d | 2018-10-17 | 2020-01-24 |  | 2018-10-17 | 2020-01-07 | 304d | 2018-10-17 | 2020-01-07 | 0d |  |  | 5704h |
| 182 | 2.1 | **ONDA 1: Planejamento e Setup** |  | 7d | 2018-11-14 | 2018-11-23 |  | 2018-10-25 | 2018-11-05 | 7d | 2018-10-25 | 2018-11-05 | 0d |  |  | 224h |
| 183 | 2.1.1 | Detalhamento (Macro Requisitos) |  | 7d | 2018-11-14 | 2018-11-23 | 147 | 2018-10-25 | 2018-11-05 | 7d | 2018-10-25 | 2018-11-05 | 291d |  | Oi | 56h |
| 184 | 2.1.2 | Revisão do Cronograma |  | 7d | 2018-11-14 | 2018-11-23 | 147 | 2018-10-25 | 2018-11-05 | 7d | 2018-10-25 | 2018-11-05 | 291d |  | WeDo; Oi | 112h |
| 185 | 2.1.3 | Atualização PDP |  | 7d | 2018-11-14 | 2018-11-23 | 147 | 2018-10-25 | 2018-11-05 | 7d | 2018-10-25 | 2018-11-05 | 0d |  | WeDo | 56h |
| 186 | 2.2 | **ONDA 1.1: Configuração Ambiente** |  | 30d | 2018-10-17 | 2018-11-29 |  | 2018-10-17 | 2018-11-29 | 30d | 2018-10-17 | 2018-11-29 | 0d |  |  | 480h |
| 187 | 2.2.1 | Integração Hadoop | manual | 30d | 2018-10-17 | 2018-11-29 | 147 | 2018-10-17 | 2018-11-29 | 30d | 2018-10-17 | 2018-11-29 |  |  | WeDo; Oi | 480h |
| 188 | 2.3 | **ONDAS 13 e 14: Fraude LDI + Roaming internacional Near Real Time** |  | 63d | 2018-11-26 | 2019-02-26 |  | 2018-11-06 | 2019-02-07 | 63d | 2018-11-06 | 2019-02-07 | 0d |  |  | 752h |
| 189 | 2.3.1 | Análise (Desenho de Solução, Especificação Técnica, Cenários de Teste e Critérios de Aceitação) |  | 12d | 2018-11-26 | 2018-12-11 | 185 | 2018-11-06 | 2018-11-22 | 12d | 2018-11-06 | 2018-11-22 | 0d |  | WeDo; Oi | 192h |
| 190 | 2.3.2 | Construção e Testes Unitários |  | 29d | 2018-12-12 | 2019-01-25 | 189 | 2018-11-23 | 2019-01-08 | 29d | 2018-11-23 | 2019-01-08 | 203d | 0d | WeDo | 232h |
| 191 | 2.3.3 | Elaborar Runbook |  | 3d | 2019-01-28 | 2019-01-30 | 190 | 2019-01-09 | 2019-01-11 | 3d | 2019-01-09 | 2019-01-11 | 247d |  | WeDo | 24h |
| 192 | 2.3.4 | Testes de Sistema |  | 6d | 2019-01-28 | 2019-02-04 | 190 | 2019-01-09 | 2019-01-16 | 6d | 2019-01-09 | 2019-01-16 | 203d | 0d | WeDo | 48h |
| 193 | 2.3.5 | Testes Integrados |  | 3d | 2019-02-05 | 2019-02-07 | 192 | 2019-01-17 | 2019-01-21 | 3d | 2019-01-17 | 2019-01-21 | 203d | 0d | WeDo; Oi | 48h |
| 194 | 2.3.6 | UAT |  | 6d | 2019-02-08 | 2019-02-15 | 193 | 2019-01-22 | 2019-01-29 | 6d | 2019-01-22 | 2019-01-29 | 203d | 0d | WeDo; Oi | 96h |
| 195 | 2.3.7 | Elaborar PLIM |  | 2d | 2019-02-08 | 2019-02-11 | 193 | 2019-01-22 | 2019-01-23 | 2d | 2019-01-22 | 2019-01-23 | 239d |  | WeDo | 16h |
| 196 | 2.3.8 | Implantação |  | 2d | 2019-02-18 | 2019-02-19 | 194 | 2019-01-30 | 2019-01-31 | 2d | 2019-01-30 | 2019-01-31 | 203d | 0d | WeDo | 16h |
| 197 | 2.3.9 | Operação Assistida |  | 5d | 2019-02-20 | 2019-02-26 | 196 | 2019-02-01 | 2019-02-07 | 5d | 2019-02-01 | 2019-02-07 | 228d | 0d | WeDo; Oi | 80h |
| 198 | 2.3.10 | ONDAS 13 e 14: Fraude LDI + Roaming internacional Near Real Time - Finalizado | milestone | 0d | 2019-02-26 | 2019-02-26 | 197 | 2019-02-07 | 2019-02-07 | 0d | 2019-02-07 | 2019-02-07 | 228d |  |  |  |
| 199 | 2.4 | **Treinamento Help Desk (FMS-06)** |  | 4d | 2018-12-17 | 2018-12-20 |  | 2018-11-28 | 2018-12-03 | 4d | 2018-11-28 | 2018-12-03 | 272d |  |  | 48h |
| 200 | 2.4.1 | Elaborar material |  | 2d | 2018-12-17 | 2018-12-18 | 190SS+3d | 2018-11-28 | 2018-11-29 | 2d | 2018-11-28 | 2018-11-29 | 272d | 0d | WeDo | 16h |
| 201 | 2.4.2 | Ambiente disponibilizado | milestone | 0d | 2018-12-18 | 2018-12-18 | 200 | 2018-11-29 | 2018-11-29 | 0d | 2018-11-29 | 2018-11-29 | 272d | 0d | Oi |  |
| 202 | 2.4.3 | Realizar Treinamento |  | 2d | 2018-12-19 | 2018-12-20 | 201 | 2018-11-30 | 2018-12-03 | 2d | 2018-11-30 | 2018-12-03 | 272d | 0d | WeDo; Oi | 32h |
| 203 | 2.4.4 | Treinamento Usuário Finalizado | milestone | 0d | 2018-12-20 | 2018-12-20 | 202 | 2018-12-03 | 2018-12-03 | 0d | 2018-12-03 | 2018-12-03 | 272d |  |  |  |
| 204 | 2.5 | **ONDA 15: Alarmes Externos** |  | 30d | 2019-02-20 | 2019-04-04 |  | 2019-02-01 | 2019-03-18 | 30d | 2019-02-01 | 2019-03-18 | 203d |  |  | 312h |
| 205 | 2.5.1 | Análise (Desenho de Solução, Especificação Técnica, Cenários de Teste e Critérios de Aceitação) |  | 5d | 2019-02-20 | 2019-02-26 | 196 | 2019-02-01 | 2019-02-07 | 5d | 2019-02-01 | 2019-02-07 | 203d | 0d | WeDo; Oi | 80h |
| 206 | 2.5.2 | Construção e Testes Unitários |  | 12d | 2019-02-27 | 2019-03-18 | 205 | 2019-02-08 | 2019-02-25 | 12d | 2019-02-08 | 2019-02-25 | 203d | 0d | WeDo | 96h |
| 207 | 2.5.3 | Elaborar Runbook |  | 2d | 2019-03-19 | 2019-03-20 | 206 | 2019-02-26 | 2019-02-27 | 2d | 2019-02-26 | 2019-02-27 | 214d |  | WeDo | 16h |
| 208 | 2.5.4 | Testes de Sistema |  | 3d | 2019-03-19 | 2019-03-21 | 206 | 2019-02-26 | 2019-02-28 | 3d | 2019-02-26 | 2019-02-28 | 203d | 0d | WeDo | 24h |
| 209 | 2.5.5 | Testes Integrados |  | 1d | 2019-03-22 | 2019-03-22 | 208 | 2019-03-01 | 2019-03-01 | 1d | 2019-03-01 | 2019-03-01 | 203d | 0d | WeDo; Oi | 16h |
| 210 | 2.5.6 | UAT |  | 3d | 2019-03-25 | 2019-03-27 | 209 | 2019-03-06 | 2019-03-08 | 3d | 2019-03-06 | 2019-03-08 | 209d |  | WeDo; Oi | 48h |
| 211 | 2.5.7 | Elaborar PLIM |  | 2d | 2019-03-25 | 2019-03-26 | 209 | 2019-03-06 | 2019-03-07 | 2d | 2019-03-06 | 2019-03-07 | 203d | 0d | WeDo | 16h |
| 212 | 2.5.8 | Implantação |  | 2d | 2019-03-27 | 2019-03-28 | 211 | 2019-03-08 | 2019-03-11 | 2d | 2019-03-08 | 2019-03-11 | 203d | 0d | WeDo | 16h |
| 213 | 2.5.9 | Operação Assistida |  | 5d | 2019-03-29 | 2019-04-04 | 212 | 2019-03-12 | 2019-03-18 | 5d | 2019-03-12 | 2019-03-18 | 203d | 0d |  |  |
| 214 | 2.5.10 | Onda 15 - Alarmes Externos - Finalizado | milestone | 0d | 2019-04-04 | 2019-04-04 | 213 | 2019-03-18 | 2019-03-18 | 0d | 2019-03-18 | 2019-03-18 | 203d |  |  |  |

Notes:
- 183: parelizado com término da ONDA 10
- 204: Tratamento de eventos de risco (ver planilha de macro requisitos)

| ID | WBS | Task | Type | Duration | Start | Finish | Predecessors | Baseline start | Baseline finish | Baseline duration | Baseline 1 start | Baseline 1 finish | Total slack | Resources | Work |
| --- | --- | --- | --- | --- | --- | --- | --- | --- | --- | --- | --- | --- | --- | --- | --- |
| 215 | 2.6 | **ONDAS 16 e 18: Carga + Motor Uso - Tráfego (Móvel, Fixa, VOD, VoIP, TV)** |  | 105d | 2018-11-26 | 2019-04-29 |  | 2018-11-06 | 2019-04-10 | 105d | 2018-11-06 | 2019-04-10 | 0d |  | 1168h |
| 216 | 2.6.1 | Análise (Desenho de Solução, Especificação Técnica, Cenários de Teste e Critérios de Aceitação) |  | 15d | 2018-11-26 | 2018-12-14 | 189SS | 2018-11-06 | 2018-11-27 | 15d | 2018-11-06 | 2018-11-27 | 0d | WeDo; Oi | 240h |
| 217 | 2.6.2 | Construção e Testes Unitários |  | 60d | 2018-12-17 | 2019-03-18 | 216 | 2018-11-28 | 2019-02-25 | 60d | 2018-11-28 | 2019-02-25 | 0d | WeDo | 480h |
| 218 | 2.6.3 | Elaborar Runbook |  | 2d | 2019-03-19 | 2019-03-20 | 217 | 2019-02-26 | 2019-02-27 | 2d | 2019-02-26 | 2019-02-27 | 214d | WeDo | 16h |
| 219 | 2.6.4 | Testes de Sistema |  | 10d | 2019-03-19 | 2019-04-01 | 217 | 2019-02-26 | 2019-03-13 | 10d | 2019-02-26 | 2019-03-13 | 0d | WeDo | 80h |
| 220 | 2.6.5 | Testes Integrados |  | 10d | 2019-04-02 | 2019-04-15 | 219 | 2019-03-14 | 2019-03-27 | 10d | 2019-03-14 | 2019-03-27 | 0d | WeDo; Oi | 160h |
| 221 | 2.6.6 | UAT |  | 10d | 2019-04-16 | 2019-04-29 | 220 | 2019-03-28 | 2019-04-10 | 10d | 2019-03-28 | 2019-04-10 | 186d | WeDo; Oi | 160h |
| 222 | 2.6.7 | Elaborar PLIM |  | 2d | 2019-04-16 | 2019-04-17 | 220 | 2019-03-28 | 2019-03-29 | 2d | 2019-03-28 | 2019-03-29 | 0d | WeDo | 16h |
| 223 | 2.6.8 | Implantação |  | 2d | 2019-04-18 | 2019-04-19 | 222 | 2019-04-01 | 2019-04-02 | 2d | 2019-04-01 | 2019-04-02 | 0d | WeDo | 16h |
| 224 | 2.6.9 | ONDAS 16 e 18: Carga + Motor Uso - Tráfego (Móvel, Fixa, VOD, VoIP, TV) - Finalizada | milestone | 0d | 2019-04-19 | 2019-04-19 | 223 | 2019-04-02 | 2019-04-02 | 0d | 2019-04-02 | 2019-04-02 | 0d |  |  |
| 225 | 2.7 | **ONDA 17: Motor Detecção - Tráfego** |  | 49d | 2019-04-22 | 2019-07-01 |  | 2019-04-03 | 2019-06-11 | 49d | 2019-04-03 | 2019-06-11 | 0d |  | 544h |
| 226 | 2.7.1 | Análise (Desenho de Solução, Especificação Técnica, Cenários de Teste e Critérios de Aceitação) |  | 10d | 2019-04-22 | 2019-05-06 | 224 | 2019-04-03 | 2019-04-16 | 10d | 2019-04-03 | 2019-04-16 | 0d | WeDo; Oi | 160h |
| 227 | 2.7.2 | Construção e Testes Unitários |  | 23d | 2019-05-07 | 2019-06-06 | 226 | 2019-04-17 | 2019-05-20 | 23d | 2019-04-17 | 2019-05-20 | 0d | WeDo | 184h |
| 228 | 2.7.3 | Elaborar Runbook |  | 2d | 2019-06-07 | 2019-06-10 | 227 | 2019-05-21 | 2019-05-22 | 2d | 2019-05-21 | 2019-05-22 | 157d | WeDo | 16h |
| 229 | 2.7.4 | Testes de Sistema |  | 5d | 2019-06-07 | 2019-06-13 | 227 | 2019-05-21 | 2019-05-27 | 5d | 2019-05-21 | 2019-05-27 | 0d | WeDo | 40h |
| 230 | 2.7.5 | Testes Integrados |  | 2d | 2019-06-14 | 2019-06-17 | 229 | 2019-05-28 | 2019-05-29 | 2d | 2019-05-28 | 2019-05-29 | 0d | WeDo; Oi | 32h |
| 231 | 2.7.6 | UAT |  | 5d | 2019-06-18 | 2019-06-25 | 230 | 2019-05-30 | 2019-06-05 | 5d | 2019-05-30 | 2019-06-05 | 147d | WeDo; Oi | 80h |
| 232 | 2.7.7 | Elaborar PLIM |  | 2d | 2019-06-18 | 2019-06-19 | 230 | 2019-05-30 | 2019-05-31 | 2d | 2019-05-30 | 2019-05-31 | 0d | WeDo | 16h |
| 233 | 2.7.8 | Implantação |  | 2d | 2019-06-21 | 2019-06-24 | 232 | 2019-06-03 | 2019-06-04 | 2d | 2019-06-03 | 2019-06-04 | 0d | WeDo | 16h |
| 234 | 2.7.9 | Operação Assistida |  | 5d | 2019-06-25 | 2019-07-01 | 233 | 2019-06-05 | 2019-06-11 | 5d | 2019-06-05 | 2019-06-11 | 0d |  |  |
| 235 | 2.7.10 | Onda 17 - Motor Detecção - Tráfego | milestone | 0d | 2019-07-01 | 2019-07-01 | 234 | 2019-06-11 | 2019-06-11 | 0d | 2019-06-11 | 2019-06-11 | 0d |  |  |
| 236 | 2.8 | **ONDA 19: Recargas Pre-Pago** |  | 15d | 2019-07-02 | 2019-07-22 |  | 2019-06-12 | 2019-07-03 | 15d | 2019-06-12 | 2019-07-03 | 0d |  | 176h |
| 237 | 2.8.1 | Análise (Desenho de Solução, Especificação Técnica, Cenários de Teste e Critérios de Aceitação) |  | 3d | 2019-07-02 | 2019-07-04 | 235 | 2019-06-12 | 2019-06-14 | 3d | 2019-06-12 | 2019-06-14 | 0d | WeDo; Oi | 48h |
| 238 | 2.8.2 | Construção e Testes Unitários |  | 8d | 2019-07-05 | 2019-07-16 | 237 | 2019-06-17 | 2019-06-27 | 8d | 2019-06-17 | 2019-06-27 | 0d | WeDo | 64h |
| 239 | 2.8.3 | Elaborar Runbook |  | 1d | 2019-07-17 | 2019-07-17 | 238 | 2019-06-28 | 2019-06-28 | 1d | 2019-06-28 | 2019-06-28 | 131d | WeDo | 8h |
| 240 | 2.8.4 | Testes de Sistema |  | 1d | 2019-07-17 | 2019-07-17 | 238 | 2019-06-28 | 2019-06-28 | 1d | 2019-06-28 | 2019-06-28 | 0d | WeDo | 8h |
| 241 | 2.8.5 | Testes Integrados |  | 1d | 2019-07-18 | 2019-07-18 | 240 | 2019-07-01 | 2019-07-01 | 1d | 2019-07-01 | 2019-07-01 | 0d | WeDo; Oi | 16h |
| 242 | 2.8.6 | UAT |  | 1d | 2019-07-19 | 2019-07-19 | 241 | 2019-07-02 | 2019-07-02 | 1d | 2019-07-02 | 2019-07-02 | 129d | WeDo; Oi | 16h |
| 243 | 2.8.7 | Elaborar PLIM |  | 1d | 2019-07-19 | 2019-07-19 | 241 | 2019-07-02 | 2019-07-02 | 1d | 2019-07-02 | 2019-07-02 | 0d | WeDo | 8h |
| 244 | 2.8.8 | Implantação |  | 1d | 2019-07-22 | 2019-07-22 | 243 | 2019-07-03 | 2019-07-03 | 1d | 2019-07-03 | 2019-07-03 | 0d | WeDo | 8h |
| 245 | 2.8.9 | Onda 19 - Recargas Pre-Pago - Finalizada | milestone | 0d | 2019-07-22 | 2019-07-22 | 244 | 2019-07-03 | 2019-07-03 | 0d | 2019-07-03 | 2019-07-03 | 128d |  |  |

Notes:
- 215: validar com Jaca motor (mesmo da móvel)
- 225: validar com Jaca motor (mesmo da fixa) - atividade paralelizada com onda 16

| ID | WBS | Task | Type | Duration | Start | Finish | Predecessors | Baseline start | Baseline finish | Baseline duration | Baseline 1 start | Baseline 1 finish | Total slack | Free slack | Resources | Work |
| --- | --- | --- | --- | --- | --- | --- | --- | --- | --- | --- | --- | --- | --- | --- | --- | --- |
| 246 | 2.9 | **ONDA 20: Criação de telas para operação (detecção de fraude Fixa R1, detecção de fraude Fixa R2, detecção de fraude TV, detecção de fraude Movel e Oi Total** |  | 55d | 2019-07-23 | 2019-10-07 |  | 2019-07-04 | 2019-09-18 | 55d | 2019-07-04 | 2019-09-18 | 0d |  |  | 712h |
| 247 | 2.9.1 | Análise (Desenho de Solução, Especificação Técnica, Cenários de Teste e Critérios de Aceitação) |  | 10d | 2019-07-23 | 2019-08-05 | 244 | 2019-07-04 | 2019-07-17 | 10d | 2019-07-04 | 2019-07-17 | 0d |  | WeDo; Oi | 160h |
| 248 | 2.9.2 | Construção e Testes Unitários |  | 24d | 2019-08-06 | 2019-09-06 | 247 | 2019-07-18 | 2019-08-20 | 24d | 2019-07-18 | 2019-08-20 | 0d |  | WeDo | 192h |
| 249 | 2.9.3 | Elaborar Runbook |  | 2d | 2019-09-09 | 2019-09-10 | 248 | 2019-08-21 | 2019-08-22 | 2d | 2019-08-21 | 2019-08-22 | 92d |  | WeDo | 16h |
| 250 | 2.9.4 | Testes de Sistema |  | 5d | 2019-09-09 | 2019-09-13 | 248 | 2019-08-21 | 2019-08-27 | 5d | 2019-08-21 | 2019-08-27 | 0d |  | WeDo | 40h |
| 251 | 2.9.5 | Testes Integrados |  | 2d | 2019-09-16 | 2019-09-17 | 250 | 2019-08-28 | 2019-08-29 | 2d | 2019-08-28 | 2019-08-29 | 0d |  | WeDo; Oi | 32h |
| 252 | 2.9.6 | UAT |  | 5d | 2019-09-18 | 2019-09-24 | 251 | 2019-08-30 | 2019-09-05 | 5d | 2019-08-30 | 2019-09-05 | 82d |  | WeDo; Oi | 80h |
| 253 | 2.9.7 | Elaborar PLIM |  | 2d | 2019-09-18 | 2019-09-19 | 251 | 2019-08-30 | 2019-09-02 | 2d | 2019-08-30 | 2019-09-02 | 0d |  | WeDo | 16h |
| 254 | 2.9.8 | Implantação |  | 2d | 2019-09-20 | 2019-09-23 | 253 | 2019-09-03 | 2019-09-04 | 2d | 2019-09-03 | 2019-09-04 | 0d |  | WeDo | 16h |
| 255 | 2.9.9 | Operação Assistida |  | 10d | 2019-09-24 | 2019-10-07 | 254 | 2019-09-05 | 2019-09-18 | 10d | 2019-09-05 | 2019-09-18 | 73d | 0d | WeDo; Oi | 160h |
| 256 | 2.9.10 | Onda 20 - Criação de telas para operação (detecção de fraude Fixa R1, detecção de fraude Fixa R2, detecção de fraude TV, detecção de fraude Movel e Oi Total - Finalizada | milestone | 0d | 2019-10-07 | 2019-10-07 | 255 | 2019-09-18 | 2019-09-18 | 0d | 2019-09-18 | 2019-09-18 | 73d |  |  |  |
| 257 | 2.10 | **ONDA 21: Pós Tratamento da Fraude (Regras de Desbloqueio)** |  | 40d | 2019-09-24 | 2019-11-20 |  | 2019-09-05 | 2019-10-31 | 40d | 2019-09-05 | 2019-10-31 | 0d |  |  | 544h |
| 258 | 2.10.1 | Análise (Desenho de Solução, Especificação Técnica, Cenários de Teste e Critérios de Aceitação) |  | 5d | 2019-09-24 | 2019-09-30 | 254 | 2019-09-05 | 2019-09-11 | 5d | 2019-09-05 | 2019-09-11 | 0d |  | WeDo; Oi | 80h |
| 259 | 2.10.2 | Construção e Testes Unitários |  | 15d | 2019-10-01 | 2019-10-22 | 258 | 2019-09-12 | 2019-10-02 | 15d | 2019-09-12 | 2019-10-02 | 0d |  | WeDo | 120h |
| 260 | 2.10.3 | Elaborar Runbook |  | 2d | 2019-10-23 | 2019-10-24 | 259 | 2019-10-03 | 2019-10-04 | 2d | 2019-10-03 | 2019-10-04 | 61d |  | WeDo | 16h |
| 261 | 2.10.4 | Testes de Sistema |  | 4d | 2019-10-23 | 2019-10-28 | 259 | 2019-10-03 | 2019-10-08 | 4d | 2019-10-03 | 2019-10-08 | 0d |  | WeDo | 32h |
| 262 | 2.10.5 | Testes Integrados |  | 3d | 2019-10-29 | 2019-10-31 | 261 | 2019-10-09 | 2019-10-11 | 3d | 2019-10-09 | 2019-10-11 | 0d |  | WeDo; Oi | 48h |
| 263 | 2.10.6 | UAT |  | 4d | 2019-11-01 | 2019-11-06 | 262 | 2019-10-14 | 2019-10-18 | 4d | 2019-10-14 | 2019-10-18 | 52d |  | WeDo; Oi | 64h |
| 264 | 2.10.7 | Elaborar PLIM |  | 2d | 2019-11-01 | 2019-11-04 | 262 | 2019-10-14 | 2019-10-15 | 2d | 2019-10-14 | 2019-10-15 | 0d |  | WeDo | 16h |
| 265 | 2.10.8 | Implantação |  | 1d | 2019-11-05 | 2019-11-05 | 264 | 2019-10-17 | 2019-10-17 | 1d | 2019-10-17 | 2019-10-17 | 0d |  | WeDo | 8h |
| 266 | 2.10.9 | Operação Assistida |  | 10d | 2019-11-06 | 2019-11-20 | 265 | 2019-10-18 | 2019-10-31 | 10d | 2019-10-18 | 2019-10-31 | 43d | 0d | WeDo; Oi | 160h |
| 267 | 2.10.10 | Onda 21 - Pos Tratamento da Fraude Regras de desbloqueio - Finalizada | milestone | 0d | 2019-11-20 | 2019-11-20 | 266 | 2019-10-31 | 2019-10-31 | 0d | 2019-10-31 | 2019-10-31 | 43d |  |  |  |
| 268 | 2.11 | **ONDA 22: Pós Tratamento da Fraude (Integração Fat, Cob e Contest)** |  | 50d | 2019-11-06 | 2020-01-21 |  | 2019-10-18 | 2020-01-02 | 50d | 2019-10-18 | 2020-01-02 | 0d |  |  | 520h |
| 269 | 2.11.1 | Análise (Desenho de Solução, Especificação Técnica, Cenários de Teste e Critérios de Aceitação) |  | 10d | 2019-11-06 | 2019-11-20 | 265 | 2019-10-18 | 2019-10-31 | 10d | 2019-10-18 | 2019-10-31 | 0d |  | WeDo; Oi | 160h |
| 270 | 2.11.2 | Construção e Testes Unitários |  | 25d | 2019-11-21 | 2019-12-27 | 269 | 2019-11-01 | 2019-12-06 | 25d | 2019-11-01 | 2019-12-06 | 0d |  | WeDo | 200h |
| 271 | 2.11.3 | Elaborar Runbook |  | 2d | 2019-12-30 | 2020-01-02 | 270 | 2019-12-09 | 2019-12-10 | 2d | 2019-12-09 | 2019-12-10 | 16d |  | WeDo | 16h |
| 272 | 2.11.4 | Testes de Sistema |  | 4d | 2019-12-30 | 2020-01-06 | 270 | 2019-12-09 | 2019-12-12 | 4d | 2019-12-09 | 2019-12-12 | 3d | 0d | WeDo | 32h |
| 273 | 2.11.5 | Testes Integrados |  | 2d | 2020-01-07 | 2020-01-08 | 272 | 2019-12-13 | 2019-12-16 | 2d | 2019-12-13 | 2019-12-16 | 3d | 0d | WeDo; Oi | 32h |
| 274 | 2.11.6 | UAT |  | 3d | 2020-01-09 | 2020-01-13 | 273 | 2019-12-17 | 2019-12-19 | 3d | 2019-12-17 | 2019-12-19 | 9d |  | WeDo; Oi | 48h |
| 275 | 2.11.7 | Elaborar PLIM |  | 2d | 2020-01-09 | 2020-01-10 | 273 | 2019-12-17 | 2019-12-18 | 2d | 2019-12-17 | 2019-12-18 | 3d | 0d | WeDo | 16h |
| 276 | 2.11.8 | Implantação |  | 2d | 2020-01-13 | 2020-01-14 | 275 | 2019-12-19 | 2019-12-20 | 2d | 2019-12-19 | 2019-12-20 | 3d | 0d | WeDo | 16h |
| 277 | 2.11.9 | Operação Assistida |  | 5d | 2020-01-15 | 2020-01-21 | 276 | 2019-12-23 | 2020-01-02 | 5d | 2019-12-23 | 2020-01-02 | 3d | 0d |  |  |
| 278 | 2.11.10 | Onda 22 - Pos Tratamento da Fraude - Finalizada | milestone | 0d | 2020-01-21 | 2020-01-21 | 277 | 2020-01-02 | 2020-01-02 | 0d | 2020-01-02 | 2020-01-02 | 3d |  |  |  |

| ID | WBS | Task | Type | Duration | Start | Finish | Predecessors | Baseline start | Baseline finish | Baseline duration | Baseline 1 start | Baseline 1 finish | Total slack | Resources | Work |
| --- | --- | --- | --- | --- | --- | --- | --- | --- | --- | --- | --- | --- | --- | --- | --- |
| 279 | 2.12 | **Treinamento Help Desk (FMS-06)** |  | 3d | 2019-12-30 | 2020-01-03 |  | 2019-12-09 | 2019-12-11 | 3d | 2019-12-09 | 2019-12-11 | 0d |  | 40h |
| 280 | 2.12.1 | Elaborar material |  | 1d | 2019-12-30 | 2019-12-30 | 270 | 2019-12-09 | 2019-12-09 | 1d | 2019-12-09 | 2019-12-09 | 0d | WeDo | 8h |
| 281 | 2.12.2 | Ambiente disponibilizado | milestone | 0d | 2019-12-30 | 2019-12-30 | 280 | 2019-12-09 | 2019-12-09 | 0d | 2019-12-09 | 2019-12-09 | 0d | Oi |  |
| 282 | 2.12.3 | Realizar Treinamento |  | 2d | 2020-01-02 | 2020-01-03 | 281 | 2019-12-10 | 2019-12-11 | 2d | 2019-12-10 | 2019-12-11 | 0d | WeDo; Oi | 32h |
| 283 | 2.12.4 | Treinamento Usuário Finalizado | milestone | 0d | 2020-01-03 | 2020-01-03 | 282 | 2019-12-11 | 2019-12-11 | 0d | 2019-12-11 | 2019-12-11 | 0d |  |  |
| 284 | 2.13 | **Treinamento Administração Funcional (FMS-03)** |  | 5d | 2020-01-06 | 2020-01-10 |  | 2019-12-12 | 2019-12-18 | 5d | 2019-12-12 | 2019-12-18 | 0d |  | 64h |
| 285 | 2.13.1 | Elaborar material |  | 2d | 2020-01-06 | 2020-01-07 | 283 | 2019-12-12 | 2019-12-13 | 2d | 2019-12-12 | 2019-12-13 | 0d | WeDo | 16h |
| 286 | 2.13.2 | Ambiente disponibilizado | milestone | 0d | 2020-01-07 | 2020-01-07 | 285 | 2019-12-13 | 2019-12-13 | 0d | 2019-12-13 | 2019-12-13 | 0d | Oi |  |
| 287 | 2.13.3 | Realizar Treinamento |  | 3d | 2020-01-08 | 2020-01-10 | 286 | 2019-12-16 | 2019-12-18 | 3d | 2019-12-16 | 2019-12-18 | 0d | WeDo; Oi | 48h |
| 288 | 2.13.4 | Treinamento Administração Funcional Finalizado | milestone | 0d | 2020-01-10 | 2020-01-10 | 287 | 2019-12-18 | 2019-12-18 | 0d | 2019-12-18 | 2019-12-18 | 0d |  |  |
| 289 | 2.14 | **Treinamento Administração Técnica (FMS-02)** |  | 6d | 2020-01-13 | 2020-01-20 |  | 2019-12-19 | 2019-12-30 | 6d | 2019-12-19 | 2019-12-30 | 0d |  | 72h |
| 290 | 2.14.1 | Elaborar material |  | 3d | 2020-01-13 | 2020-01-15 | 288 | 2019-12-19 | 2019-12-23 | 3d | 2019-12-19 | 2019-12-23 | 0d | WeDo | 24h |
| 291 | 2.14.2 | Ambiente disponibilizado | milestone | 0d | 2020-01-15 | 2020-01-15 | 290 | 2019-12-23 | 2019-12-23 | 0d | 2019-12-23 | 2019-12-23 | 0d | Oi |  |
| 292 | 2.14.3 | Realizar Treinamento |  | 3d | 2020-01-16 | 2020-01-20 | 291 | 2019-12-26 | 2019-12-30 | 3d | 2019-12-26 | 2019-12-30 | 0d | WeDo; Oi | 48h |
| 293 | 2.14.4 | Treinamento Administração Técnica Finalizado | milestone | 0d | 2020-01-20 | 2020-01-20 | 292 | 2019-12-30 | 2019-12-30 | 0d | 2019-12-30 | 2019-12-30 | 0d |  |  |
| 294 | 2.15 | **Treinamento Usuário (FMS-04)** |  | 4d | 2020-01-21 | 2020-01-24 |  | 2020-01-02 | 2020-01-07 | 4d | 2020-01-02 | 2020-01-07 | 0d |  | 48h |
| 295 | 2.15.1 | Elaborar material |  | 2d | 2020-01-21 | 2020-01-22 | 293 | 2020-01-02 | 2020-01-03 | 2d | 2020-01-02 | 2020-01-03 | 0d | WeDo | 16h |
| 296 | 2.15.2 | Ambiente disponibilizado | milestone | 0d | 2020-01-22 | 2020-01-22 | 295 | 2020-01-03 | 2020-01-03 | 0d | 2020-01-03 | 2020-01-03 | 0d | Oi |  |
| 297 | 2.15.3 | Realizar Treinamento |  | 2d | 2020-01-23 | 2020-01-24 | 296 | 2020-01-06 | 2020-01-07 | 2d | 2020-01-06 | 2020-01-07 | 0d | WeDo; Oi | 32h |
| 298 | 2.15.4 | Treinamento Usuário Finalizado | milestone | 0d | 2020-01-24 | 2020-01-24 | 297 | 2020-01-07 | 2020-01-07 | 0d | 2020-01-07 | 2020-01-07 | 0d |  |  |

Notes:
- 279: SERÁ MANTIDO? PODE SER SEQUENCIAL APOS A ULTIMA ONDA?
