# STI - Nome da Solicitação (Template Cronograma)

Schedule from MS Project, 2012-09-03 to 2012-12-27.
OI/TELEMAR

## Calendars

- Feriados Oi: Mon-Fri 09:00-12:00, 13:00-18:00; Sat-Sun off. Exceptions (off unless hours are given): 2012-09-07 (Independência), 2012-10-12 (Nossa Senhora Aparecida), 2012-11-02 (Finados), 2012-11-15 to 2012-11-16 (Proclamação da Repuplica), 2012-11-19 to 2012-11-20 (Dia Consciência Negra), 2012-12-24 to 2012-12-25 (Recesso Natal).

## Resources

| Resource |
| --- |
| GP |
| LT |

## Schedule

| ID | WBS | Task | Type | Duration | Start | Finish | Predecessors | Total slack | Duração a Considerar | Versão do Cronograma | Text2 |
| --- | --- | --- | --- | --- | --- | --- | --- | --- | --- | --- | --- |
| 1 | 1 | **Desenvolver Soluções** |  | 52d? | 2012-09-03 | 2012-11-22 |  | 0d | 00001 | 1.0 |  |
| 2 | 1.1 | **Plano, Desenho da Solução e Consolidação de Custo Final** |  | 45d? | 2012-09-03 | 2012-11-07 |  | 0d |  | 1.0 |  |
| 3 | 1.1.1 | **Plano - Efetuar Planejamento do Desenho da Solução** |  | 9d? | 2012-09-03 | 2012-09-14 |  | 0d | 00001 | 1.0 |  |
| 4 | 1.1.1.1 | **Caracterizar Solicitação** |  | 1d? | 2012-09-03 | 2012-09-03 |  | 0d | 00001 | 1.0 |  |
| 5 | 1.1.1.1.1 | Checkpoint: Solicitação iniciada | milestone | 0d | 2012-09-03 | 2012-09-03 |  | 0d | 00001 | 1.0 | GP |
| 6 | 1.1.1.1.2 | Efetuar Caracterização Solicitação e Ajustar Cronograma para Efetuar o Plano | milestone | 1d? | 2012-09-03 | 2012-09-03 | 5 | 0d | 00001 | 1.0 | GP |
| 7 | 1.1.1.1.3 | 1° Versão do Termo de Abertura Criada | milestone | 0d | 2012-09-03 | 2012-09-03 | 6 | 0d | 00001 | 1.0 | GP |
| 8 | 1.1.1.2 | **Elaborar Visão da Solução Macro** |  | 4d? | 2012-09-03 | 2012-09-10 |  | 0d | 00001 | 1.0 |  |
| 9 | 1.1.1.2.1 | Checkpoint: Tipo de Envolvimento da Oi Definido para Visão da Solução Macro por Sistema | milestone | 0d | 2012-09-03 | 2012-09-03 | 7 | 0d | 00001 | 1.0 | LT |
| 10 | 1.1.1.2.2 | Realizar Entendimento da Solicitação com Cliente |  | 1d? | 2012-09-04 | 2012-09-04 | 9 | 0d | 00001 | 1.0 | LT |
| 11 | 1.1.1.2.3 | Elaborar Visão da Solução Macro com Mapa de Requisitos |  | 1d? | 2012-09-05 | 2012-09-05 | 10 | 0d | 00001 | 1.0 | LT |
| 12 | 1.1.1.2.4 | Elaborar Parecer de Infra Macro |  | 1d? | 2012-09-06 | 2012-09-06 | 11 | 0d | 00001 | 1.0 | LT |
| 13 | 1.1.1.2.5 | Realizar 1a. Reunião Plenária |  | 1d? | 2012-09-10 | 2012-09-10 | 12 | 0d | 00001 | 1.0 | LT |
| 14 | 1.1.1.2.6 | Visão da Solução Macro aprovada com ajustes da Fábrica e Cliente (Se necessário) e CSOL Lider confirmado | milestone | 0d | 2012-09-10 | 2012-09-10 | 13 | 0d | 00001 | 1.0 | GP |
| 15 | 1.1.1.3 | **Planejar atividades e Envolvimento Oi no Desenho da Solução** |  | 2d? | 2012-09-11 | 2012-09-12 |  | 0d | 00001 | 1.0 |  |
| 16 | 1.1.1.3.1 | Sistema 1 - Planejar Desenho da Solução por sistema (RTs) e Infra/Operações |  | 1d? | 2012-09-11 | 2012-09-11 | 14 | 0d | 00001 | 1.0 | RT |
| 17 | 1.1.1.3.2 | Sistema 2 - Planejar Desenho da Solução por sistema (RTs) e Infra/Operações |  | 1d? | 2012-09-11 | 2012-09-11 | 14 | 0d |  | 1.0 | RT |
| 18 | 1.1.1.3.3 | Checkpoint: Tipo de Envolvimento da Oi para DS definido | milestone | 0d | 2012-09-11 | 2012-09-11 | 17, 16 | 0d | 00001 | 1.0 | GP |
| 19 | 1.1.1.3.4 | Consolidar e Refinar Planejamentos de Implementação do Desenho da Solução até Aprovação Financeira |  | 1d? | 2012-09-12 | 2012-09-12 | 18 | 0d | 00001 | 1.0 | LT |
| 20 | 1.1.1.4 | **Fechar Plano e Realizar Alinhamento do Escopo** |  | 2d? | 2012-09-13 | 2012-09-14 |  | 0d | 00001 | 1.0 |  |
| 21 | 1.1.1.4.1 | Finalizar elaboração do Termo de Abertura |  | 1d? | 2012-09-13 | 2012-09-13 | 19 | 0d | 00001 | 1.0 | GP |
| 22 | 1.1.1.4.2 | Planejamento Ratificado/Confirmado com Cliente (Cronograma Preliminar do DPS) | milestone | 0d | 2012-09-13 | 2012-09-13 | 21 | 0d | 00001 | 1.0 | GP |
| 23 | 1.1.1.4.3 | Realizar Pre-Candidatura Release |  | 1d? | 2012-09-14 | 2012-09-14 | 22 | 0d | 00001 | 1.0 | LT |
| 24 | 1.1.1.5 | Checkpoint: Plano finalizado | milestone | 0d | 2012-09-14 | 2012-09-14 | 23 | 0d | 00001 | 1.0 | GP |

Notes:
- 4: 1) Aplicar checklist de intensidade de gestão, artefatos de gestão / 2) Definir marco na EF para criação da solicitação de INFRA. / 3) Confirmar Envolvidos / Entendimento da Solicitação para confirmar a intensidade de Gestão / Confirmar Sistemas Impactados e envolvidos aplicando o checklist de infra e arquitetura / solicitar RTs
- 8: Lider Tecnico ou Arquitetura / Plano sugerido: / 1) 1a. Reunião - Convocar interlocutores + Clientes (se necessário) e sem a fabrica (na primeira reunião pode ser feito só na Oi). / 1.1) Analisar a Visão Gráfica da Solução para confirmar os sistemas impactados. Se surgir novos, solicitar os RTs respectivos. / 1.2) Com todos os RT's presentes, criar o terceiro estágio de maturidade da Visão Gráfica da solução, necessário para elaborar em seguida o a Visão Macro da Solução (listagem das funcionalidades principais e outras informações pertinentes). / 1.3) Avaliar necessidade de INFRA por sistema / 1.4) Elaborar a Visão Macro da Solução / 1.5) Confirmar o Cronograma Preliminar do Plano ( "Estudo Alargado").
- 14: Lider Tecnico ou Arquitetura / 1) Se a arquitetura foi Receptora do Plano (conduziu a Elaboração da Visão Macro) fazer reunião de Validação com a(s) fabrica(s) com Sistemas impactados. / 2) Caso não tenha sido, fazer reunião de Validação com a Arquitetura e a(s) fabrica(s) com Sistemas impactados.
- 15: Lider Tecnico / Receber planejamento do Desenho da Solução dos envolvidos RTS e Lider de Infra e Operações, sugestão das Iterações do Desenho da Solução pelos RTs, definição envolvimento da Oi para DS / Engenharia: Incluir atividades de recebimento da documentação do GDE e reuniões de validação / - Consultar repositório para identificar a Lista das Funcionalidades ou casos de uso / - Criar matriz rastreabilidade requisito de negocio x funcionalidade ou caso de uso. / - Criar método para estimar as funcionalidades ou casos de uso: Entrevista, detalhamento, escrever, revisar, reuniões de validação / - Aplicar checklist de envolvimento Oi na EF / - Definir modelo de aprovação com clientes, considerar: / . quantidade de iterações para validação / . validações com Cliente solicitante / . validações com as áreas impactadas. / . metodo a ser aplicado: reuniões, diagrama de atividades e sequencia, prototipação

| ID | WBS | Task | Type | Duration | Start | Finish | Predecessors | Total slack | Duração a Considerar | Versão do Cronograma | Text2 |
| --- | --- | --- | --- | --- | --- | --- | --- | --- | --- | --- | --- |
| 25 | 1.1.2 | **Especificar Desenho da Solução** |  | 36d? | 2012-09-17 | 2012-11-07 |  | 0d | 00001 | 1.0 |  |
| 26 | 1.1.2.1 | **Iniciar Desenho da Solução** |  | 2d? | 2012-09-17 | 2012-09-18 |  | 0d | 00001 | 1.0 |  |
| 27 | 1.1.2.1.1 | Efetuar o levantamento funcional e fechar a Visão da Solução Final para a 2ª plenária. |  | 1d? | 2012-09-17 | 2012-09-17 | 24 | 0d | 00001 | 1.0 | LT |
| 28 | 1.1.2.1.2 | Checkpoint de Avaliação de necessidade de TradeOFF | milestone | 0d | 2012-09-17 | 2012-09-17 | 27 | 0d | 00001 | 1.0 | GP |
| 29 | 1.1.2.1.3 | Checkpoint de Alinhamento entre GP Estruturante, GP Legado e Arquitetura - Revisão impacto nos Projetos Estruturantes. | milestone | 0d | 2012-09-17 | 2012-09-17 | 27 | 0d | 00001 | 1.0 | GP |
| 30 | 1.1.2.1.4 | Realizar 2a. Plenária |  | 1d? | 2012-09-18 | 2012-09-18 | 29, 28, 27 | 0d | 00001 | 1.0 | LT |
| 31 | 1.1.2.2 | Aprovar Visão da Solução Final com Cliente |  | 1d | 2012-09-19 | 2012-09-19 | 30 | 0d | 00001 | 1.0 | GP |
| 32 | 1.1.2.3 | Visão da Solução Final Aprovada | milestone | 0d | 2012-09-19 | 2012-09-19 | 31 | 0d | 00001 | 1.0 | GP |
| 33 | 1.1.2.4 | **Elaborar e Validar o Desenho da Solução** |  | 15d? | 2012-09-20 | 2012-10-10 |  | 0d | 00001 | 1.0 |  |
| 34 | 1.1.2.4.1 | **Detalhamento Funcional ou Caso de Uso + Outros Artefatos de acordo com a Dinamica do Desenho da Solução** |  | 15d? | 2012-09-20 | 2012-10-10 |  | 0d | 00001 | 1.0 |  |
| 35 | 1.1.2.4.1.1 | **1ª iteração de análise com Cliente e áreas impactadas - 30%** |  | 5d? | 2012-09-20 | 2012-09-26 |  | 0d | 00001 | 1.0 |  |
| 36 | 1.1.2.4.1.1.1 | Elaboração dos documentos de DS por cada RT/Fábrica - 30% |  | 1d? | 2012-09-20 | 2012-09-20 | 32 | 0d | 00001 | 1.0 |  |
| 37 | 1.1.2.4.1.1.2 | Detalhar requisitos não funcionais com Infra |  | 1d? | 2012-09-21 | 2012-09-21 | 36 | 0d | 00001 | 1.0 |  |
| 38 | 1.1.2.4.1.1.3 | Reunião validação com TI |  | 1d? | 2012-09-24 | 2012-09-24 | 37 | 0d | 00001 | 1.0 |  |
| 39 | 1.1.2.4.1.1.4 | Reunião validação com cliente solicitante e áreas impactadas - 20% |  | 1d? | 2012-09-25 | 2012-09-25 | 38 | 0d | 00001 | 1.0 |  |
| 40 | 1.1.2.4.1.1.5 | Prazo para Retorno duvidas |  | 1d? | 2012-09-26 | 2012-09-26 | 39 | 0d | 00001 | 1.0 |  |
| 41 | 1.1.2.4.1.1.6 | Encerrada 1ª iteração | milestone | 0d | 2012-09-26 | 2012-09-26 | 40 | 0d | 00001 | 1.0 |  |
| 42 | 1.1.2.4.1.2 | **2ª iteração de análise com Cliente e áreas impactadas - 60%** |  | 4d? | 2012-09-27 | 2012-10-02 |  | 0d | 00001 | 1.0 |  |
| 43 | 1.1.2.4.1.2.1 | Elaboração dos documentos de DS por cada RT/Fábrica - 60% |  | 1d? | 2012-09-27 | 2012-09-27 | 41 | 0d | 00001 | 1.0 |  |
| 44 | 1.1.2.4.1.2.2 | Reunião validação com TI |  | 1d? | 2012-09-28 | 2012-09-28 | 43 | 0d | 00001 | 1.0 |  |
| 45 | 1.1.2.4.1.2.3 | Reunião validação com cliente solicitante e áreas impactadas |  | 1d? | 2012-10-01 | 2012-10-01 | 44 | 0d | 00001 | 1.0 |  |
| 46 | 1.1.2.4.1.2.4 | Prazo para Retorno duvidas |  | 1d? | 2012-10-02 | 2012-10-02 | 45 | 0d | 00001 | 1.0 |  |
| 47 | 1.1.2.4.1.3 | Especificar Parecer de Infra Final |  | 1d? | 2012-10-03 | 2012-10-03 | 46 | 0d | 00001 | 1.0 |  |
| 48 | 1.1.2.4.1.4 | Encerrada 2ª iteração | milestone | 0d | 2012-10-03 | 2012-10-03 | 47 | 0d | 00001 | 1.0 |  |

Notes:
- 27: ·Gerente de Projeto revisa necessidade de Trade-off e faseamento envolvendo Analista de Negocio e Cliente quando necessário. / ·Gerente de Projeto revisa Checklist de Qualidade do Produto/ ·Gerente de Projeto deverá receber dos RTs o mapa de requisito fechado e revisado com as Fábricas de Desenvolvimento. / ·Gerente de Projeto revisa com o Arquiteto impacto nos Projetos Estruturantes.
- 30: ·Refinamento do escopo: Detalhamento da Visão Macro da Solução incluindo o Desenho Gráfico da Solução. / ·Confirmação das Funcionalidades / ·Endereçando os pontos de Infra e Produção. / ·Confirmação das datas das iterações de implementação e validação dos artefatos do Desenho da Solução com o Cliente Solicitante. / ·Avaliação com o responsável por efetuar o detalhamento funcional , a necessidade de novas reuniões de levantamento com o Cliente Solicitante e Clientes Áreas Impactadas
- 34: Verificar na Visão da Solução os Artefatos selecionados para o Desenho da Solução: Caso de Uso, Detalhamento Funcional, Requisitos não funcionais, planilha de interfaces, mapa de requisitos, documento de arquitetura

| ID | WBS | Task | Type | Duration | Start | Finish | Predecessors | Total slack | Free slack | Duração a Considerar | Versão do Cronograma | Text2 |
| --- | --- | --- | --- | --- | --- | --- | --- | --- | --- | --- | --- | --- |
| 49 | 1.1.2.4.1.5 | **3ª iteração de análise com Cliente e áreas impactadas - 100%** |  | 4d? | 2012-10-04 | 2012-10-09 |  | 0d |  | 00001 | 1.0 |  |
| 50 | 1.1.2.4.1.5.1 | Elaboração dos documentos de DS por cada RT/Fábrica - 100% |  | 1d? | 2012-10-04 | 2012-10-04 | 48 | 0d |  | 00001 | 1.0 |  |
| 51 | 1.1.2.4.1.5.2 | Reunião validação com TI |  | 1d? | 2012-10-05 | 2012-10-05 | 50 | 0d |  | 00001 | 1.0 |  |
| 52 | 1.1.2.4.1.5.3 | Reunião validação com cliente solicitante e áreas impactadas |  | 1d? | 2012-10-08 | 2012-10-08 | 51 | 0d |  | 00001 | 1.0 |  |
| 53 | 1.1.2.4.1.5.4 | Prazo para Retorno duvidas |  | 1d? | 2012-10-09 | 2012-10-09 | 52 | 0d |  | 00001 | 1.0 |  |
| 54 | 1.1.2.4.1.6 | Ajuste Final |  | 1d? | 2012-10-10 | 2012-10-10 | 53 | 0d |  | 00001 | 1.0 |  |
| 55 | 1.1.2.4.1.7 | Encerrada Validações com Cliente | milestone | 0d | 2012-10-10 | 2012-10-10 | 54 | 0d |  | 00001 | 1.0 |  |
| 56 | 1.1.2.5 | **Fechar o Desenho da Solução** |  | 4d? | 2012-10-11 | 2012-10-17 |  | 0d |  | 00001 | 1.0 |  |
| 57 | 1.1.2.5.1 | Realizar reunião de alinhamento com Líderes de Testes |  | 1d? | 2012-10-11 | 2012-10-11 | 55 | 19d | 0d | 00001 | 1.0 | GP |
| 58 | 1.1.2.5.2 | **Estrategia de Testes** |  | 2d? | 2012-10-15 | 2012-10-16 |  | 19d |  | 00001 | 1.0 |  |
| 59 | 1.1.2.5.2.1 | Elaborar Estrategia de Testes |  | 1d? | 2012-10-15 | 2012-10-15 | 57 | 19d | 0d | 00001 | 1.0 | Ltestes |
| 60 | 1.1.2.5.2.2 | Aprovar Estrategia de Testes |  | 1d? | 2012-10-16 | 2012-10-16 | 59 | 19d | 16d | 00001 | 1.0 | Ltestes |
| 61 | 1.1.2.5.3 | Revisão final dos artefatos técnicos (2º Versão) - Junto as Fábricas |  | 1d? | 2012-10-11 | 2012-10-11 | 55 | 0d |  | 00001 | 1.0 | LT |
| 62 | 1.1.2.5.4 | Consolidar e revisar os artefatos da Etapa Desenho da Solução pelos RTs |  | 1d? | 2012-10-15 | 2012-10-15 | 61 | 0d |  | 00001 | 1.0 | RT |
| 63 | 1.1.2.5.5 | Consolidar e revisar os artefatos da Etapa Desenho da Solução pelo Líder Técnico |  | 1d? | 2012-10-16 | 2012-10-16 | 62 | 0d |  | 00001 | 1.0 | LT |
| 64 | 1.1.2.5.6 | Aprovar os artefatos em TI junto aos Responsáveis Técnicos. |  | 1d | 2012-10-17 | 2012-10-17 | 63 | 0d |  | 00001 | 1.0 | GP |
| 65 | 1.1.2.5.7 | Desenho da Solução aprovado por TI | milestone | 0d | 2012-10-17 | 2012-10-17 | 64 | 0d |  | 00001 | 1.0 | GP |
| 66 | 1.1.2.6 | **Aprovar o Desenho Final da Solução** |  | 4d? | 2012-10-18 | 2012-10-23 |  | 0d |  | 00001 | 1.0 |  |
| 67 | 1.1.2.6.1 | Aprovar Desenho da Solução pelo Cliente e Areas Impactadas |  | 3d | 2012-10-18 | 2012-10-22 | 65 | 0d |  | 00001 | 1.0 | GP |
| 68 | 1.1.2.6.2 | Realizar Handover para Infra e Operações |  | 1d? | 2012-10-23 | 2012-10-23 | 67 | 0d |  | 00001 | 1.0 | GP |
| 69 | 1.1.2.6.3 | Desenho da Solução Finalizado e Aprovado (enviar para Fabricas como RFP) | milestone | 0d | 2012-10-23 | 2012-10-23 | 68 | 0d |  |  | 1.0 | GP |
| 70 | 1.1.2.7 | **Consolidar Custo Final** |  | 10d? | 2012-10-23 | 2012-11-07 |  | 0d |  | 00001 | 1.0 |  |
| 71 | 1.1.2.7.1 | Checkpoint: Proposta Financeira solicitada para as Fábricas (Enviar Solicitação e Desenho da Solução) | milestone | 0d | 2012-10-23 | 2012-10-23 | 69 | 0d |  | 00001 | 1.0 | GP |
| 72 | 1.1.2.7.2 | Gerar Proposta Financeira e Cronograma de Execução |  | 5d | 2012-10-24 | 2012-10-30 | 71 | 0d |  |  | 1.0 | Fabricas |
| 73 | 1.1.2.7.3 | Realizar Contagem de Pontos de Função (Se previsto em Contrato) |  | 1d? | 2012-10-31 | 2012-10-31 | 72 | 0d |  | 00001 | 1.0 | RT |
| 74 | 1.1.2.7.4 | Validar Proposta Financeira e Cronograma Macro enviado pela Fábrica (Envolver RTs e Líder de Testes) |  | 3d | 2012-11-01 | 2012-11-06 | 73 | 0d |  | 00001 | 1.0 | RT |
| 75 | 1.1.2.7.5 | Efetuar Consolidação do Custo Final |  | 1d? | 2012-11-07 | 2012-11-07 | 74 | 0d |  | 00001 | 1.0 | GP |
| 76 | 1.1.2.7.6 | STI pronto para aprovação financeira | milestone | 0d | 2012-11-07 | 2012-11-07 | 75 | 0d |  | 00001 | 1.0 | GP |

| ID | WBS | Task | Type | Duration | Start | Finish | Predecessors | Total slack | Free slack | Duração a Considerar | Versão do Cronograma | Text2 |
| --- | --- | --- | --- | --- | --- | --- | --- | --- | --- | --- | --- | --- |
| 77 | 1.2 | **Realizar Aprovação Financeira** |  | 1d? | 2012-11-08 | 2012-11-08 |  | 0d |  | 00001 | 1.0 |  |
| 78 | 1.2.1 | Preparação para aprovação Financeira e Cadastro do FOI |  | 1d? | 2012-11-08 | 2012-11-08 | 76 | 0d |  | 00001 | 1.0 | GP |
| 79 | 1.2.2 | Aprovado em Comitê de Investimento | milestone | 0d | 2012-11-08 | 2012-11-08 | 78 | 0d |  | 00001 | 1.0 | GP |
| 80 | 1.3 | **Planejar Desenvolvimento da Solução** |  | 2d? | 2012-11-08 | 2012-11-09 |  | 28d |  | 00001 | 1.0 |  |
| 81 | 1.3.1 | Consolidar cronogramas e Solicitar confirmação da candidatura |  | 1d? | 2012-11-08 | 2012-11-08 | 76 | 28d | 0d | 00001 | 1.0 | GP |
| 82 | 1.3.2 | Realizar Análise de Impacto e aprovação Candidatura |  | 1d? | 2012-11-09 | 2012-11-09 | 81 | 28d | 0d | 00001 | 1.0 | Lrelease |
| 83 | 1.3.3 | Cronograma e DT Produção Aprovados | milestone | 0d | 2012-11-09 | 2012-11-09 | 81, 82 | 28d |  |  | 1.0 | GP |
| 84 | 1.4 | **Efetuar Desenvolvimento/Customização** |  | 6d? | 2012-11-09 | 2012-11-22 |  | 0d |  | 00001 | 1.0 |  |
| 85 | 1.4.1 | **Preparar Construção** |  | 2d? | 2012-11-09 | 2012-11-12 |  | 0d |  | 00001 | 1.0 |  |
| 86 | 1.4.1.1 | **Desenho Técnico Sistema A** |  | 2d? | 2012-11-09 | 2012-11-12 |  | 0d |  | 00001 | 1.0 |  |
| 87 | 1.4.1.1.1 | Especificação Técnica Sistema A |  | 1d? | 2012-11-09 | 2012-11-09 | 79 | 0d |  | 00001 | 1.0 | Fabricas Desenv |
| 88 | 1.4.1.1.2 | Elaborar Modelo de dados Fisico A |  | 1d? | 2012-11-09 | 2012-11-09 | 79 | 27d | 0d | 00001 | 1.0 | Fabricas Desenv |
| 89 | 1.4.1.1.3 | Planilha de Interfaces / DataMapping A |  | 1d? | 2012-11-09 | 2012-11-09 | 79 | 27d | 0d | 00001 | 1.0 | Fabricas Desenv |
| 90 | 1.4.1.1.4 | Validação Desenho Técnico Sistema A |  | 1d? | 2012-11-12 | 2012-11-12 | 87, 88, 89 | 27d |  | 00001 | 1.0 | RT |
| 91 | 1.4.1.2 | **Desenho Técnico Sistema B** |  | 2d? | 2012-11-09 | 2012-11-12 |  | 0d |  | 00001 | 1.0 |  |
| 92 | 1.4.1.2.1 | Especificação Técnica Sistema B |  | 1d? | 2012-11-09 | 2012-11-09 | 79 | 0d |  | 00001 | 1.0 | Fabricas Desenv |
| 93 | 1.4.1.2.2 | Elaborar Modelo de dados Fisico B |  | 1d? | 2012-11-09 | 2012-11-09 | 79 | 27d | 0d | 00001 | 1.0 | Fabricas Desenv |
| 94 | 1.4.1.2.3 | Planilha de Interfaces / DataMapping B |  | 1d? | 2012-11-09 | 2012-11-09 | 79 | 27d | 0d | 00001 | 1.0 | Fabricas Desenv |
| 95 | 1.4.1.2.4 | Validação Desenho Técnico Sistema B |  | 1d? | 2012-11-12 | 2012-11-12 | 92, 93, 94 | 27d |  | 00001 | 1.0 | RT |
| 96 | 1.4.2 | **Construir Solução e Realizar Testes Unitários** |  | 4d? | 2012-11-12 | 2012-11-21 |  | 0d |  | 00001 | 1.0 |  |
| 97 | 1.4.2.1 | **Construção e Testes Unitários Sistema A** |  | 4d? | 2012-11-12 | 2012-11-21 |  | 0d |  | 00001 | 1.0 |  |
| 98 | 1.4.2.1.1 | Executar Construção |  | 1d? | 2012-11-12 | 2012-11-12 | 87 | 0d |  | 00001 | 1.0 | Fabricas Desenv |
| 99 | 1.4.2.1.2 | Realizar Testes Unitários |  | 1d? | 2012-11-13 | 2012-11-13 | 98 | 0d |  | 00001 | 1.0 | Fabricas Desenv |
| 100 | 1.4.2.1.3 | **Manual de Operação e Produção** |  | 2d? | 2012-11-13 | 2012-11-14 |  | 13d |  | 00001 | 1.0 |  |
| 101 | 1.4.2.1.3.1 | Elaborar Manual de Operação e Produção |  | 1d? | 2012-11-13 | 2012-11-13 | 98 | 13d | 0d | 00001 | 1.0 | Fabricas Desenv |
| 102 | 1.4.2.1.3.2 | Aprovação Manual de Operação e Produção |  | 1d? | 2012-11-14 | 2012-11-14 | 101 | 13d |  | 00001 | 1.0 | Infra e Operações |

| ID | WBS | Task | Type | Duration | Start | Finish | Predecessors | Total slack | Free slack | Duração a Considerar | Versão do Cronograma | Text2 |
| --- | --- | --- | --- | --- | --- | --- | --- | --- | --- | --- | --- | --- |
| 103 | 1.4.2.1.4 | **Manual de Usuário** |  | 2d? | 2012-11-13 | 2012-11-14 |  | 24d |  | 00001 | 1.0 |  |
| 104 | 1.4.2.1.4.1 | Elaborar Manual de Usuário |  | 1d? | 2012-11-13 | 2012-11-13 | 98 | 24d | 0d | 00001 | 1.0 | Fabricas Desenv |
| 105 | 1.4.2.1.4.2 | Aprovar Manual de Usuário |  | 1d? | 2012-11-14 | 2012-11-14 | 104 | 24d | 0d | 00001 | 1.0 | RT |
| 106 | 1.4.2.1.5 | **Runbook** |  | 2d? | 2012-11-13 | 2012-11-14 |  | 23d |  | 00001 | 1.0 |  |
| 107 | 1.4.2.1.5.1 | Elaborar Runbook |  | 1d? | 2012-11-13 | 2012-11-13 | 98 | 23d | 0d | 00001 | 1.0 | Fabricas Desenv |
| 108 | 1.4.2.1.5.2 | Aprovar Runbook |  | 1d? | 2012-11-14 | 2012-11-14 | 107 | 23d | 0d | 00001 | 1.0 | Infra e Operações |
| 109 | 1.4.2.1.6 | Preparar Solicitação de Migração de Ambiente e Release Notes |  | 1d? | 2012-11-14 | 2012-11-14 | 99 | 0d |  | 00001 | 1.0 | Fabricas Desenv |
| 110 | 1.4.2.1.7 | Liberar construção para Release - etapa de Testes de Sistemas |  | 1d? | 2012-11-21 | 2012-11-21 | 109 | 0d |  | 00001 | 1.0 | Lrelease |
| 111 | 1.4.2.2 | **Construção e Testes Unitários Sistema B** |  | 4d? | 2012-11-12 | 2012-11-21 |  | 0d |  | 00001 | 1.0 |  |
| 112 | 1.4.2.2.1 | Executar Construção |  | 1d? | 2012-11-12 | 2012-11-12 | 92 | 0d |  | 00001 | 1.0 | Fabricas Desenv |
| 113 | 1.4.2.2.2 | Realizar Testes Unitários |  | 1d? | 2012-11-13 | 2012-11-13 | 112 | 0d |  | 00001 | 1.0 | Fabricas Desenv |
| 114 | 1.4.2.2.3 | **Manual de Operação e Produção** |  | 2d? | 2012-11-13 | 2012-11-14 |  | 13d |  | 00001 | 1.0 |  |
| 115 | 1.4.2.2.3.1 | Elaborar Manual de Operação e Produção |  | 1d? | 2012-11-13 | 2012-11-13 | 112 | 13d | 0d | 00001 | 1.0 | Fabricas Desenv |
| 116 | 1.4.2.2.3.2 | Aprovação Manual de Operação e Produção |  | 1d? | 2012-11-14 | 2012-11-14 | 115 | 13d |  | 00001 | 1.0 | Infra e Operações |
| 117 | 1.4.2.2.4 | **Manual de Usuário** |  | 2d? | 2012-11-13 | 2012-11-14 |  | 24d |  | 00001 | 1.0 |  |
| 118 | 1.4.2.2.4.1 | Elaborar Manual de Usuário |  | 1d? | 2012-11-13 | 2012-11-13 | 112 | 24d | 0d | 00001 | 1.0 | Fabricas Desenv |
| 119 | 1.4.2.2.4.2 | Aprovar Manual de Usuário |  | 1d? | 2012-11-14 | 2012-11-14 | 118 | 24d | 0d | 00001 | 1.0 | RT |
| 120 | 1.4.2.2.5 | **Runbook** |  | 2d? | 2012-11-13 | 2012-11-14 |  | 23d |  | 00001 | 1.0 |  |
| 121 | 1.4.2.2.5.1 | Elaborar Runbook |  | 1d? | 2012-11-13 | 2012-11-13 | 112 | 23d | 0d | 00001 | 1.0 |  |
| 122 | 1.4.2.2.5.2 | Aprovar Runbook |  | 1d? | 2012-11-14 | 2012-11-14 | 121 | 23d | 0d | 00001 | 1.0 | Infra e Operações |
| 123 | 1.4.2.2.6 | Preparar Solicitação de Migração de Ambiente e Release Notes |  | 1d? | 2012-11-14 | 2012-11-14 | 113 | 0d |  | 00001 | 1.0 | Fabricas Desenv |
| 124 | 1.4.2.2.7 | Liberar construção para Release - etapa de Testes de Sistemas |  | 1d? | 2012-11-21 | 2012-11-21 | 123 | 0d |  | 00001 | 1.0 | Lrelease |
| 125 | 1.4.2.3 | Construção Finalizada | milestone | 0d | 2012-11-21 | 2012-11-21 | 110, 124 | 14d |  | 00001 | 1.0 | GP |
| 126 | 1.4.3 | **Aprovisionar Solução de Infra** |  | 6d? | 2012-11-09 | 2012-11-22 |  | 23d |  | 00001 | 1.0 |  |
| 127 | 1.4.3.1 | Elaborar Especificação de Infra estrutura |  | 1d? | 2012-11-09 | 2012-11-09 | 79 | 26d | 0d | 00001 | 1.0 | Infra e Operações |
| 128 | 1.4.3.2 | Aprovar Especificação de Infra estrutura |  | 1d? | 2012-11-12 | 2012-11-12 | 127 | 26d | 0d | 00001 | 1.0 | Infra e Operações |

| ID | WBS | Task | Type | Duration | Start | Finish | Predecessors | Total slack | Free slack | Duração a Considerar | Versão do Cronograma | Text2 |
| --- | --- | --- | --- | --- | --- | --- | --- | --- | --- | --- | --- | --- |
| 129 | 1.4.3.3 | **Criação / Alteração de Cadeia** |  | 4d? | 2012-11-13 | 2012-11-22 |  | 23d |  | 00001 | 1.0 |  |
| 130 | 1.4.3.3.1 | **Criação / Atualização Runbook Sistema A** |  | 2d? | 2012-11-21 | 2012-11-22 |  | 23d |  | 00001 | 1.0 |  |
| 131 | 1.4.3.3.1.1 | Criar / Alterar Runbook |  | 1d? | 2012-11-21 | 2012-11-21 | 108 | 23d | 0d | 00001 | 1.0 | Infra e Operações |
| 132 | 1.4.3.3.1.2 | Reenvio de Runbook para ajustes da Fabrica |  | 1d? | 2012-11-22 | 2012-11-22 | 131 | 23d | 0d | 00001 | 1.0 | Infra e Operações |
| 133 | 1.4.3.3.2 | **Criação / Atualização Runbook Sistema B** |  | 2d? | 2012-11-21 | 2012-11-22 |  | 23d |  | 00001 | 1.0 |  |
| 134 | 1.4.3.3.2.1 | Criar / Alterar Runbook |  | 1d? | 2012-11-21 | 2012-11-21 | 122 | 23d | 0d | 00001 | 1.0 | Infra e Operações |
| 135 | 1.4.3.3.2.2 | Reenvio de Runbook para ajustes da Fabrica |  | 1d? | 2012-11-22 | 2012-11-22 | 134 | 23d | 0d | 00001 | 1.0 | Infra e Operações |
| 136 | 1.4.3.3.3 | **Infra Core** |  | 1d? | 2012-11-13 | 2012-11-13 |  | 26d |  | 00001 | 1.0 |  |
| 137 | 1.4.3.3.3.1 | Detalhar atividades de Infra Core recebidas no cronograma de Infra. Inserir tempo de contratação via Suprimentos |  | 1d? | 2012-11-13 | 2012-11-13 | 128 | 26d | 3d | 00001 | 1.0 | Infra e Operações |
| 138 | 1.4.3.3.4 | **Monitoração de Serviços** |  | 1d? | 2012-11-13 | 2012-11-13 |  | 26d |  | 00001 | 1.0 |  |
| 139 | 1.4.3.3.4.1 | Configurar Monitoração de Serviços |  | 1d? | 2012-11-13 | 2012-11-13 | 128 | 26d | 3d | 00001 | 1.0 | Infra e Operações |
| 140 | 1.4.3.4 | Aprovisionamento de Infra Concluído | milestone | 0d | 2012-11-22 | 2012-11-22 | 137, 139, 132, 135 | 23d |  | 00001 | 1.0 | GP |
| 141 | 2 | **Testar e Validar Serviços de TI** |  | 19d? | 2012-11-09 | 2012-12-11 |  | 3d |  | 00001 | 1.0 |  |
| 142 | 2.1 | **Especificar Testes** |  | 7d? | 2012-11-09 | 2012-11-23 |  | 3d |  | 00001 | 1.0 |  |
| 143 | 2.1.1 | **Elaborar Plano de Testes de Sistemas** |  | 2d? | 2012-11-09 | 2012-11-12 |  | 5d |  | 00001 | 1.0 |  |
| 144 | 2.1.1.1 | Elaborar Cenários de Testes de Sistema |  | 1d? | 2012-11-09 | 2012-11-09 | 79, 60 | 5d | 0d | 00001 | 1.0 | Fabricas Desenv |
| 145 | 2.1.1.2 | Aprovar Cenários de Testes de Sistema |  | 1d? | 2012-11-12 | 2012-11-12 | 144 | 5d |  | 00001 | 1.0 | RT |
| 146 | 2.1.2 | **Elaborar Plano de UAT** |  | 3d? | 2012-11-09 | 2012-11-13 |  | 3d |  | 00001 | 1.0 |  |
| 147 | 2.1.2.1 | Entrega Planos de TI e UAT Sistema A, Sistema B |  | 1d? | 2012-11-09 | 2012-11-09 | 79, 60 | 3d | 0d | 00001 | 1.0 | Fabrica Testes |
| 148 | 2.1.2.2 | Aprovação Planos de TI e UAT - TI |  | 1d? | 2012-11-12 | 2012-11-12 | 147 | 3d | 0d | 00001 | 1.0 | Ltestes |
| 149 | 2.1.2.3 | Aprovação Planos de TI e UAT - clientes |  | 1d? | 2012-11-13 | 2012-11-13 | 148 | 3d | 0d | 00001 | 1.0 | Clientes |
| 150 | 2.1.3 | **Elaborar Plano de Teste Integrado** |  | 2d? | 2012-11-14 | 2012-11-21 |  | 3d |  | 00001 | 1.0 |  |
| 151 | 2.1.3.1 | Elaborar Cenários de Testes Integrado Sistema A, Sistema B |  | 1d? | 2012-11-14 | 2012-11-14 | 149 | 3d | 0d | 00001 | 1.0 | Fabrica Testes |
| 152 | 2.1.3.2 | Aprovar Cenários de Testes Integrado |  | 1d? | 2012-11-21 | 2012-11-21 | 151 | 3d | 0d | 00001 | 1.0 | Ltestes |

| ID | WBS | Task | Duration | Start | Finish | Predecessors | Total slack | Free slack | Duração a Considerar | Versão do Cronograma | Text2 |
| --- | --- | --- | --- | --- | --- | --- | --- | --- | --- | --- | --- |
| 153 | 2.1.4 | **Elaborar Plano de Teste de Performance** | 2d? | 2012-11-09 | 2012-11-12 |  | 15d |  | 00001 | 1.0 |  |
| 154 | 2.1.4.1 | Elaborar Cenários de Teste de Performance | 1d? | 2012-11-09 | 2012-11-09 | 79, 60 | 15d | 0d | 00001 | 1.0 | Fabricas |
| 155 | 2.1.4.2 | Aprovar Cenários de Teste de Performance | 1d? | 2012-11-12 | 2012-11-12 | 154 | 15d | 9d | 00001 | 1.0 | Ltestes |
| 156 | 2.1.5 | **Elaborar Plano de Teste de Conectividade** | 2d? | 2012-11-21 | 2012-11-22 |  | 4d |  | 00001 | 1.0 |  |
| 157 | 2.1.5.1 | Elaborar Cenários de Teste de Conectividade | 1d? | 2012-11-21 | 2012-11-21 | 151 | 4d | 0d | 00001 | 1.0 | Fabricas |
| 158 | 2.1.5.2 | Aprovar Cenários de Teste de Conectividade | 1d? | 2012-11-22 | 2012-11-22 | 157 | 4d |  | 00001 | 1.0 | Ltestes |
| 159 | 2.1.6 | **Elaborar Plano de Teste de Degustação ( Pré-TI)** | 2d? | 2012-11-22 | 2012-11-23 |  | 3d |  | 00001 | 1.0 |  |
| 160 | 2.1.6.1 | Elaborar Cenários de Teste de Degustação (Pré-TI) | 1d? | 2012-11-22 | 2012-11-22 | 152 | 3d | 0d | 00001 | 1.0 | Fabrica Testes |
| 161 | 2.1.6.2 | Aprovar Cenários de Teste de Degustação (Pré-TI) | 1d? | 2012-11-23 | 2012-11-23 | 160 | 3d |  | 00001 | 1.0 | Ltestes |
| 162 | 2.1.7 | **Elaborar Plano de Teste de Shakeout (TSK)** | 2d? | 2012-11-14 | 2012-11-21 |  | 15d |  | 00001 | 1.0 |  |
| 163 | 2.1.7.1 | Elaborar Plano de Teste de Shakeout | 1d? | 2012-11-14 | 2012-11-14 | 149 | 15d | 0d | 00001 | 1.0 | Fabricas |
| 164 | 2.1.7.2 | Aprovar Plano de Teste de Shakeout | 1d? | 2012-11-21 | 2012-11-21 | 163 | 15d |  | 00001 | 1.0 | Ltestes |
| 165 | 2.1.8 | **Elaborar Plano de Teste Invasão (Minha Oi / Oi Vende)** | 2d? | 2012-11-21 | 2012-11-22 |  | 7d |  | 00001 | 1.0 |  |
| 166 | 2.1.8.1 | Elaborar Plano de Teste de Invasão | 1d? | 2012-11-21 | 2012-11-21 | 151 | 7d | 0d | 00001 | 1.0 | Fabricas |
| 167 | 2.1.8.2 | Aprovar Plano de Teste de Invasão | 1d? | 2012-11-22 | 2012-11-22 | 166 | 7d | 5d | 00001 | 1.0 | Ltestes |
| 168 | 2.2 | **Executar Testes de Sistemas** | 4d? | 2012-11-22 | 2012-11-27 |  | 0d |  | 00001 | 1.0 |  |
| 169 | 2.2.1 | **Teste de Sistema Sistema A** | 4d? | 2012-11-22 | 2012-11-27 |  | 0d |  | 00001 | 1.0 |  |
| 170 | 2.2.1.1 | Validar Solicitação de Migração de Ambiente e Release Notes | 1d? | 2012-11-22 | 2012-11-22 | 110 | 0d |  | 00001 | 1.0 | Lrelease |
| 171 | 2.2.1.2 | Migração para TS | 1d? | 2012-11-23 | 2012-11-23 | 170 | 0d |  | 00001 | 1.0 | Fabricas |
| 172 | 2.2.1.3 | Executar Teste de Sistema | 1d? | 2012-11-26 | 2012-11-26 | 171, 145 | 0d |  | 00001 | 1.0 | Fabrica Desenv |
| 173 | 2.2.1.4 | Validar evidências de Testes de Sistema | 1d? | 2012-11-27 | 2012-11-27 | 172 | 0d |  | 00001 | 1.0 | RT |
| 174 | 2.2.2 | **Teste de Sistema Sistema B** | 4d? | 2012-11-22 | 2012-11-27 |  | 0d |  | 00001 | 1.0 |  |
| 175 | 2.2.2.1 | Validar Solicitação de Migração de Ambiente e Release Notes | 1d? | 2012-11-22 | 2012-11-22 | 124 | 0d |  | 00001 | 1.0 | Lrelease |
| 176 | 2.2.2.2 | Migração para TS | 1d? | 2012-11-23 | 2012-11-23 | 175 | 0d |  | 00001 | 1.0 | Fabricas |
| 177 | 2.2.2.3 | Executar Teste de Sistema | 1d? | 2012-11-26 | 2012-11-26 | 176 | 0d |  | 00001 | 1.0 | Fabrica Desenv |
| 178 | 2.2.2.4 | Validar evidências de Testes de Sistema | 1d? | 2012-11-27 | 2012-11-27 | 177 | 0d |  | 00001 | 1.0 | RT |

| ID | WBS | Task | Type | Duration | Start | Finish | Predecessors | Total slack | Free slack | Duração a Considerar | Versão do Cronograma | Text2 |
| --- | --- | --- | --- | --- | --- | --- | --- | --- | --- | --- | --- | --- |
| 179 | 2.3 | **Executar Testes Integrados** |  | 6d? | 2012-11-28 | 2012-12-05 |  | 0d |  | 00001 | 1.0 |  |
| 180 | 2.3.1 | Validar Solicitação de Migração de Ambiente e Release Notes |  | 1d? | 2012-11-28 | 2012-11-28 | 173, 178 | 0d |  | 00001 | 1.0 | Lrelease |
| 181 | 2.3.2 | Migração para TI |  | 1d? | 2012-11-29 | 2012-11-29 | 180 | 0d |  | 00001 | 1.0 | Fabricas |
| 182 | 2.3.3 | **Executar Testes de Pré-TI** |  | 2d? | 2012-11-29 | 2012-11-30 |  | 0d |  | 00001 | 1.0 |  |
| 183 | 2.3.3.1 | Executar Teste de Conectividade (TC) |  | 1d? | 2012-11-29 | 2012-11-29 | 180, 158 | 0d |  | 00001 | 1.0 | Fabricas |
| 184 | 2.3.3.2 | Executar Teste de Degustação (Pre-TI) |  | 1d? | 2012-11-29 | 2012-11-29 | 180, 161 | 0d |  | 00001 | 1.0 | Fabrica Testes |
| 185 | 2.3.3.3 | Aprovar Pré- TI |  | 1d? | 2012-11-30 | 2012-11-30 | 183, 184 | 0d |  | 00001 | 1.0 | LT |
| 186 | 2.3.4 | **Executar Teste Integrado** |  | 4d? | 2012-11-30 | 2012-12-05 |  | 0d |  | 00001 | 1.0 |  |
| 187 | 2.3.4.1 | **Teste Integrado Grupo de Sistemas A** |  | 3d? | 2012-12-03 | 2012-12-05 |  | 0d |  | 00001 | 1.0 |  |
| 188 | 2.3.4.1.1 | Geração de Massa (Sistema A + Sistema B + Sistema C) |  | 1d? | 2012-12-03 | 2012-12-03 | 181, 185 | 0d |  | 00001 | 1.0 | Fabrica Testes |
| 189 | 2.3.4.1.2 | Executar TI |  | 1d? | 2012-12-04 | 2012-12-04 | 188 | 0d |  | 00001 | 1.0 | Fabrica Testes |
| 190 | 2.3.4.1.3 | Validar Evidências TI |  | 1d? | 2012-12-05 | 2012-12-05 | 189 | 0d |  | 00001 | 1.0 | LT |
| 191 | 2.3.4.2 | **Testes Integrado Portal (Exemplo)** |  | 4d? | 2012-11-30 | 2012-12-05 |  | 0d |  | 00001 | 1.0 |  |
| 192 | 2.3.4.2.1 | Geração de Massa (Sistema A + Sistrema B + Sistema C) |  | 1d? | 2012-11-30 | 2012-11-30 | 181 | 0d |  | 00001 | 1.0 | Fabrica Testes |
| 193 | 2.3.4.2.2 | Engenharia simula utilização para teste Portal |  | 1d? | 2012-12-03 | 2012-12-03 | 192 | 0d |  | 00001 | 1.0 | Fabrica Testes |
| 194 | 2.3.4.2.3 | Executar Teste Integrado |  | 1d? | 2012-12-04 | 2012-12-04 | 193 | 0d |  | 00001 | 1.0 | Fabrica Testes |
| 195 | 2.3.4.2.4 | Validação de evidencias de TI |  | 1d? | 2012-12-05 | 2012-12-05 | 194 | 0d |  | 00001 | 1.0 | Ltestes |
| 196 | 2.3.4.3 | **Testes de Invasão (Oi Vende e Minha Oi)** |  | 2d? | 2012-11-30 | 2012-12-03 |  | 2d |  |  | 1.0 |  |
| 197 | 2.3.4.3.1 | Executar Teste de Invasão |  | 1d? | 2012-11-30 | 2012-11-30 | 167, 181 | 2d | 0d |  | 1.0 |  |
| 198 | 2.3.4.3.2 | Validação de evidencias de TI |  | 1d? | 2012-12-03 | 2012-12-03 | 197 | 2d |  |  | 1.0 |  |
| 199 | 2.3.4.4 | **Testes Integrados VAS (Exemplo)** |  | 4d? | 2012-11-30 | 2012-12-05 |  | 0d |  | 00001 | 1.0 |  |
| 200 | 2.3.4.4.1 | Entrega Massa |  | 1d? | 2012-11-30 | 2012-11-30 | 181 | 0d |  | 00001 | 1.0 | Fabrica Testes |
| 201 | 2.3.4.4.2 | Processamento Informatica |  | 1d? | 2012-12-03 | 2012-12-03 | 200 | 0d |  | 00001 | 1.0 | Fabrica Testes |
| 202 | 2.3.4.4.3 | Execução Testes Integrados |  | 1d? | 2012-12-04 | 2012-12-04 | 201 | 0d |  | 00001 | 1.0 | Fabrica Testes |
| 203 | 2.3.4.4.4 | Validação Evidências Testes Integrados |  | 1d? | 2012-12-05 | 2012-12-05 | 202 | 0d |  | 00001 | 1.0 | Ltestes |
| 204 | 2.3.4.5 | Testes Integrados Aprovados | milestone | 0d | 2012-12-05 | 2012-12-05 | 190, 195, 198, 203 | 0d |  | 00001 | 1.0 | GP |

Notes:
- 183: De acordo com a Estrategia de Teste
- 184: De acordo com a Estrategia de Teste
- 186: Inclusão das atividades de acordo com a Estrategia de Testes

| ID | WBS | Task | Type | Duration | Start | Finish | Predecessors | Total slack | Free slack | Duração a Considerar | Versão do Cronograma | Text2 |
| --- | --- | --- | --- | --- | --- | --- | --- | --- | --- | --- | --- | --- |
| 205 | 2.4 | **Executar Teste de Performance** |  | 2d? | 2012-11-30 | 2012-12-03 |  | 6d |  | 00001 | 1.0 |  |
| 206 | 2.4.1 | Executar TP |  | 1d? | 2012-11-30 | 2012-11-30 | 181, 155 | 6d | 0d | 00001 | 1.0 | Fabricas |
| 207 | 2.4.2 | Validar Evidências TP |  | 1d? | 2012-12-03 | 2012-12-03 | 206 | 6d |  | 00001 | 1.0 | Ltestes |
| 208 | 2.5 | **UAT** |  | 4d? | 2012-12-06 | 2012-12-11 |  | 0d |  | 00001 | 1.0 |  |
| 209 | 2.5.1 | Dispobibilizar evidências de UAT |  | 1d? | 2012-12-06 | 2012-12-06 | 204 | 0d |  | 00001 | 1.0 | Fabrica Testes |
| 210 | 2.5.2 | Aprovar UAT |  | 1d? | 2012-12-07 | 2012-12-07 | 209 | 0d |  | 00001 | 1.0 | Cliente |
| 211 | 2.5.3 | Registro e Submissao da Mudança |  | 1d? | 2012-12-10 | 2012-12-10 | 210, 102, 116 | 0d |  | 00001 | 1.0 | Lmudança |
| 212 | 2.5.4 | Aprovação CAB para sistemas criticos |  | 1d? | 2012-12-11 | 2012-12-11 | 211 | 0d |  | 00001 | 1.0 | Lmudanca |
| 213 | 2.6 | **Treinamento** |  | 1d? | 2012-11-21 | 2012-11-21 |  | 24d |  |  | 1.0 |  |
| 214 | 2.6.1 | Execução de Treinamento |  | 1d? | 2012-11-21 | 2012-11-21 | 105, 119 | 24d |  |  | 1.0 | GP |
| 215 | 3 | **Implantação** |  | 2d? | 2012-12-12 | 2012-12-13 |  | 0d |  | 00001 | 1.0 |  |
| 216 | 3.1 | Execução da Mudança |  | 1d? | 2012-12-12 | 2012-12-12 | 211, 212, 207, 210, 125 | 0d |  | 00001 | 1.0 | Infra e Operações |
| 217 | 3.2 | Executar ShakeOut |  | 1d? | 2012-12-13 | 2012-12-13 | 216, 164 | 0d |  |  | 1.0 |  |
| 218 | 3.3 | Produção Finalizada | milestone | 0d | 2012-12-13 | 2012-12-13 | 217, 216 | 0d |  |  | 1.0 |  |
| 219 | 4 | **Efetuar atividades de Pós-Implantação** |  | 13d? | 2012-12-06 | 2012-12-26 |  | 0d |  | 00001 | 1.0 |  |
| 220 | 4.1 | Confirmar inicio Operação Solicitação |  | 1d? | 2012-12-14 | 2012-12-14 | 218 | 0d |  | 00001 | 1.0 | GP |
| 221 | 4.2 | Receber informações Pos Release e Pos Mudança |  | 1d? | 2012-12-17 | 2012-12-17 | 220 | 0d |  | 00001 | 1.0 | LT |
| 222 | 4.3 | Executar Operação Assistida |  | 1d? | 2012-12-18 | 2012-12-18 | 221 | 0d |  | 00001 | 1.0 | Infra e Operações |
| 223 | 4.4 | Acompanhar indicadores |  | 1d? | 2012-12-19 | 2012-12-19 | 222 | 0d |  | 00001 | 1.0 | LT |
| 224 | 4.5 | Avaliar Retroalimentação do TRG |  | 1d? | 2012-12-20 | 2012-12-20 | 223 | 0d |  | 00001 | 1.0 | LT |
| 225 | 4.6 | Concluir Operação Assistida |  | 1d? | 2012-12-21 | 2012-12-21 | 224 | 0d |  | 00001 | 1.0 | GP |
| 226 | 4.7 | **Tratamento de Backlog / Migração** |  | 2d? | 2012-12-06 | 2012-12-07 |  | 10d |  | 00001 | 1.0 |  |
| 227 | 4.7.1 | Tratamento Sistema A |  | 1d? | 2012-12-06 | 2012-12-06 | 204 | 10d | 0d | 00001 | 1.0 | Fabricas |
| 228 | 4.7.2 | Tratamento Sistema B |  | 1d? | 2012-12-07 | 2012-12-07 | 227 | 10d |  | 00001 | 1.0 | Fabricas |
| 229 | 4.8 | Encerrar Pós Implantação |  | 1d? | 2012-12-26 | 2012-12-26 | 227, 228, 225 | 0d |  | 00001 | 1.0 | GP |
| 230 | 5 | Termo de Aceite da Solicitação para encerrar Solicitação |  | 1d? | 2012-12-27 | 2012-12-27 | 216, 229 | 0d |  | 00001 | 1.0 | GP |
| 231 | 6 | Encerrar Solicitação | milestone | 0d | 2012-12-27 | 2012-12-27 | 230, 214, 140, 225 | 0d |  | 00001 | 1.0 | GP |
