# PRJ24387 - Programa Antifraude RAID-FMS - Onda 2

Schedule from MS Project, 2017-09-18 to 2018-08-20, status date 2017-12-12, A marks actual dates.
SSI

## Calendars

- Standard: Mon-Fri 08:00-12:00, 13:00-17:00; Sat-Sun off. Exceptions (off unless hours are given): 2017-09-07 to 2020-09-07 (Feriado Sete Setembro, recurring), 2017-10-12 to 2020-10-12 (Nsa Aparecida, recurring), 2017-10-16 to 2019-10-16 (Dia do Informática, recurring), 2017-11-02 to 2020-11-02 (Finados, recurring), 2017-11-15 to 2020-11-15 (Republica, recurring), 2017-11-20 (Zumbi), 2017-12-25 to 2020-12-25 (Natal, recurring), 2017-12-31 to 2019-12-31 (Vespera Ano Novo, recurring), 2018-01-01 to 2021-01-01 (Ano Novo, recurring), 2018-02-12 to 2018-02-13 (Carnaval 2018), 2018-03-30 (Semana Santa), 2018-04-21 to 2019-04-21 (Tiradentes, recurring), 2018-05-01 to 2020-05-01 (Dia do Trabalho, recurring), 2018-05-31 (Corpus Christi 2018).

## Resources

| Resource |
| --- |
| Andre Jacomino |
| Nuno Pestana |
| WeDo |
| Oi |
| Kleyton |
| DIEO |
| Operações |
| WeDo PT |
| TI |
| Leandro |
| Cezar |
| Oi/DIEO/WEDO |
| WeDO/Operações |
| MArcellus |
| Placido |

## Schedule

| ID | WBS | Task | Type | Duration | Start | Finish | Predecessors | Complete | Remaining | Baseline start | Baseline finish | Baseline duration | Total slack | Free slack | Constraint | Resources | Work | Actual work |
| --- | --- | --- | --- | --- | --- | --- | --- | --- | --- | --- | --- | --- | --- | --- | --- | --- | --- | --- |
| 1 | 1 | **Projeto RAID FMS OI - Programa 1 ==== PG60 ====** |  | 228d | 2017-09-18 A | 2018-08-20 |  | 45% | 125.16d | 2017-09-18 | 2019-02-28 | 0d | 0d |  |  |  | 3712h | 1643.91h |
| 2 | 1.1 | **PRJ00024387 - Marcos de Aquisição de Infra-estrutura** |  | 228d | 2017-09-18 A | 2018-08-20 |  | 76% | 54.72d | 2017-09-18 | 2017-12-07 | 0d | 0d |  |  |  | 200h | 120h |
| 3 | 1.1.1 | Acessos Lógicos |  | 10d | 2017-09-18 A | 2017-09-29 A |  | 100% |  | 2017-09-18 | 2017-09-29 | 0d |  |  |  |  | 80h | 80h |
| 7 | 1.1.2 | Disponibilização do ambiente DEV - Onda 2 (Contingência HML do RAID) | milestone | 0d | 2017-10-27 A | 2017-10-27 A |  | 100% |  |  |  |  |  |  | start no earlier than 2017-10-27 | Oi |  |  |
| 8 | 1.1.3 | Instalação Vanilla em DEV - Onda 2 |  | 5d | 2017-10-27 A | 2017-11-03 A | 7 | 100% |  |  |  |  |  |  |  | WeDo | 40h | 40h |
| 9 | 1.1.4 | PRJ00024506 - Ambiente de DEV disponível |  | 10d | 2017-12-04 A | 2017-12-15 |  | 40% | 6d | 2017-09-29 | 2017-09-29 | 0d | 108d | 0d | start no earlier than 2017-12-04 | Oi | 80h |  |
| 10 | 1.1.5 | PRJ00024506 - Ambiente de HML disponível | milestone | 0d | 2018-05-15 | 2018-05-15 |  |  |  | 2017-11-16 | 2017-11-16 | 0d | 68d |  | start no earlier than 2018-05-15 | Oi |  |  |
| 11 | 1.1.6 | PRJ00024931 - Ambiente de PRD disponível | milestone | 0d | 2018-08-20 | 2018-08-20 |  |  |  | 2017-11-23 | 2017-11-23 | 0d | 0d |  | start no earlier than 2018-08-20 | Oi |  |  |
| 12 | 1.2 | **PRJ00025887 - ONDA 1: Planejamento e Setup** |  | 42d | 2017-09-18 A | 2017-11-21 |  | 98% | 0.75d | 2017-09-18 | 2017-10-05 | 0d | 186d |  |  |  | 560h | 544h |
| 13 | 1.2.1 | Acessos Físicos Liberados | milestone | 0d | 2017-09-18 A | 2017-09-18 A |  | 100% |  | 2017-09-18 | 2017-09-18 | 0d |  |  |  | Oi; WeDo |  |  |
| 14 | 1.2.2 | Levantamento e elaboração Blueprint |  | 12d | 2017-09-18 A | 2017-10-03 A |  | 100% |  | 2017-09-18 | 2017-10-03 | 0d |  |  |  | WeDo; Oi | 192h | 192h |
| 15 | 1.2.3 | Validação do blueprint Oi | manual | 3d | 2017-10-04 A | 2017-10-06 A | 14 | 100% |  |  |  |  |  |  |  | Leandro | 24h | 24h |
| 16 | 1.2.4 | Validação do blueprint WeDo | manual | 27d | 2017-10-09 A | 2017-11-21 A | 15 | 100% |  |  |  |  |  |  |  | Placido | 216h | 216h |
| 17 | 1.2.5 | Elaborar Plano de Desenvolvimento do Projeto (PDP) |  | 6d | 2017-09-26 A | 2017-10-03 A | 14SS+6d | 100% |  | 2017-09-26 | 2017-10-03 | 0d |  |  |  | WeDo | 48h | 48h |
| 18 | 1.2.6 | Elaborar Material kick-off | manual | 1d | 2017-10-04 A | 2017-10-04 A | 17 | 100% |  | 2017-10-04 | 2017-10-04 | 0d |  |  |  | Oi | 8h | 8h |
| 19 | 1.2.7 | Reunião de Kick-off |  | 1d | 2017-10-05 | 2017-10-05 | 14 |  |  | 2017-10-05 | 2017-10-05 | 0d | 214d | 28d | start no earlier than 2017-10-05 | WeDo; Oi | 16h |  |
| 20 | 1.2.8 | Onda 1 - Planejamento e Setup - Finalizada | milestone | 0d | 2017-11-21 | 2017-11-21 | 16, 19 |  |  | 2017-10-05 | 2017-10-05 | 0d | 186d |  |  |  |  |  |
| 21 | 1.2.9 | Treinamento - Conceitos Básicos - Teoria (FMS-01) |  | 6d | 2017-10-06 A | 2017-10-17 A |  | 100% |  | 2017-10-06 | 2017-10-17 | 0d |  |  |  |  | 56h | 56h |
| 26 | 1.3 | **PRJ00025351/SUB25837 - ONDA 2: TV off line (Quick Wins - Motor de Fraude)** |  | 15d | 2017-10-04 A | 2017-10-26 |  | 99% | 0d | 2017-10-23 | 2018-01-16 | 0d | 0d |  |  |  | 304h | 208h |
| 27 | 1.3.1 | **Detalhamento de regras de negócio e critérios de aceitação** |  | 12d | 2017-10-04 A | 2017-10-23 |  | 99% | 0d |  |  |  | 0d |  |  | Kleyton | 192h | 96h |
| 28 | 1.3.1.1 | 1o lote de regras para validação TI/WEDO (fontes de dados ainda indefinidas) |  | 3d | 2017-10-04 A | 2017-10-06 A |  | 100% |  |  |  |  |  |  |  | Kleyton | 24h | 24h |
| 29 | 1.3.1.2 | 2o lote de regras para validação TI/WEDO |  | 8d | 2017-10-04 A | 2017-10-17 A |  | 100% |  |  |  |  |  |  |  | Kleyton | 64h | 64h |
| 30 | 1.3.1.3 | Entrega versão final da documentação de regras |  | 1d | 2017-10-23 A | 2017-10-23 A |  | 100% |  |  |  |  |  |  |  | Cezar | 8h | 8h |
| 31 | 1.3.2 | Validação do detalhamento de regras e criterios de aceitação | manual | 3d | 2017-10-18 A | 2017-10-26 A | 30 | 100% |  |  |  |  |  |  |  | WeDo; TI | 48h | 48h |
| 32 | 1.3.3 | Elaboração DAS de Arquitetura | manual | 8d | 2017-10-13 A | 2017-10-25 A | 31FF | 100% |  |  |  |  |  |  |  | MArcellus | 64h | 64h |

| ID | WBS | Task | Type | Duration | Start | Finish | Predecessors | Complete | Remaining | Baseline start | Baseline finish | Baseline duration | Total slack | Free slack | Constraint | Resources | Work | Actual work |
| --- | --- | --- | --- | --- | --- | --- | --- | --- | --- | --- | --- | --- | --- | --- | --- | --- | --- | --- |
| 33 | 1.4 | **Análise (Desenho de Solução, Especificação Técnica, Cenários de Teste e Critérios de Aceitação)** |  | 29d | 2017-10-23 A | 2017-12-05 |  | 99% | 0d | 2017-10-23 | 2017-11-08 | 0d | 0d |  |  | WeDo; Oi | 864h | 611.91h |
| 34 | 1.4.1 | Elaboração de DSOL RAID-FMS | manual | 12d | 2017-10-23 A | 2017-11-08 A | 31 | 100% |  |  |  |  |  |  |  | WeDo; Oi | 192h | 192h |
| 35 | 1.4.2 | Aprovação de DSOL RAID-FMS | manual | 2d | 2017-11-08 A | 2017-11-09 A | 34FF | 100% |  |  |  |  |  |  |  | Kleyton | 16h | 16h |
| 36 | 1.4.3 | Elaboração de plano de testes Consolidado |  | 7d | 2017-11-09 A | 2017-11-21 A | 31, 34 | 100% |  |  |  |  |  |  |  | WeDo; Oi | 112h | 112h |
| 37 | 1.4.4 | Aprovação de plano de testes Consolidado |  | 10d | 2017-11-22 A | 2017-12-05 A | 36 | 100% |  |  |  |  |  |  |  | Kleyton | 80h | 80h |
| 38 | 1.5 | Construção e Testes Unitários no ambiente DEV (Contingência HML RAID) |  | 30d | 2017-11-13 A | 2017-12-27 | 8FS+1d, 35FS+1d | 65% | 10.5d | 2017-11-09 | 2017-12-21 | 0d | 94d | 0d |  | WeDo | 240h | 160h |
| 39 | 1.6 | Atualização de Servidores DEV no CMDB [agente DISCOVER] |  | 5d | 2017-12-18 | 2017-12-22 | 9 |  |  |  |  |  | 108d | 0d |  | Oi | 40h |  |
| 40 | 1.7 | Instalação Vanila Ambiente DEV (RAID FMS) |  | 4d | 2017-12-26 | 2017-12-29 | 39 |  |  |  |  |  | 159d |  |  | WeDo | 32h |  |
| 41 | 1.8 | Testes de Sistema (Contingência HML RAID) |  | 7d | 2017-12-29 | 2018-01-09 | 38FS+1d |  |  | 2017-12-22 | 2017-12-28 | 0d | 94d | 0d |  | WeDo | 56h |  |
| 42 | 1.9 | Pacote de Implantação (Criação e Instalação: DEV - RAID FMS) |  | 1d | 2018-01-09 | 2018-01-09 | 41FF |  |  |  |  |  | 153d |  |  |  |  |  |
| 43 | 1.10 | UAT em ambiente DEV (Ambiente DEV definitivo) |  | 10d | 2018-01-10 | 2018-01-23 | 41, 9 |  |  | 2018-01-02 | 2018-01-05 | 0d | 94d | 0d |  | WeDo; Oi | 160h |  |
| 44 | 1.11 | Validação Prévia - Pacote de Cargas |  | 4d | 2017-12-13 | 2017-12-18 | 38SS+20d |  |  |  |  |  | 166d | 0d | finish no earlier than 2017-12-18 | WeDo; Oi | 64h |  |
| 45 | 1.12 | Avaliação das Críticas/Dúvidas após validação |  | 1d | 2017-12-19 | 2017-12-19 | 44 |  |  |  |  |  | 166d |  |  | Oi | 8h |  |
| 46 | 1.13 | **Definição responsabilidades N1/N2 [WEDO/Operações]** |  | 10d | 2017-12-28 | 2018-01-11 |  |  |  |  |  |  | 136d |  |  | Oi/DIEO/WEDO | 336h |  |
| 47 | 1.13.1 | Definição de arvore de atendimento remedy [CCO/N1/N2/N3] |  | 5d | 2017-12-28 | 2018-01-04 | 38 |  |  |  |  |  | 156d |  |  | WeDo; Oi; Operações | 120h |  |
| 48 | 1.13.2 | Elaboração de matrix RACI [responsáveis x atividades] |  | 5d | 2017-12-28 | 2018-01-04 | 38 |  |  |  |  |  | 156d |  |  | WeDO/Operações | 40h |  |
| 49 | 1.13.3 | Elaborar Runbook |  | 5d | 2017-12-28 | 2018-01-04 | 38 |  |  | 2017-12-22 | 2017-12-27 | 0d | 136d | 0d |  | WeDo | 40h |  |
| 50 | 1.13.4 | Validação de runbook |  | 5d | 2018-01-05 | 2018-01-11 | 49 |  |  |  |  |  | 136d | 0d |  |  |  |  |
| 51 | 1.13.5 | Elaboração de MOP |  | 5d | 2017-12-28 | 2018-01-04 | 38 |  |  |  |  |  | 155d | 0d |  | WeDo | 40h |  |
| 52 | 1.13.6 | Workshop com Operações |  | 1d | 2018-01-05 | 2018-01-05 | 51 |  |  |  |  |  | 155d |  |  | WeDo; Operações | 16h |  |
| 53 | 1.14 | Construção de scripts de monitoração |  | 15d | 2018-01-12 | 2018-02-01 | 49, 50 |  |  |  |  |  | 136d |  |  | Operações | 120h |  |
| 54 | 1.15 | Construção de scripts de transmissão |  | 15d | 2018-01-12 | 2018-02-01 | 49, 50 |  |  |  |  |  | 136d |  |  | Operações | 120h |  |
| 55 | 1.16 | Testes de Conectividade e Transmissão [liberação portas de firewall e gestão de acesso] |  | 5d | 2017-12-18 | 2017-12-22 | 33, 9 |  |  |  |  |  | 163d |  |  |  |  |  |
| 56 | 1.17 | Elaborar PLIM |  | 2d | 2018-01-10 | 2018-01-11 | 38, 41 |  |  | 2018-01-02 | 2018-01-03 | 0d | 97d | 0d |  | WeDo | 16h |  |
| 57 | 1.18 | Abertura de CRQ |  | 1d | 2018-01-11 | 2018-01-11 | 56FF, 39 |  |  |  |  |  | 97d | 0d |  | Oi | 8h |  |
| 58 | 1.19 | Aprovação de CRQ |  | 5d | 2018-01-12 | 2018-01-18 | 56, 57 |  |  |  |  |  | 97d | 3d |  | DIEO | 40h |  |
| 59 | 1.20 | Planejamento e aprovação de GMUD |  | 5d | 2018-01-24 | 2018-01-30 | 58, 43 |  |  |  |  |  | 94d | 0d |  | DIEO | 40h |  |
| 60 | 1.21 | Pacote RAID-FMS pronto para Implantação |  | 2d | 2018-01-24 | 2018-01-25 | 43 |  |  | 2018-01-08 | 2018-01-09 | 0d | 97d | 3d |  | WeDo | 16h |  |
| 61 | 1.22 | Implantação [considerando ambiente DEV definitiva como Contingência de PRD Onda 2) |  | 2d | 2018-01-31 | 2018-02-01 | 9, 60, 43, 59 |  |  |  |  |  | 94d | 0d |  | WeDo; Oi | 32h |  |
| 62 | 1.23 | Operação Assistida |  | 5d | 2018-02-05 | 2018-02-09 | 61FS+1d |  |  | 2018-01-10 | 2018-01-16 | 0d | 130d | 0d |  | WeDo; Oi | 80h |  |
| 63 | 1.24 | Entrega da especificação técnica |  | 5d | 2018-02-05 | 2018-02-09 | 60, 62SS |  |  |  |  |  | 130d | 0d |  | WeDo | 40h |  |
| 64 | 1.25 | WAC - Analytics (calibragem das regras) |  | 35d | 2018-02-02 | 2018-03-26 | 61 |  |  | 2017-12-04 | 2018-02-06 | 0d | 94d | 0d |  | WeDo PT | 280h |  |
| 65 | 1.26 | WAC - Treinamento |  | 7d | 2018-03-27 | 2018-04-05 | 64 |  |  |  |  |  | 94d |  |  | WeDo | 56h |  |
| 66 | 1.27 | Onda 2 - TV off line - Finalizada | milestone | 0d | 2018-02-09 | 2018-02-09 | 62, 63 |  |  | 2018-01-16 | 2018-01-16 | 0d | 130d |  |  |  |  |  |
