# Plano de DSOL Onda 3 [CR SD] versão 2.0

Schedule from MS Project, 2018-01-23 to 2018-03-06, A marks actual dates.
OI

## Calendars

- Padrão: Mon-Fri 09:00-12:00, 13:00-18:00; Sat-Sun off.

## Resources

| Resource |
| --- |
| Confirmar alocação FRED e Priscila |
| Priscila |
| Cezar |
| Kleyton |
| Frederico |
| Experian |
| Wedo |
| SOA |
| Credito |
| Integração SOA |
| Fred |
| Leandro |
| Antonio |
| Eduardo |

## Schedule

| ID | WBS | Task | Type | Duration | Start | Finish | Predecessors | Complete | Remaining | Actual start | Total slack | Free slack | Resources | Work | Actual work | Text1 | Text2 |
| --- | --- | --- | --- | --- | --- | --- | --- | --- | --- | --- | --- | --- | --- | --- | --- | --- | --- |
| 1 | 1 | **DSOL Consolidado Onda 3** |  | 23d | 2018-01-24 | 2018-02-23 |  | 7% | 21.36d | 2018-01-23 |  |  |  | 632h | 128h |  |  |
| 2 | 1.1 | **Elaboração DSOL RAID-FMS, TRANSACT e SOA** |  | 13d | 2018-01-24 | 2018-02-09 |  | 11% | 11.63d | 2018-01-23 |  |  |  | 512h | 128h |  |  |
| 3 | 1.1.1 | Disponibilização de insumos de telas de crédito e operação | manual | 1d | 2018-01-23 A | 2018-01-23 A |  | 100% |  |  |  |  | Cezar; Kleyton | 16h | 16h | N/A |  |
| 4 | 1.1.2 | Plenária inicial de Alinhamento geral de solução | manual | 1d | 2018-01-24 A | 2018-01-24 A |  | 100% |  |  |  |  | Kleyton; Wedo; Experian; Credito | 32h | 32h | BH/VC |  |
| 5 | 1.1.3 | **Elaboração Documentação DFs RAID-FMS** |  | 12d | 2018-01-25 | 2018-02-09 | 4 | 13% | 10.4d | 2018-01-24 |  |  | Confirmar alocação FRED e Priscila | 360h | 80h |  |  |
| 6 | 1.1.3.1 | Definição funcional de input de dados SOA->TRANSACT | manual | 2d | 2018-01-24 A | 2018-01-25 A |  | 100% |  |  |  |  | Integração SOA; Wedo; Fred; Kleyton; Experian | 80h | 80h | BH/VC Polidoro/VC Ipanema | FRED |
| 7 | 1.1.3.2 | Definição de telas operação de credito e produtividade | manual | 5d | 2018-01-29 | 2018-02-02 | 4FS+2d |  |  |  |  |  | Priscila; Wedo; Kleyton | 120h |  | BH/VC Polidoro |  |
| 8 | 1.1.3.3 | Definição de fluxo online de propostas derivadas Transact x RAID-FMS | manual | 2d | 2018-02-05 | 2018-02-06 | 4FS+7d |  |  |  |  |  | Frederico; Experian; Wedo; SOA | 64h |  | Polidoro/VC Ipanema | FRED |
| 9 | 1.1.3.4 | Elaboraçao artefatos RAID-FMS |  | 6d | 2018-02-09 | 2018-02-16 | 6, 7FS+3d, 8FS+2d |  |  |  | -7d | 0d |  |  |  |  |  |
| 10 | 1.1.4 | Elaboração Documentação DF´s TRANSACT |  | 13d | 2018-01-24 | 2018-02-09 | 4SF |  |  |  | 0d |  | Confirmar alocação FRED e Priscila | 104h |  |  |  |
| 11 | 1.1.5 | Plenária de alinhamento integração SOA-Transact-FMS |  | 2d | 2018-02-08 | 2018-02-09 | 4FS+10d |  |  |  | 0d |  |  |  |  | Ipanema/VC Floripa | Confirmar com integração |
| 12 | 1.1.6 | Elaboração de DF´s integração Transact-SOA-FMS |  | 5d | 2018-02-05 | 2018-02-09 | 11FF |  |  |  | 0d |  |  |  |  |  | Confirmar com integração |
| 13 | 1.1.7 | Plenária final de Visão Geral da Solução |  | 1d | 2018-02-19 | 2018-02-19 | 9 |  |  |  | -7d | 0d |  |  |  | AUDIO/VC |  |
| 14 | 1.2 | **Consolidação e Validação DSOL Onda 3** |  | 11d | 2018-02-20 | 2018-03-06 |  |  |  |  | -7d | 0d |  | 120h |  |  |  |
| 15 | 1.2.1 | Elaboração DSOL consolidado |  | 5d | 2018-02-20 | 2018-02-26 | 13 |  |  |  | -7d | 0d | Leandro; Antonio; Eduardo | 120h |  | IPANEMA |  |
| 16 | 1.2.2 | Plenária de validação DSOL Consolidado |  | 1d | 2018-02-27 | 2018-02-27 | 15 |  |  |  | -7d | 0d |  |  |  | IPANEMA/VC Floripa/VC BH/ VC Polidoro |  |
| 17 | 1.2.3 | Aprovação Documento Controlado CA |  | 5d | 2018-02-28 | 2018-03-06 | 16 |  |  |  | -7d | 0d |  |  |  | BH/Ipanema |  |
| 18 | 1.3 | Fim Plano DSOL | milestone | 0d | 2018-03-06 | 2018-03-06 | 17FF |  |  |  | -7d | 0d |  |  |  |  |  |
